# Finish Line

Schedule from MS Project, 2004-06-22 to 2005-05-27, A marks actual dates.
GSC GameWorld

## Calendars

- Стандартный: Mon-Fri 10:00-13:00, 14:00-19:00; Sat 11:00-13:00, 14:00-20:00; Sun off.

## Resources

| Resource |
| --- |
| Руслан, Рома |
| Руслан, Коан |
| Чугай, Рома |
| Змей, Рома |
| Джим, Угрюмый |
| Сидорович, Маст Дай |
| Чугай, Лестат |
| Rainbow, |
| Rainbow, Ефимов Владимир |
| Веня |
| Rainbow |
| Рома |
| Рома, Змей |
| Коан, Руслан |
| Маст Дай, Сидорович |
| Лестат, Чугай |
| Dima |
| Partizan |
| Sidorovich |
| Mustdie |
| Змей |
| Сидорович |
| Shyshkin |
| Вова |
| Шишкин |
| Руслан |
| PROF |
| Угрюмый |
| Andy |
| LeSTAT |
| Джип |
| Lema |
| Чугай |
| Гхола |
| Koan |
| Коан |
| Дима |
| Джим |
| Mike |
| Вова Ефимов |
| Джим, Негоробов |
| Негоробов |
| Майк |
| Glory |
| Bogdan |
| AlexMX |
| Kostia |

## Schedule

| ID | WBS | Task | Duration | Start | Finish | Predecessors | Complete | Remaining | Total slack | Free slack | Constraint | Deadline | Resources | Work | Actual work |
| --- | --- | --- | --- | --- | --- | --- | --- | --- | --- | --- | --- | --- | --- | --- | --- |
| 1 | 1 | **Game design** | 71d? | 2005-01-24 A | 2005-04-15 |  | 43% | 40.72d? | 36d |  |  |  |  | 18847h | 9448.46h |
| 3 | 1.1 | **01_Escape** | 19d? | 2005-01-24 A | 2005-02-14 |  | 25% | 14.25d? | 88d |  |  |  | Руслан, Рома | 360h | 206h |
| 4 | 1.1.1 | **LevelDesign** | 6d? | 2005-02-08 A | 2005-02-14 A | 284 | 100% |  |  |  |  | 2005-02-14 | Вова Ефимов | 168h | 168h |
| 5 | 1.1.1.1 | **Stage 1** | 6d? | 2005-02-08 A | 2005-02-14 A |  | 100% |  |  |  |  |  | Вова Ефимов | 120h | 120h |
| 6 | 1.1.1.1.1 | List of Changes | 1d | 2005-02-08 A | 2005-02-08 A |  | 100% |  |  |  |  |  | Вова Ефимов | 8h | 8h |
| 7 | 1.1.1.1.2 | Changed Geometry | 2d | 2005-02-09 A | 2005-02-10 A | 6 | 100% |  |  |  | start no earlier than 2005-02-09 |  | Вова Ефимов | 16h | 16h |
| 8 | 1.1.1.1.3 | Check List 1 | 1d? | 2005-02-11 A | 2005-02-11 A | 7 | 100% |  |  |  |  |  | Вова Ефимов | 8h | 8h |
| 9 | 1.1.1.1.4 | Check List 2 | 1d | 2005-02-11 A | 2005-02-11 A |  | 100% |  |  |  | start no earlier than 2005-02-11 |  | Вова Ефимов | 8h | 8h |
| 10 | 1.1.1.1.5 | Check List 3 | 1d? | 2005-02-11 A | 2005-02-11 A |  | 100% |  |  |  | start no earlier than 2005-02-11 |  | Вова Ефимов | 8h | 8h |
| 11 | 1.1.1.1.6 | Check List 4 | 1d? | 2005-02-11 A | 2005-02-11 A |  | 100% |  |  |  | start no earlier than 2005-02-11 |  | Вова Ефимов | 8h | 8h |
| 12 | 1.1.1.1.7 | Render Geometry | 1d | 2005-02-12 A | 2005-02-12 A | 11 | 100% |  |  |  |  |  | Вова Ефимов | 8h | 8h |
| 13 | 1.1.1.1.8 | Grass | 1d? | 2005-02-14 A | 2005-02-14 A | 12 | 100% |  |  |  |  |  | Вова Ефимов | 8h | 8h |
| 14 | 1.1.2 | **GameDesign** | 3d? | 2005-01-24 | 2005-01-26 |  |  |  | 104d |  |  |  |  |  |  |
| 15 | 1.1.2.1 | AI Maps/Graphs | 1d? | 2005-01-24 | 2005-01-24 |  |  |  | 78d |  |  |  |  |  |  |
| 16 | 1.1.2.2 | **Secrets** | 3d? | 2005-01-24 | 2005-01-26 |  |  |  | 104d |  |  |  |  |  |  |
| 17 | 1.1.2.2.1 | **Stage 1** | 3d? | 2005-01-24 | 2005-01-26 |  |  |  | 104d |  |  |  |  |  |  |
| 18 | 1.1.2.2.1.1 | Design | 1d? | 2005-01-24 | 2005-01-24 |  |  |  | 76d | 0d |  |  |  |  |  |
| 19 | 1.1.2.2.1.2 | Implementation | 1d? | 2005-01-25 | 2005-01-25 | 18 |  |  | 76d | 0d |  |  |  |  |  |
| 20 | 1.1.2.2.1.3 | Tuning | 1d? | 2005-01-26 | 2005-01-26 | 19 |  |  | 76d |  |  |  |  |  |  |
| 21 | 1.1.2.3 | **Smartterrains** | 3d? | 2005-01-24 | 2005-01-26 |  |  |  | 104d |  |  |  |  |  |  |
| 22 | 1.1.2.3.1 | **Stage 1** | 3d? | 2005-01-24 | 2005-01-26 |  |  |  | 104d |  |  |  |  |  |  |
| 23 | 1.1.2.3.1.1 | Design | 1d? | 2005-01-24 | 2005-01-24 |  |  |  | 76d | 0d |  |  |  |  |  |
| 24 | 1.1.2.3.1.2 | Implementation | 1d? | 2005-01-25 | 2005-01-25 | 23 |  |  | 76d | 0d |  |  |  |  |  |
| 25 | 1.1.2.3.1.3 | Tuning | 1d? | 2005-01-26 | 2005-01-26 | 24 |  |  | 76d |  |  |  |  |  |  |

| ID | WBS | Task | Duration | Start | Finish | Predecessors | Total slack | Free slack | Work |
| --- | --- | --- | --- | --- | --- | --- | --- | --- | --- |
| 26 | 1.1.2.4 | **Monsters/Spawns** | 3d? | 2005-01-24 | 2005-01-26 |  | 104d |  |  |
| 27 | 1.1.2.4.1 | **Stage 1** | 3d? | 2005-01-24 | 2005-01-26 |  | 104d |  |  |
| 28 | 1.1.2.4.1.1 | Design | 1d? | 2005-01-24 | 2005-01-24 |  | 76d | 0d |  |
| 29 | 1.1.2.4.1.2 | Implementation | 1d? | 2005-01-25 | 2005-01-25 | 28 | 76d | 0d |  |
| 30 | 1.1.2.4.1.3 | Tuning | 1d? | 2005-01-26 | 2005-01-26 | 29 | 76d |  |  |
| 31 | 1.1.2.5 | **Stalkers/Spawns** | 3d? | 2005-01-24 | 2005-01-26 |  | 104d |  |  |
| 32 | 1.1.2.5.1 | **Stage 1** | 3d? | 2005-01-24 | 2005-01-26 |  | 104d |  |  |
| 33 | 1.1.2.5.1.1 | Design | 1d? | 2005-01-24 | 2005-01-24 |  | 76d | 0d |  |
| 34 | 1.1.2.5.1.2 | Implementation | 1d? | 2005-01-25 | 2005-01-25 | 33 | 76d | 0d |  |
| 35 | 1.1.2.5.1.3 | Tuning | 1d? | 2005-01-26 | 2005-01-26 | 34 | 76d |  |  |
| 36 | 1.1.2.6 | **Anomalies/Spawns** | 3d? | 2005-01-24 | 2005-01-26 |  | 104d |  |  |
| 37 | 1.1.2.6.1 | **Stage 1** | 3d? | 2005-01-24 | 2005-01-26 |  | 104d |  |  |
| 38 | 1.1.2.6.1.1 | Design | 1d? | 2005-01-24 | 2005-01-24 |  | 76d | 0d |  |
| 39 | 1.1.2.6.1.2 | Implementation | 1d? | 2005-01-25 | 2005-01-25 | 38 | 76d | 0d |  |
| 40 | 1.1.2.6.1.3 | Tuning | 1d? | 2005-01-26 | 2005-01-26 | 39 | 76d |  |  |
| 41 | 1.1.2.7 | **Physicks** | 3d? | 2005-01-24 | 2005-01-26 |  | 104d |  |  |
| 42 | 1.1.2.7.1 | **Stage 1** | 3d? | 2005-01-24 | 2005-01-26 |  | 104d |  |  |
| 43 | 1.1.2.7.1.1 | Design | 1d? | 2005-01-24 | 2005-01-24 |  | 76d | 0d |  |
| 44 | 1.1.2.7.1.2 | Implementation | 1d? | 2005-01-25 | 2005-01-25 | 43 | 76d | 0d |  |
| 45 | 1.1.2.7.1.3 | Tuning | 1d? | 2005-01-26 | 2005-01-26 | 44 | 76d |  |  |
| 46 | 1.1.3 | **Scripts** | 3d? | 2005-01-24 | 2005-01-26 |  | 104d |  | 40h |
| 47 | 1.1.3.1 | Сценарий (текст) | 1d? | 2005-01-24 | 2005-01-24 |  | 78d |  |  |
| 48 | 1.1.3.2 | **Сцена 1 - Плоть рядом с аномалией** | 3d? | 2005-01-24 | 2005-01-26 |  | 104d |  | 16h |
| 49 | 1.1.3.2.1 | Постановка задач | 1d? | 2005-01-24 | 2005-01-24 |  | 76d | 0d |  |

| ID | WBS | Task | Duration | Start | Finish | Predecessors | Complete | Remaining | Total slack | Free slack | Constraint | Deadline | Resources | Work | Actual work |
| --- | --- | --- | --- | --- | --- | --- | --- | --- | --- | --- | --- | --- | --- | --- | --- |
| 50 | 1.1.3.2.2 | **Реализация** | 1d? | 2005-01-25 | 2005-01-25 | 49 |  |  | 104d |  |  |  |  | 8h |  |
| 51 | 1.1.3.2.2.1 | Доработка X в движке | 1d? | 2005-01-25 | 2005-01-25 |  |  |  | 69d | 0d |  |  | Dima | 8h |  |
| 52 | 1.1.3.2.3 | **Тестирование** | 1d? | 2005-01-26 | 2005-01-26 | 51 |  |  | 104d |  |  |  |  | 8h |  |
| 53 | 1.1.3.2.3.1 | Проверить расстановку AI нод вокруг дерева | 1d? | 2005-01-26 | 2005-01-26 |  |  |  | 69d |  |  |  | Partizan | 8h |  |
| 54 | 1.1.3.3 | **Сцена 2 - Кабаны играют в футбол** | 3d? | 2005-01-24 | 2005-01-26 |  |  |  | 104d |  |  |  |  | 24h |  |
| 55 | 1.1.3.3.1 | Постановка задач | 1d? | 2005-01-24 | 2005-01-24 |  |  |  | 76d | 0d |  |  |  |  |  |
| 56 | 1.1.3.3.2 | **Реализация** | 1d? | 2005-01-25 | 2005-01-25 | 55 |  |  | 104d |  |  |  |  | 16h |  |
| 57 | 1.1.3.3.2.1 | Написать схему mob_kicker | 1d? | 2005-01-25 | 2005-01-25 |  |  |  | 69d | 0d |  |  | Сидорович | 8h |  |
| 58 | 1.1.3.3.2.2 | Установить и настроить схему на Escape | 1d? | 2005-01-25 | 2005-01-25 |  |  |  | 70d |  |  |  | Mustdie | 8h |  |
| 59 | 1.1.3.3.3 | **Тестирование** | 1d? | 2005-01-26 | 2005-01-26 | 57 |  |  | 104d |  |  |  |  | 8h |  |
| 60 | 1.1.3.3.3.1 | Отсутствие визуальных дефектов | 1d? | 2005-01-26 | 2005-01-26 |  |  |  | 69d |  |  |  | Partizan | 8h |  |
| 62 | 1.2 | **02_Garbage** | 10d? | 2005-01-24 A | 2005-02-03 |  | 22% | 7.82d? | 97d |  |  |  | Руслан, Коан | 336h | 273.45h |
| 63 | 1.2.1 | **LevelDesign** | 10d? | 2005-01-24 A | 2005-02-03 A |  | 100% |  |  |  |  | 2005-02-04 | Джип | 256h | 256h |
| 64 | 1.2.1.1 | **Stage 1** | 10d? | 2005-01-24 A | 2005-02-03 A |  | 100% |  |  |  |  |  | Джип | 176h | 176h |
| 65 | 1.2.1.1.1 | List of Changes | 2d | 2005-01-24 A | 2005-01-25 A |  | 100% |  |  |  |  |  | Джип | 16h | 16h |
| 66 | 1.2.1.1.2 | Changed Geometry | 1d? | 2005-01-26 A | 2005-01-26 A | 65 | 100% |  |  |  |  |  | Джип | 8h | 8h |
| 67 | 1.2.1.1.3 | Check List 1 | 1d? | 2005-01-27 A | 2005-01-27 A | 66 | 100% |  |  |  |  |  | Джип | 8h | 8h |
| 68 | 1.2.1.1.4 | Check List 2 | 1d? | 2005-01-27 A | 2005-01-27 A |  | 100% |  |  |  | start no earlier than 2005-01-27 |  | Джип | 8h | 8h |
| 69 | 1.2.1.1.5 | Check List 3 | 1d? | 2005-01-27 A | 2005-01-27 A |  | 100% |  |  |  | start no earlier than 2005-01-27 |  | Джип | 8h | 8h |
| 70 | 1.2.1.1.6 | Check List 4 | 1d? | 2005-01-28 A | 2005-01-28 A | 69 | 100% |  |  |  |  |  | Джип | 8h | 8h |
| 71 | 1.2.1.1.7 | Render Geometry | 4d | 2005-01-29 A | 2005-02-02 A | 70 | 100% |  |  |  |  |  | Джип | 32h | 32h |
| 72 | 1.2.1.1.8 | Grass | 1d? | 2005-02-03 A | 2005-02-03 A | 71 | 100% |  |  |  |  |  | Джип | 8h | 8h |
| 73 | 1.2.2 | **GameDesign** | 3d? | 2005-01-24 | 2005-01-26 |  |  |  | 104d |  |  |  |  |  |  |
| 74 | 1.2.2.1 | **Secrets** | 3d? | 2005-01-24 | 2005-01-26 |  |  |  | 104d |  |  |  |  |  |  |
| 75 | 1.2.2.1.1 | **Stage 1** | 3d? | 2005-01-24 | 2005-01-26 |  |  |  | 104d |  |  |  |  |  |  |
| 76 | 1.2.2.1.1.1 | Design | 1d? | 2005-01-24 | 2005-01-24 |  |  |  | 76d | 0d |  |  |  |  |  |
| 77 | 1.2.2.1.1.2 | Implementation | 1d? | 2005-01-25 | 2005-01-25 | 76 |  |  | 76d | 0d |  |  |  |  |  |
| 78 | 1.2.2.1.1.3 | Tuning | 1d? | 2005-01-26 | 2005-01-26 | 77 |  |  | 76d |  |  |  |  |  |  |

Notes:
- 55: Два кабана по очереди пинают труп, стараясь не выходить далеко за пределы указанной на уровне зоны. При появлении игрока атакуют его.

| ID | WBS | Task | Duration | Start | Finish | Predecessors | Total slack | Free slack |
| --- | --- | --- | --- | --- | --- | --- | --- | --- |
| 79 | 1.2.2.2 | **Smartterrains** | 3d? | 2005-01-24 | 2005-01-26 |  | 104d |  |
| 80 | 1.2.2.2.1 | **Stage 1** | 3d? | 2005-01-24 | 2005-01-26 |  | 104d |  |
| 81 | 1.2.2.2.1.1 | Design | 1d? | 2005-01-24 | 2005-01-24 |  | 76d | 0d |
| 82 | 1.2.2.2.1.2 | Implementation | 1d? | 2005-01-25 | 2005-01-25 | 81 | 76d | 0d |
| 83 | 1.2.2.2.1.3 | Tuning | 1d? | 2005-01-26 | 2005-01-26 | 82 | 76d |  |
| 84 | 1.2.2.3 | **Monsters/Spawns** | 3d? | 2005-01-24 | 2005-01-26 |  | 104d |  |
| 85 | 1.2.2.3.1 | **Stage 1** | 3d? | 2005-01-24 | 2005-01-26 |  | 104d |  |
| 86 | 1.2.2.3.1.1 | Design | 1d? | 2005-01-24 | 2005-01-24 |  | 76d | 0d |
| 87 | 1.2.2.3.1.2 | Implementation | 1d? | 2005-01-25 | 2005-01-25 | 86 | 76d | 0d |
| 88 | 1.2.2.3.1.3 | Tuning | 1d? | 2005-01-26 | 2005-01-26 | 87 | 76d |  |
| 89 | 1.2.2.4 | **Stalkers/Spawns** | 3d? | 2005-01-24 | 2005-01-26 |  | 104d |  |
| 90 | 1.2.2.4.1 | **Stage 1** | 3d? | 2005-01-24 | 2005-01-26 |  | 104d |  |
| 91 | 1.2.2.4.1.1 | Design | 1d? | 2005-01-24 | 2005-01-24 |  | 76d | 0d |
| 92 | 1.2.2.4.1.2 | Implementation | 1d? | 2005-01-25 | 2005-01-25 | 91 | 76d | 0d |
| 93 | 1.2.2.4.1.3 | Tuning | 1d? | 2005-01-26 | 2005-01-26 | 92 | 76d |  |
| 94 | 1.2.2.5 | **Anomalies/Spawns** | 3d? | 2005-01-24 | 2005-01-26 |  | 104d |  |
| 95 | 1.2.2.5.1 | **Stage 1** | 3d? | 2005-01-24 | 2005-01-26 |  | 104d |  |
| 96 | 1.2.2.5.1.1 | Design | 1d? | 2005-01-24 | 2005-01-24 |  | 76d | 0d |
| 97 | 1.2.2.5.1.2 | Implementation | 1d? | 2005-01-25 | 2005-01-25 | 96 | 76d | 0d |
| 98 | 1.2.2.5.1.3 | Tuning | 1d? | 2005-01-26 | 2005-01-26 | 97 | 76d |  |
| 99 | 1.2.2.6 | **Physicks** | 3d? | 2005-01-24 | 2005-01-26 |  | 104d |  |
| 100 | 1.2.2.6.1 | **Stage 1** | 3d? | 2005-01-24 | 2005-01-26 |  | 104d |  |
| 101 | 1.2.2.6.1.1 | Design | 1d? | 2005-01-24 | 2005-01-24 |  | 76d | 0d |
| 102 | 1.2.2.6.1.2 | Implementation | 1d? | 2005-01-25 | 2005-01-25 | 101 | 76d | 0d |
| 103 | 1.2.2.6.1.3 | Tuning | 1d? | 2005-01-26 | 2005-01-26 | 102 | 76d |  |

| ID | WBS | Task | Duration | Start | Finish | Predecessors | Total slack | Free slack |
| --- | --- | --- | --- | --- | --- | --- | --- | --- |
| 104 | 1.2.3 | **Scripts** | 5d? | 2005-01-24 | 2005-01-28 |  | 102d |  |
| 105 | 1.2.3.1 | **Script 1** | 5d? | 2005-01-24 | 2005-01-28 |  | 102d |  |
| 106 | 1.2.3.1.1 | Scenario(text) | 1d? | 2005-01-24 | 2005-01-24 |  | 74d | 0d |
| 107 | 1.2.3.1.2 | Постановка задач | 1d? | 2005-01-25 | 2005-01-25 | 106 | 74d | 0d |
| 108 | 1.2.3.1.3 | Implimentation | 1d? | 2005-01-26 | 2005-01-26 | 107 | 74d | 0d |
| 109 | 1.2.3.1.4 | Dilogs/VO/Icons/Objects/Animations | 1d? | 2005-01-27 | 2005-01-27 | 108 | 74d | 0d |
| 110 | 1.2.3.1.5 | Настройка | 1d? | 2005-01-28 | 2005-01-28 | 109 | 74d |  |
| 111 | 1.2.3.2 | **Script 2** | 5d? | 2005-01-24 | 2005-01-28 |  | 102d |  |
| 112 | 1.2.3.2.1 | Scenario(text) | 1d? | 2005-01-24 | 2005-01-24 |  | 74d | 0d |
| 113 | 1.2.3.2.2 | Постановка задач | 1d? | 2005-01-25 | 2005-01-25 | 112 | 74d | 0d |
| 114 | 1.2.3.2.3 | Implimentation | 1d? | 2005-01-26 | 2005-01-26 | 113 | 74d | 0d |
| 115 | 1.2.3.2.4 | Dilogs/VO/Icons/Objects/Animations | 1d? | 2005-01-27 | 2005-01-27 | 114 | 74d | 0d |
| 116 | 1.2.3.2.5 | Настройка | 1d? | 2005-01-28 | 2005-01-28 | 115 | 74d |  |
| 117 | 1.2.3.3 | **Script 3** | 5d? | 2005-01-24 | 2005-01-28 |  | 102d |  |
| 118 | 1.2.3.3.1 | Scenario(text) | 1d? | 2005-01-24 | 2005-01-24 |  | 74d | 0d |
| 119 | 1.2.3.3.2 | Постановка задач | 1d? | 2005-01-25 | 2005-01-25 | 118 | 74d | 0d |
| 120 | 1.2.3.3.3 | Implimentation | 1d? | 2005-01-26 | 2005-01-26 | 119 | 74d | 0d |
| 121 | 1.2.3.3.4 | Dilogs/VO/Icons/Objects/Animations | 1d? | 2005-01-27 | 2005-01-27 | 120 | 74d | 0d |
| 122 | 1.2.3.3.5 | Настройка | 1d? | 2005-01-28 | 2005-01-28 | 121 | 74d |  |
| 123 | 1.2.3.4 | **Script 4** | 5d? | 2005-01-24 | 2005-01-28 |  | 102d |  |
| 124 | 1.2.3.4.1 | Scenario(text) | 1d? | 2005-01-24 | 2005-01-24 |  | 74d | 0d |
| 125 | 1.2.3.4.2 | Постановка задач | 1d? | 2005-01-25 | 2005-01-25 | 124 | 74d | 0d |
| 126 | 1.2.3.4.3 | Implimentation | 1d? | 2005-01-26 | 2005-01-26 | 125 | 74d | 0d |
| 127 | 1.2.3.4.4 | Dilogs/VO/Icons/Objects/Animations | 1d? | 2005-01-27 | 2005-01-27 | 126 | 74d | 0d |
| 128 | 1.2.3.4.5 | Настройка | 1d? | 2005-01-28 | 2005-01-28 | 127 | 74d |  |

| ID | WBS | Task | Duration | Start | Finish | Predecessors | Complete | Remaining | Total slack | Free slack | Constraint | Deadline | Resources | Work | Actual work |
| --- | --- | --- | --- | --- | --- | --- | --- | --- | --- | --- | --- | --- | --- | --- | --- |
| 129 | 1.2.3.5 | **Script 5** | 5d? | 2005-01-24 | 2005-01-28 |  |  |  | 102d |  |  |  |  |  |  |
| 130 | 1.2.3.5.1 | Scenario(text) | 1d? | 2005-01-24 | 2005-01-24 |  |  |  | 74d | 0d |  |  |  |  |  |
| 131 | 1.2.3.5.2 | Постановка задач | 1d? | 2005-01-25 | 2005-01-25 | 130 |  |  | 74d | 0d |  |  |  |  |  |
| 132 | 1.2.3.5.3 | Implimentation | 1d? | 2005-01-26 | 2005-01-26 | 131 |  |  | 74d | 0d |  |  |  |  |  |
| 133 | 1.2.3.5.4 | Dilogs/VO/Icons/Objects/Animations | 1d? | 2005-01-27 | 2005-01-27 | 132 |  |  | 74d | 0d |  |  |  |  |  |
| 134 | 1.2.3.5.5 | Настройка | 1d? | 2005-01-28 | 2005-01-28 | 133 |  |  | 74d |  |  |  |  |  |  |
| 136 | 1.3 | **03_Agroprom** | 27d? | 2005-01-24 A | 2005-02-23 |  | 41% | 15.9d? | 80d |  |  |  | Чугай, Рома | 888h | 760.77h |
| 137 | 1.3.1 | **LevelDesign** | 27d? | 2005-01-24 A | 2005-02-23 A |  | 100% |  |  |  |  | 2005-03-01 | Rainbow | 672h | 672h |
| 138 | 1.3.1.1 | **Stage 1** | 27d? | 2005-01-24 A | 2005-02-23 A |  | 100% |  |  |  |  |  | Rainbow | 456h | 456h |
| 139 | 1.3.1.1.1 | List of Changes | 1d | 2005-01-24 A | 2005-01-24 A |  | 100% |  |  |  |  |  | Rainbow | 8h | 8h |
| 140 | 1.3.1.1.2 | Changed Geometry | 21d | 2005-01-25 A | 2005-02-17 A | 139 | 100% |  |  |  |  |  | Rainbow | 168h | 168h |
| 141 | 1.3.1.1.3 | Check List 1 | 1d? | 2005-02-18 A | 2005-02-18 A | 140 | 100% |  |  |  | start no earlier than 2005-02-18 |  | Rainbow | 8h | 8h |
| 142 | 1.3.1.1.4 | Check List 2 | 1d? | 2005-02-18 A | 2005-02-18 A |  | 100% |  |  |  | start no earlier than 2005-02-18 |  | Rainbow | 8h | 8h |
| 143 | 1.3.1.1.5 | Check List 3 | 1d? | 2005-02-18 A | 2005-02-18 A |  | 100% |  |  |  | start no earlier than 2005-02-18 |  | Rainbow | 8h | 8h |
| 144 | 1.3.1.1.6 | Check List 4 | 1d? | 2005-02-18 A | 2005-02-18 A |  | 100% |  |  |  | start no earlier than 2005-02-18 |  | Rainbow | 8h | 8h |
| 145 | 1.3.1.1.7 | Render Geometry | 3d | 2005-02-19 A | 2005-02-22 A | 144 | 100% |  |  |  |  |  | Rainbow | 24h | 24h |
| 146 | 1.3.1.1.8 | Grass | 1d? | 2005-02-23 A | 2005-02-23 A | 145 | 100% |  |  |  |  |  | Rainbow | 8h | 8h |
| 147 | 1.3.2 | **GameDesign** | 3d? | 2005-01-24 | 2005-01-26 |  |  |  | 104d |  |  |  |  |  |  |
| 148 | 1.3.2.1 | **Secrets** | 3d? | 2005-01-24 | 2005-01-26 |  |  |  | 104d |  |  |  |  |  |  |
| 149 | 1.3.2.1.1 | **Stage 1** | 3d? | 2005-01-24 | 2005-01-26 |  |  |  | 104d |  |  |  |  |  |  |
| 150 | 1.3.2.1.1.1 | Design | 1d? | 2005-01-24 | 2005-01-24 |  |  |  | 76d | 0d |  |  |  |  |  |
| 151 | 1.3.2.1.1.2 | Implementation | 1d? | 2005-01-25 | 2005-01-25 | 150 |  |  | 76d | 0d |  |  |  |  |  |
| 152 | 1.3.2.1.1.3 | Tuning | 1d? | 2005-01-26 | 2005-01-26 | 151 |  |  | 76d |  |  |  |  |  |  |
| 153 | 1.3.2.2 | **Smartterrains** | 3d? | 2005-01-24 | 2005-01-26 |  |  |  | 104d |  |  |  |  |  |  |
| 154 | 1.3.2.2.1 | **Stage 1** | 3d? | 2005-01-24 | 2005-01-26 |  |  |  | 104d |  |  |  |  |  |  |
| 155 | 1.3.2.2.1.1 | Design | 1d? | 2005-01-24 | 2005-01-24 |  |  |  | 76d | 0d |  |  |  |  |  |
| 156 | 1.3.2.2.1.2 | Implementation | 1d? | 2005-01-25 | 2005-01-25 | 155 |  |  | 76d | 0d |  |  |  |  |  |
| 157 | 1.3.2.2.1.3 | Tuning | 1d? | 2005-01-26 | 2005-01-26 | 156 |  |  | 76d |  |  |  |  |  |  |

| ID | WBS | Task | Duration | Start | Finish | Predecessors | Total slack | Free slack |
| --- | --- | --- | --- | --- | --- | --- | --- | --- |
| 158 | 1.3.2.3 | **Monsters/Spawns** | 3d? | 2005-01-24 | 2005-01-26 |  | 104d |  |
| 159 | 1.3.2.3.1 | **Stage 1** | 3d? | 2005-01-24 | 2005-01-26 |  | 104d |  |
| 160 | 1.3.2.3.1.1 | Design | 1d? | 2005-01-24 | 2005-01-24 |  | 76d | 0d |
| 161 | 1.3.2.3.1.2 | Implementation | 1d? | 2005-01-25 | 2005-01-25 | 160 | 76d | 0d |
| 162 | 1.3.2.3.1.3 | Tuning | 1d? | 2005-01-26 | 2005-01-26 | 161 | 76d |  |
| 163 | 1.3.2.4 | **Stalkers/Spawns** | 3d? | 2005-01-24 | 2005-01-26 |  | 104d |  |
| 164 | 1.3.2.4.1 | **Stage 1** | 3d? | 2005-01-24 | 2005-01-26 |  | 104d |  |
| 165 | 1.3.2.4.1.1 | Design | 1d? | 2005-01-24 | 2005-01-24 |  | 76d | 0d |
| 166 | 1.3.2.4.1.2 | Implementation | 1d? | 2005-01-25 | 2005-01-25 | 165 | 76d | 0d |
| 167 | 1.3.2.4.1.3 | Tuning | 1d? | 2005-01-26 | 2005-01-26 | 166 | 76d |  |
| 168 | 1.3.2.5 | **Anomalies/Spawns** | 3d? | 2005-01-24 | 2005-01-26 |  | 104d |  |
| 169 | 1.3.2.5.1 | **Stage 1** | 3d? | 2005-01-24 | 2005-01-26 |  | 104d |  |
| 170 | 1.3.2.5.1.1 | Design | 1d? | 2005-01-24 | 2005-01-24 |  | 76d | 0d |
| 171 | 1.3.2.5.1.2 | Implementation | 1d? | 2005-01-25 | 2005-01-25 | 170 | 76d | 0d |
| 172 | 1.3.2.5.1.3 | Tuning | 1d? | 2005-01-26 | 2005-01-26 | 171 | 76d |  |
| 173 | 1.3.2.6 | **Physicks** | 3d? | 2005-01-24 | 2005-01-26 |  | 104d |  |
| 174 | 1.3.2.6.1 | **Stage 1** | 3d? | 2005-01-24 | 2005-01-26 |  | 104d |  |
| 175 | 1.3.2.6.1.1 | Design | 1d? | 2005-01-24 | 2005-01-24 |  | 76d | 0d |
| 176 | 1.3.2.6.1.2 | Implementation | 1d? | 2005-01-25 | 2005-01-25 | 175 | 76d | 0d |
| 177 | 1.3.2.6.1.3 | Tuning | 1d? | 2005-01-26 | 2005-01-26 | 176 | 76d |  |
| 178 | 1.3.3 | **Scripts** | 5d? | 2005-01-24 | 2005-01-28 |  | 102d |  |
| 179 | 1.3.3.1 | **Script 1** | 5d? | 2005-01-24 | 2005-01-28 |  | 102d |  |
| 180 | 1.3.3.1.1 | Scenario(text) | 1d? | 2005-01-24 | 2005-01-24 |  | 74d | 0d |
| 181 | 1.3.3.1.2 | Постановка задач | 1d? | 2005-01-25 | 2005-01-25 | 180 | 74d | 0d |
| 182 | 1.3.3.1.3 | Implimentation | 1d? | 2005-01-26 | 2005-01-26 | 181 | 74d | 0d |
| 183 | 1.3.3.1.4 | Dilogs/VO/Icons/Objects/Animations | 1d? | 2005-01-27 | 2005-01-27 | 182 | 74d | 0d |
| 184 | 1.3.3.1.5 | Настройка | 1d? | 2005-01-28 | 2005-01-28 | 183 | 74d |  |

| ID | WBS | Task | Duration | Start | Finish | Predecessors | Total slack | Free slack |
| --- | --- | --- | --- | --- | --- | --- | --- | --- |
| 185 | 1.3.3.2 | **Script 2** | 5d? | 2005-01-24 | 2005-01-28 |  | 102d |  |
| 186 | 1.3.3.2.1 | Scenario(text) | 1d? | 2005-01-24 | 2005-01-24 |  | 74d | 0d |
| 187 | 1.3.3.2.2 | Постановка задач | 1d? | 2005-01-25 | 2005-01-25 | 186 | 74d | 0d |
| 188 | 1.3.3.2.3 | Implimentation | 1d? | 2005-01-26 | 2005-01-26 | 187 | 74d | 0d |
| 189 | 1.3.3.2.4 | Dilogs/VO/Icons/Objects/Animations | 1d? | 2005-01-27 | 2005-01-27 | 188 | 74d | 0d |
| 190 | 1.3.3.2.5 | Настройка | 1d? | 2005-01-28 | 2005-01-28 | 189 | 74d |  |
| 191 | 1.3.3.3 | **Script 3** | 5d? | 2005-01-24 | 2005-01-28 |  | 102d |  |
| 192 | 1.3.3.3.1 | Scenario(text) | 1d? | 2005-01-24 | 2005-01-24 |  | 74d | 0d |
| 193 | 1.3.3.3.2 | Постановка задач | 1d? | 2005-01-25 | 2005-01-25 | 192 | 74d | 0d |
| 194 | 1.3.3.3.3 | Implimentation | 1d? | 2005-01-26 | 2005-01-26 | 193 | 74d | 0d |
| 195 | 1.3.3.3.4 | Dilogs/VO/Icons/Objects/Animations | 1d? | 2005-01-27 | 2005-01-27 | 194 | 74d | 0d |
| 196 | 1.3.3.3.5 | Настройка | 1d? | 2005-01-28 | 2005-01-28 | 195 | 74d |  |
| 197 | 1.3.3.4 | **Script 4** | 5d? | 2005-01-24 | 2005-01-28 |  | 102d |  |
| 198 | 1.3.3.4.1 | Scenario(text) | 1d? | 2005-01-24 | 2005-01-24 |  | 74d | 0d |
| 199 | 1.3.3.4.2 | Постановка задач | 1d? | 2005-01-25 | 2005-01-25 | 198 | 74d | 0d |
| 200 | 1.3.3.4.3 | Implimentation | 1d? | 2005-01-26 | 2005-01-26 | 199 | 74d | 0d |
| 201 | 1.3.3.4.4 | Dilogs/VO/Icons/Objects/Animations | 1d? | 2005-01-27 | 2005-01-27 | 200 | 74d | 0d |
| 202 | 1.3.3.4.5 | Настройка | 1d? | 2005-01-28 | 2005-01-28 | 201 | 74d |  |
| 203 | 1.3.3.5 | **Script 5** | 5d? | 2005-01-24 | 2005-01-28 |  | 102d |  |
| 204 | 1.3.3.5.1 | Scenario(text) | 1d? | 2005-01-24 | 2005-01-24 |  | 74d | 0d |
| 205 | 1.3.3.5.2 | Постановка задач | 1d? | 2005-01-25 | 2005-01-25 | 204 | 74d | 0d |
| 206 | 1.3.3.5.3 | Implimentation | 1d? | 2005-01-26 | 2005-01-26 | 205 | 74d | 0d |
| 207 | 1.3.3.5.4 | Dilogs/VO/Icons/Objects/Animations | 1d? | 2005-01-27 | 2005-01-27 | 206 | 74d | 0d |
| 208 | 1.3.3.5.5 | Настройка | 1d? | 2005-01-28 | 2005-01-28 | 207 | 74d |  |

| ID | WBS | Task | Duration | Start | Finish | Predecessors | Complete | Remaining | Total slack | Free slack | Constraint | Deadline | Resources | Work | Actual work |
| --- | --- | --- | --- | --- | --- | --- | --- | --- | --- | --- | --- | --- | --- | --- | --- |
| 210 | 1.4 | **04_Agroprom_Underground** | 32d? | 2005-01-24 A | 2005-03-01 |  | 17% | 26.46d? | 75d |  |  |  | Чугай, Рома | 408h | 196.31h |
| 211 | 1.4.1 | **LevelDesign** | 5d? | 2005-02-24 A | 2005-03-01 A | 137 | 100% |  |  |  |  | 2005-03-01 | Rainbow | 152h | 152h |
| 212 | 1.4.1.1 | **Stage 1** | 5d? | 2005-02-24 A | 2005-03-01 A |  | 100% |  |  |  |  |  | Rainbow | 112h | 112h |
| 213 | 1.4.1.1.1 | List of Changes | 1d | 2005-02-24 A | 2005-02-24 A |  | 100% |  |  |  |  |  | Rainbow | 8h | 8h |
| 214 | 1.4.1.1.2 | Changed Geometry | 2d | 2005-02-25 A | 2005-02-26 A | 213 | 100% |  |  |  | start no earlier than 2005-02-24 |  | Rainbow | 16h | 16h |
| 215 | 1.4.1.1.3 | Check List 1 | 1d? | 2005-02-28 A | 2005-02-28 A | 214 | 100% |  |  |  |  |  | Rainbow | 8h | 8h |
| 216 | 1.4.1.1.4 | Check List 2 | 1d? | 2005-02-26 A | 2005-02-26 A |  | 100% |  |  |  | start no earlier than 2005-02-26 |  | Rainbow | 8h | 8h |
| 217 | 1.4.1.1.5 | Check List 3 | 1d? | 2005-02-26 A | 2005-02-26 A |  | 100% |  |  |  | start no earlier than 2005-02-26 |  | Rainbow | 8h | 8h |
| 218 | 1.4.1.1.6 | Check List 4 | 1d? | 2005-02-26 A | 2005-02-26 A |  | 100% |  |  |  | start no earlier than 2005-02-26 |  | Rainbow | 8h | 8h |
| 219 | 1.4.1.1.7 | Render Geometry | 2d | 2005-02-28 A | 2005-03-01 A | 218 | 100% |  |  |  |  |  | Rainbow | 16h | 16h |
| 220 | 1.4.2 | **GameDesign** | 3d? | 2005-01-24 | 2005-01-26 |  |  |  | 104d |  |  |  |  |  |  |
| 221 | 1.4.2.1 | **Secrets** | 3d? | 2005-01-24 | 2005-01-26 |  |  |  | 104d |  |  |  |  |  |  |
| 222 | 1.4.2.1.1 | **Stage 1** | 3d? | 2005-01-24 | 2005-01-26 |  |  |  | 104d |  |  |  |  |  |  |
| 223 | 1.4.2.1.1.1 | Design | 1d? | 2005-01-24 | 2005-01-24 |  |  |  | 76d | 0d |  |  |  |  |  |
| 224 | 1.4.2.1.1.2 | Implementation | 1d? | 2005-01-25 | 2005-01-25 | 223 |  |  | 76d | 0d |  |  |  |  |  |
| 225 | 1.4.2.1.1.3 | Tuning | 1d? | 2005-01-26 | 2005-01-26 | 224 |  |  | 76d |  |  |  |  |  |  |
| 226 | 1.4.2.2 | **Smartterrains** | 3d? | 2005-01-24 | 2005-01-26 |  |  |  | 104d |  |  |  |  |  |  |
| 227 | 1.4.2.2.1 | **Stage 1** | 3d? | 2005-01-24 | 2005-01-26 |  |  |  | 104d |  |  |  |  |  |  |
| 228 | 1.4.2.2.1.1 | Design | 1d? | 2005-01-24 | 2005-01-24 |  |  |  | 76d | 0d |  |  |  |  |  |
| 229 | 1.4.2.2.1.2 | Implementation | 1d? | 2005-01-25 | 2005-01-25 | 228 |  |  | 76d | 0d |  |  |  |  |  |
| 230 | 1.4.2.2.1.3 | Tuning | 1d? | 2005-01-26 | 2005-01-26 | 229 |  |  | 76d |  |  |  |  |  |  |
| 231 | 1.4.2.3 | **Monsters/Spawns** | 3d? | 2005-01-24 | 2005-01-26 |  |  |  | 104d |  |  |  |  |  |  |
| 232 | 1.4.2.3.1 | **Stage 1** | 3d? | 2005-01-24 | 2005-01-26 |  |  |  | 104d |  |  |  |  |  |  |
| 233 | 1.4.2.3.1.1 | Design | 1d? | 2005-01-24 | 2005-01-24 |  |  |  | 76d | 0d |  |  |  |  |  |
| 234 | 1.4.2.3.1.2 | Implementation | 1d? | 2005-01-25 | 2005-01-25 | 233 |  |  | 76d | 0d |  |  |  |  |  |
| 235 | 1.4.2.3.1.3 | Tuning | 1d? | 2005-01-26 | 2005-01-26 | 234 |  |  | 76d |  |  |  |  |  |  |

| ID | WBS | Task | Duration | Start | Finish | Predecessors | Total slack | Free slack |
| --- | --- | --- | --- | --- | --- | --- | --- | --- |
| 236 | 1.4.2.4 | **Stalkers/Spawns** | 3d? | 2005-01-24 | 2005-01-26 |  | 104d |  |
| 237 | 1.4.2.4.1 | **Stage 1** | 3d? | 2005-01-24 | 2005-01-26 |  | 104d |  |
| 238 | 1.4.2.4.1.1 | Design | 1d? | 2005-01-24 | 2005-01-24 |  | 76d | 0d |
| 239 | 1.4.2.4.1.2 | Implementation | 1d? | 2005-01-25 | 2005-01-25 | 238 | 76d | 0d |
| 240 | 1.4.2.4.1.3 | Tuning | 1d? | 2005-01-26 | 2005-01-26 | 239 | 76d |  |
| 241 | 1.4.2.5 | **Anomalies/Spawns** | 3d? | 2005-01-24 | 2005-01-26 |  | 104d |  |
| 242 | 1.4.2.5.1 | **Stage 1** | 3d? | 2005-01-24 | 2005-01-26 |  | 104d |  |
| 243 | 1.4.2.5.1.1 | Design | 1d? | 2005-01-24 | 2005-01-24 |  | 76d | 0d |
| 244 | 1.4.2.5.1.2 | Implementation | 1d? | 2005-01-25 | 2005-01-25 | 243 | 76d | 0d |
| 245 | 1.4.2.5.1.3 | Tuning | 1d? | 2005-01-26 | 2005-01-26 | 244 | 76d |  |
| 246 | 1.4.2.6 | **Physicks** | 3d? | 2005-01-24 | 2005-01-26 |  | 104d |  |
| 247 | 1.4.2.6.1 | **Stage 1** | 3d? | 2005-01-24 | 2005-01-26 |  | 104d |  |
| 248 | 1.4.2.6.1.1 | Design | 1d? | 2005-01-24 | 2005-01-24 |  | 76d | 0d |
| 249 | 1.4.2.6.1.2 | Implementation | 1d? | 2005-01-25 | 2005-01-25 | 248 | 76d | 0d |
| 250 | 1.4.2.6.1.3 | Tuning | 1d? | 2005-01-26 | 2005-01-26 | 249 | 76d |  |
| 251 | 1.4.3 | **Scripts** | 5d? | 2005-01-24 | 2005-01-28 |  | 102d |  |
| 252 | 1.4.3.1 | **Script 1** | 5d? | 2005-01-24 | 2005-01-28 |  | 102d |  |
| 253 | 1.4.3.1.1 | Scenario(text) | 1d? | 2005-01-24 | 2005-01-24 |  | 74d | 0d |
| 254 | 1.4.3.1.2 | Постановка задач | 1d? | 2005-01-25 | 2005-01-25 | 253 | 74d | 0d |
| 255 | 1.4.3.1.3 | Implimentation | 1d? | 2005-01-26 | 2005-01-26 | 254 | 74d | 0d |
| 256 | 1.4.3.1.4 | Dilogs/VO/Icons/Objects/Animations | 1d? | 2005-01-27 | 2005-01-27 | 255 | 74d | 0d |
| 257 | 1.4.3.1.5 | Настройка | 1d? | 2005-01-28 | 2005-01-28 | 256 | 74d |  |
| 258 | 1.4.3.2 | **Script 2** | 5d? | 2005-01-24 | 2005-01-28 |  | 102d |  |
| 259 | 1.4.3.2.1 | Scenario(text) | 1d? | 2005-01-24 | 2005-01-24 |  | 74d | 0d |
| 260 | 1.4.3.2.2 | Постановка задач | 1d? | 2005-01-25 | 2005-01-25 | 259 | 74d | 0d |
| 261 | 1.4.3.2.3 | Implimentation | 1d? | 2005-01-26 | 2005-01-26 | 260 | 74d | 0d |
| 262 | 1.4.3.2.4 | Dilogs/VO/Icons/Objects/Animations | 1d? | 2005-01-27 | 2005-01-27 | 261 | 74d | 0d |
| 263 | 1.4.3.2.5 | Настройка | 1d? | 2005-01-28 | 2005-01-28 | 262 | 74d |  |

| ID | WBS | Task | Duration | Start | Finish | Predecessors | Complete | Remaining | Total slack | Free slack | Constraint | Deadline | Resources | Work | Actual work |
| --- | --- | --- | --- | --- | --- | --- | --- | --- | --- | --- | --- | --- | --- | --- | --- |
| 264 | 1.4.3.3 | **Script 3** | 5d? | 2005-01-24 | 2005-01-28 |  |  |  | 102d |  |  |  |  |  |  |
| 265 | 1.4.3.3.1 | Scenario(text) | 1d? | 2005-01-24 | 2005-01-24 |  |  |  | 74d | 0d |  |  |  |  |  |
| 266 | 1.4.3.3.2 | Постановка задач | 1d? | 2005-01-25 | 2005-01-25 | 265 |  |  | 74d | 0d |  |  |  |  |  |
| 267 | 1.4.3.3.3 | Implimentation | 1d? | 2005-01-26 | 2005-01-26 | 266 |  |  | 74d | 0d |  |  |  |  |  |
| 268 | 1.4.3.3.4 | Dilogs/VO/Icons/Objects/Animations | 1d? | 2005-01-27 | 2005-01-27 | 267 |  |  | 74d | 0d |  |  |  |  |  |
| 269 | 1.4.3.3.5 | Настройка | 1d? | 2005-01-28 | 2005-01-28 | 268 |  |  | 74d |  |  |  |  |  |  |
| 270 | 1.4.3.4 | **Script 4** | 5d? | 2005-01-24 | 2005-01-28 |  |  |  | 102d |  |  |  |  |  |  |
| 271 | 1.4.3.4.1 | Scenario(text) | 1d? | 2005-01-24 | 2005-01-24 |  |  |  | 74d | 0d |  |  |  |  |  |
| 272 | 1.4.3.4.2 | Постановка задач | 1d? | 2005-01-25 | 2005-01-25 | 271 |  |  | 74d | 0d |  |  |  |  |  |
| 273 | 1.4.3.4.3 | Implimentation | 1d? | 2005-01-26 | 2005-01-26 | 272 |  |  | 74d | 0d |  |  |  |  |  |
| 274 | 1.4.3.4.4 | Dilogs/VO/Icons/Objects/Animations | 1d? | 2005-01-27 | 2005-01-27 | 273 |  |  | 74d | 0d |  |  |  |  |  |
| 275 | 1.4.3.4.5 | Настройка | 1d? | 2005-01-28 | 2005-01-28 | 274 |  |  | 74d |  |  |  |  |  |  |
| 276 | 1.4.3.5 | **Script 5** | 5d? | 2005-01-24 | 2005-01-28 |  |  |  | 102d |  |  |  |  |  |  |
| 277 | 1.4.3.5.1 | Scenario(text) | 1d? | 2005-01-24 | 2005-01-24 |  |  |  | 74d | 0d |  |  |  |  |  |
| 278 | 1.4.3.5.2 | Постановка задач | 1d? | 2005-01-25 | 2005-01-25 | 277 |  |  | 74d | 0d |  |  |  |  |  |
| 279 | 1.4.3.5.3 | Implimentation | 1d? | 2005-01-26 | 2005-01-26 | 278 |  |  | 74d | 0d |  |  |  |  |  |
| 280 | 1.4.3.5.4 | Dilogs/VO/Icons/Objects/Animations | 1d? | 2005-01-27 | 2005-01-27 | 279 |  |  | 74d | 0d |  |  |  |  |  |
| 281 | 1.4.3.5.5 | Настройка | 1d? | 2005-01-28 | 2005-01-28 | 280 |  |  | 74d |  |  |  |  |  |  |
| 283 | 1.5 | **05_Dark_Valley** | 53.75d? | 2005-01-24 A | 2005-03-26 |  | 83% | 9.36d? | -3.75d | 0d |  | 2005-03-01 | Рома, Змей | 1583h | 1380.11h |
| 284 | 1.5.1 | **LevelDesign** | 13d? | 2005-01-24 A | 2005-02-07 A |  | 100% |  |  |  |  | 2005-02-07 | Вова Ефимов | 336h | 336h |
| 285 | 1.5.1.1 | **Stage 1** | 13d? | 2005-01-24 A | 2005-02-07 A |  | 100% |  |  |  |  |  | Вова Ефимов | 232h | 232h |
| 286 | 1.5.1.1.1 | List of Changes | 2d | 2005-01-24 A | 2005-01-25 A |  | 100% |  |  |  | start no earlier than 2005-01-24 |  | Вова Ефимов | 16h | 16h |
| 287 | 1.5.1.1.2 | Changed Geometry | 8d | 2005-01-26 A | 2005-02-03 A | 286 | 100% |  |  |  |  |  | Вова Ефимов | 64h | 64h |
| 288 | 1.5.1.1.3 | Check List 1 | 1d? | 2005-02-04 A | 2005-02-04 A | 287 | 100% |  |  |  | start no earlier than 2005-01-27 |  | Вова Ефимов | 8h | 8h |
| 289 | 1.5.1.1.4 | Check List 2 | 1d? | 2005-02-04 A | 2005-02-04 A |  | 100% |  |  |  | start no earlier than 2005-02-04 |  | Вова Ефимов | 8h | 8h |
| 290 | 1.5.1.1.5 | Check List 3 | 1d? | 2005-02-04 A | 2005-02-04 A |  | 100% |  |  |  | start no earlier than 2005-02-04 |  | Вова Ефимов | 8h | 8h |
| 291 | 1.5.1.1.6 | Check List 4 | 1d? | 2005-02-04 A | 2005-02-04 A |  | 100% |  |  |  | start no earlier than 2005-02-04 |  | Вова Ефимов | 8h | 8h |
| 292 | 1.5.1.1.7 | Render Geometry | 1d | 2005-02-05 A | 2005-02-05 A | 291 | 100% |  |  |  |  |  | Вова Ефимов | 8h | 8h |
| 293 | 1.5.1.1.8 | Grass | 1d? | 2005-02-07 A | 2005-02-07 A | 292 | 100% |  |  |  |  |  | Вова Ефимов | 8h | 8h |

| ID | WBS | Task | Type | Duration | Start | Finish | Predecessors | Complete | Remaining | Total slack | Free slack | Constraint | Resources | Work | Actual work |
| --- | --- | --- | --- | --- | --- | --- | --- | --- | --- | --- | --- | --- | --- | --- | --- |
| 294 | 1.5.2 | **GameDesign** |  | 24d? | 2005-02-01 A | 2005-02-28 |  | 15% | 20.34d? | 0.88d |  |  |  | 151h | 23h |
| 295 | 1.5.2.1 | AI Maps/Graphs |  | 2.88d? | 2005-02-01 A | 2005-02-03 A |  | 100% |  |  |  | finish no earlier than 2005-02-03 | Шишкин | 23h | 23h |
| 296 | 1.5.2.2 | **Secrets** |  | 3d? | 2005-02-21 | 2005-02-23 |  |  |  | 4.88d |  |  |  | 24h |  |
| 297 | 1.5.2.2.1 | **Stage 1** |  | 3d? | 2005-02-21 | 2005-02-23 |  |  |  | 4.88d |  |  |  | 24h |  |
| 298 | 1.5.2.2.1.1 | Design |  | 1d? | 2005-02-21 | 2005-02-21 |  |  |  | 4.88d | 0d | start no earlier than 2005-02-21 | Шишкин | 8h |  |
| 299 | 1.5.2.2.1.2 | Implementation |  | 1d? | 2005-02-22 | 2005-02-22 | 298 |  |  | 4.88d | 0d | start no earlier than 2005-02-15 | Шишкин | 8h |  |
| 300 | 1.5.2.2.1.3 | Tuning |  | 1d? | 2005-02-23 | 2005-02-23 | 299 |  |  | 4.88d |  |  | Шишкин | 8h |  |
| 301 | 1.5.2.3 | **Smartterrains** |  | 1d? | 2005-02-22 | 2005-02-22 |  |  |  | 5.88d |  |  |  | 8h |  |
| 302 | 1.5.2.3.1 | **Stage 1** |  | 1d? | 2005-02-22 | 2005-02-22 |  |  |  | 5.88d |  |  |  | 8h |  |
| 303 | 1.5.2.3.1.1 | Design |  | 1d? | 2005-02-22 | 2005-02-22 |  |  |  | 5.88d | 0d | start no earlier than 2005-02-22 | Шишкин | 8h |  |
| 304 | 1.5.2.3.1.2 | Implementation | milestone | 0d | 2005-02-22 | 2005-02-22 | 303 |  |  | 5.88d | 0d | start no earlier than 2005-02-17 | Шишкин |  |  |
| 305 | 1.5.2.3.1.3 | Tuning | milestone | 0d | 2005-02-22 | 2005-02-22 | 304 |  |  | 5.88d |  | start no earlier than 2005-02-17 | Шишкин |  |  |
| 306 | 1.5.2.4 | **Monsters/Spawns** |  | 3d? | 2005-02-22 | 2005-02-24 |  |  |  | 3.88d |  |  |  | 24h |  |
| 307 | 1.5.2.4.1 | **Stage 1** |  | 3d? | 2005-02-22 | 2005-02-24 |  |  |  | 3.88d |  |  |  | 24h |  |
| 308 | 1.5.2.4.1.1 | Design |  | 1d? | 2005-02-22 | 2005-02-22 |  |  |  | 3.88d | 0d | start no earlier than 2005-02-22 | Шишкин | 8h |  |
| 309 | 1.5.2.4.1.2 | Implementation |  | 1d? | 2005-02-23 | 2005-02-23 | 308 |  |  | 3.88d | 0d | start no earlier than 2005-02-17 | Шишкин | 8h |  |
| 310 | 1.5.2.4.1.3 | Tuning |  | 1d | 2005-02-24 | 2005-02-24 | 309 |  |  | 3.88d |  | start no earlier than 2005-02-17 | Шишкин | 8h |  |
| 311 | 1.5.2.5 | **Stalkers/Spawns** |  | 3d? | 2005-02-22 | 2005-02-24 |  |  |  | 3.88d |  |  |  | 24h |  |
| 312 | 1.5.2.5.1 | **Stage 1** |  | 3d? | 2005-02-22 | 2005-02-24 |  |  |  | 3.88d |  |  |  | 24h |  |
| 313 | 1.5.2.5.1.1 | Design |  | 1d? | 2005-02-22 | 2005-02-22 |  |  |  | 3.88d | 0d | start no earlier than 2005-02-22 | Шишкин | 8h |  |
| 314 | 1.5.2.5.1.2 | Implementation |  | 1d | 2005-02-23 | 2005-02-23 | 313 |  |  | 3.88d | 0d | start no earlier than 2005-02-19 | Шишкин | 8h |  |
| 315 | 1.5.2.5.1.3 | Tuning |  | 1d | 2005-02-24 | 2005-02-24 | 314 |  |  | 3.88d |  | start no earlier than 2005-02-19 | Шишкин | 8h |  |
| 316 | 1.5.2.6 | **Anomalies/Spawns** |  | 3d? | 2005-02-25 | 2005-02-28 |  |  |  | 0.88d |  |  |  | 24h |  |
| 317 | 1.5.2.6.1 | **Stage 1** |  | 3d? | 2005-02-25 | 2005-02-28 |  |  |  | 0.88d |  |  |  | 24h |  |
| 318 | 1.5.2.6.1.1 | Design |  | 1d? | 2005-02-25 | 2005-02-25 |  |  |  | 0.88d | 0d | start no earlier than 2005-02-25 | Шишкин | 8h |  |
| 319 | 1.5.2.6.1.2 | Implementation |  | 1d | 2005-02-26 | 2005-02-26 | 318 |  |  | 0.88d | 0d | start no earlier than 2005-02-19 | Шишкин | 8h |  |
| 320 | 1.5.2.6.1.3 | Tuning |  | 1d | 2005-02-28 | 2005-02-28 | 319 |  |  | 0.88d |  | start no earlier than 2005-02-19 | Шишкин | 8h |  |

| ID | WBS | Task | Duration | Start | Finish | Predecessors | Complete | Remaining | Total slack | Free slack | Constraint | Deadline | Resources | Work | Actual work |
| --- | --- | --- | --- | --- | --- | --- | --- | --- | --- | --- | --- | --- | --- | --- | --- |
| 321 | 1.5.2.7 | **Physicks** | 3d? | 2005-02-23 | 2005-02-25 |  |  |  | 2.88d |  |  |  |  | 24h |  |
| 322 | 1.5.2.7.1 | **Stage 1** | 3d? | 2005-02-23 | 2005-02-25 |  |  |  | 2.88d |  |  |  |  | 24h |  |
| 323 | 1.5.2.7.1.1 | Design | 1d? | 2005-02-23 | 2005-02-23 |  |  |  | 2.88d | 0d | start no earlier than 2005-02-23 |  | Джип | 8h |  |
| 324 | 1.5.2.7.1.2 | Implementation | 1d? | 2005-02-24 | 2005-02-24 | 323 |  |  | 2.88d | 0d |  |  | Джип | 8h |  |
| 325 | 1.5.2.7.1.3 | Tuning | 1d? | 2005-02-25 | 2005-02-25 | 324 |  |  | 2.88d |  |  |  | Джип | 8h |  |
| 326 | 1.5.3 | **Scripts** | 50.75d? | 2005-01-27 A | 2005-03-26 |  | 94% | 3.24d? | -3.75d | 0d |  | 2005-03-01 |  | 666h | 666h |
| 327 | 1.5.3.1 | Scenario (text) | 3.88d | 2005-01-27 A | 2005-01-31 A |  | 100% |  |  |  |  |  | Шишкин | 31h | 31h |
| 328 | 1.5.3.2 | Setting tasks | 1d? | 2005-02-04 A | 2005-02-04 A |  | 100% |  |  |  | start no earlier than 2005-02-04 |  | Шишкин | 8h | 8h |
| 329 | 1.5.3.3 | **Scene 1 - Bandits' Gulag.** | 10d? | 2005-02-15 A | 2005-02-25 A |  | 100% |  |  |  |  |  |  | 95h | 95h |
| 330 | 1.5.3.3.1 | Accomplishment | 10d? | 2005-02-15 A | 2005-02-25 A |  | 100% |  |  |  |  |  | Змей | 80h | 80h |
| 331 | 1.5.3.3.2 | Arrangement | 0.88d | 2005-02-15 A | 2005-02-15 A |  | 100% |  |  |  | start no earlier than 2005-02-04 |  | Шишкин | 7h | 7h |
| 332 | 1.5.3.3.3 | Texts, Dialogues, Tasks, Marks on the map, news, characters' profiles (think over) | 1d | 2005-02-15 A | 2005-02-15 A |  | 100% |  |  |  | start no earlier than 2005-02-04 |  | Шишкин | 8h | 8h |
| 333 | 1.5.3.4 | **Scene 2 - Falling Bloodsucker.** | 7.5d | 2005-02-07 A | 2005-02-15 A |  | 100% |  |  |  |  |  |  | 8h | 8h |
| 334 | 1.5.3.4.1 | Accomplishment | 1d | 2005-02-15 A | 2005-02-15 A |  | 100% |  |  |  |  |  |  |  |  |
| 335 | 1.5.3.4.2 | Arrangement | 0.5d | 2005-02-15 A | 2005-02-15 A |  | 100% |  |  |  | start no earlier than 2005-02-07 |  | Шишкин | 4h | 4h |
| 336 | 1.5.3.4.3 | Texts, Dialogues, Tasks, Marks on the map, news, characters' profiles (think over) | 0.5d | 2005-02-07 A | 2005-02-07 A |  | 100% |  |  |  | start no earlier than 2005-02-07 |  | Шишкин | 4h | 4h |
| 337 | 1.5.3.5 | **Scene 5 - SOS from Gas Station.** | 1d? | 2005-02-15 A | 2005-02-15 A |  | 100% |  |  |  |  |  |  | 22h | 22h |
| 338 | 1.5.3.5.1 | Accomplishment | 0.88d | 2005-02-15 A | 2005-02-15 A |  | 100% |  |  |  |  |  | Змей | 7h | 7h |
| 339 | 1.5.3.5.2 | Arrangement | 0.88d | 2005-02-15 A | 2005-02-15 A |  | 100% |  |  |  | start no earlier than 2005-02-21 |  | Шишкин | 7h | 7h |
| 340 | 1.5.3.5.3 | Texts, Dialogues, Tasks, Marks on the map, news, characters' profiles (think over) | 1d? | 2005-02-15 A | 2005-02-15 A |  | 100% |  |  |  | start no earlier than 2005-02-21 |  | Шишкин | 8h | 8h |
| 341 | 1.5.3.6 | **Scene 4 - Monolith's Gulag.** | 9.88d? | 2005-02-14 A | 2005-02-24 A |  | 100% |  |  |  |  |  |  | 90h | 90h |
| 342 | 1.5.3.6.1 | Accomplishment | 7.88d? | 2005-02-16 A | 2005-02-24 A |  | 100% |  |  |  |  |  | Змей | 63h | 63h |
| 343 | 1.5.3.6.2 | Arrangement | 2.88d | 2005-02-14 A | 2005-02-16 A |  | 100% |  |  |  | finish no earlier than 2005-02-15 |  | Шишкин | 23h | 23h |
| 344 | 1.5.3.6.3 | Texts, Dialogues, Tasks, Marks on the map, news, characters' profiles (think over) | 0.5d | 2005-02-16 A | 2005-02-16 A |  | 100% |  |  |  | start no earlier than 2005-02-16 |  | Шишкин | 4h | 4h |

Notes:
- 327: В Темной Долине ключевые места это Лагерь Бандитов и База Монолита. Ну уровне много грузовиков смерти и трупов, в ПДА которых прописаны различные задания на убийство. Игрок при переходе с Гарбэджа натыкается на засады бандитов. В Лагерь бандитов можно попасть через трубу (она описывается или дается план новичком из драммомента, инфа в ПДА Серого, Лидер Долга). В лагере игрок может узнать пароль для прохода на территорию Базы Монолита, получить ключ в лабораторию Х18 и бандитский костюм. Если игрок убьет Борова (лидера бандитов), то активируется скрипт «Преследование игрока на Болотах бандитами в кожаных плащах». Игрок должен проникнуть на Базу Монолита (в костюме бандита мирно или с войной, убивая всех монолитовцев). Там он должен найти вход в Лабораторию Х18.
- 329: Очень много бандитов, кэмпы у костра, спящие, раненые, патрули по территории лагеря. В отдельном помещении сидит лидер группировки Боров. У Борова хранится ключ к Лаборатории Х18. Его охраняют несколько крутых бандитов в плащах с капюшонами. При убийстве Борова включается инфопоршн «Преследование игрока на Болотах бандитами в кожаных плащах». По территории лагеря расставлены часовые, на вышках снайперы.
- 333: Если игрок решит пробираться в Лагерь Бандитов через трубу, за 5 метров до выхода из нее он слышит крики «Сука, как ты сюда пробрался?», «Мочи его, ребята!» и начинается стрельба. Если игрок застыл на месте или убежал, испугавшись, что это ЕГО заметили, стрельба продолжается еще секунд 15, потом сверху падает кровосос. Если игрок все же подойдет к выходу из трубы, практически ему на голову сверху свалится мертвое тело кровососа. Слышит «Получи, тварь!». Атакующие бандиты расходятся по местам.
- 337: Игрок получает сигнал SOS из здания рядом с бензоколонкой. Игрок приходит туда, видит прямо от входа возле стены в освещенном единственной лампочкой месте полумертвого сталкера. Когда игрок входит в комнату, он замечает справа и слева от входа в тени много трупов сталкеров, солдат. Из темной комнаты слева от входа выбегает кровосос, перекрывая выход, направляется к игроку и нападает.
- 341: Много зомбированных сталкеров группировки Монолит. У командиров отделений ключи от лаборатории Х18. Патрульные усиленно охраняют входы, расставить в местах, где игрок не сможет их «снять» с расстояния снайперкой. В обычном режиме монолитовцы сразу открывают огонь по игроку, только увидев его (однако за территорию Базы их выманить невозможно стоит рестриктор). Если игрок одет в костюм Бандита зоунгарды Монолита на входах остановят игрока, потребуют сказать пароль, при правильном ответе пропускают. Если игрок в костюме бандита стрельнет по монолитовцу или снимет костюм, монолитовцы раз и навсегда обижаются на игрока.

| ID | WBS | Task | Duration | Start | Finish | Complete | Constraint | Resources | Work | Actual work |
| --- | --- | --- | --- | --- | --- | --- | --- | --- | --- | --- |
| 345 | 1.5.3.7 | **Scene 3 - Transferring the Prisoner.** | 10.88d? | 2005-02-17 A | 2005-03-01 A | 100% |  |  | 103h | 103h |
| 346 | 1.5.3.7.1 | Accomplishment | 10.88d? | 2005-02-17 A | 2005-03-01 A | 100% |  | Змей | 87h | 87h |
| 347 | 1.5.3.7.2 | Arrangement | 1d | 2005-02-17 A | 2005-02-17 A | 100% | start no earlier than 2005-02-17 | Шишкин | 8h | 8h |
| 348 | 1.5.3.7.3 | Texts, Dialogues, Tasks, Marks on the map, news, characters' profiles (think over) | 1d? | 2005-02-17 A | 2005-02-17 A | 100% | start no earlier than 2005-02-17 | Шишкин | 8h | 8h |
| 349 | 1.5.3.8 | **Scene 9 - Bandits' Prisoner.** | 2.88d? | 2005-02-18 A | 2005-02-21 A | 100% |  |  | 37h | 37h |
| 350 | 1.5.3.8.1 | Accomplishment | 2.88d | 2005-02-18 A | 2005-02-21 A | 100% |  | Змей | 23h | 23h |
| 351 | 1.5.3.8.2 | Arrangement | 0.75d | 2005-02-21 A | 2005-02-21 A | 100% | start no earlier than 2005-02-19 | Шишкин | 6h | 6h |
| 352 | 1.5.3.8.3 | Texts, Dialogues, Tasks, Marks on the map, news, characters' profiles (think over) | 1d? | 2005-02-19 A | 2005-02-19 A | 100% | start no earlier than 2005-02-19 | Шишкин | 8h | 8h |
| 353 | 1.5.3.9 | **Scene 10 - Sacrifice.** | 2d? | 2005-02-21 A | 2005-02-22 A | 100% |  |  | 30h | 30h |
| 354 | 1.5.3.9.1 | Accomplishment | 2d | 2005-02-21 A | 2005-02-22 A | 100% |  | Змей | 16h | 16h |
| 355 | 1.5.3.9.2 | Arrangement | 0.75d | 2005-02-22 A | 2005-02-22 A | 100% | start no earlier than 2005-02-22 | Шишкин | 6h | 6h |
| 356 | 1.5.3.9.3 | Texts, Dialogues, Tasks, Marks on the map, news, characters' profiles (think over) | 1d? | 2005-02-22 A | 2005-02-22 A | 100% | start no earlier than 2005-02-22 | Шишкин | 8h | 8h |
| 357 | 1.5.3.10 | **Scene 6 - Car's Arrival.** | 1d? | 2005-02-21 A | 2005-02-21 A | 100% |  |  | 22h | 22h |
| 358 | 1.5.3.10.1 | Accomplishment | 0.88d | 2005-02-21 A | 2005-02-21 A | 100% |  | Змей | 7h | 7h |
| 359 | 1.5.3.10.2 | Arrangement | 0.88d | 2005-02-21 A | 2005-02-21 A | 100% | start no earlier than 2005-02-12 | Шишкин | 7h | 7h |
| 360 | 1.5.3.10.3 | Texts, Dialogues, Tasks, Marks on the map, news, characters' profiles (think over) | 1d? | 2005-02-21 A | 2005-02-21 A | 100% | start no earlier than 2005-02-12 | Шишкин | 8h | 8h |
| 361 | 1.5.3.11 | **Scene 7 - Bandits' ambushes on the Garbage entrance.** | 2d? | 2005-02-22 A | 2005-02-23 A | 100% |  |  | 30h | 30h |
| 362 | 1.5.3.11.1 | Accomplishment | 1.88d | 2005-02-22 A | 2005-02-23 A | 100% |  | Змей | 15h | 15h |
| 363 | 1.5.3.11.2 | Arrangement | 0.88d | 2005-02-23 A | 2005-02-23 A | 100% | start no earlier than 2005-02-23 | Шишкин | 7h | 7h |
| 364 | 1.5.3.11.3 | Texts, Dialogues, Tasks, Marks on the map, news, characters' profiles (think over) | 1d? | 2005-02-23 A | 2005-02-23 A | 100% | start no earlier than 2005-02-23 | Шишкин | 8h | 8h |
| 365 | 1.5.3.12 | **Scene 8 - Player imprisoned.** | 24d? | 2005-02-23 A | 2005-03-22 A | 100% |  |  | 48h | 48h |
| 366 | 1.5.3.12.1 | Accomplishment | 1d | 2005-02-23 A | 2005-02-23 A | 100% |  | Змей | 8h | 8h |
| 367 | 1.5.3.12.2 | Arrangement | 4d | 2005-03-18 A | 2005-03-22 A | 100% | finish no earlier than 2005-03-22 | Шишкин | 32h | 32h |
| 368 | 1.5.3.12.3 | Texts, Dialogues, Tasks, Marks on the map, news, characters' profiles (think over) | 1d? | 2005-02-24 A | 2005-02-24 A | 100% | start no earlier than 2005-02-24 | Шишкин | 8h | 8h |

Notes:
- 345: Скрипт срабатывает при приближении игрока к дороге. В Лагере Бандитов спавнятся три бандита и один пленный сталкер. Бандиты ведут сталкера к Базе Монолита по дороге впереди пленный, сзади три охранника с автоматами, которые время от времени «подбадривают» пленного фразами вроде: «Ну, я тебе не завидую», «Скоро ты будешь работать обедом для мутантов в темном подземелье», «Готовься к фуршету, чувак. Ты основное блюдо!». Сталкер посылает по ПДА просьбы о помощи. Если игрок расстрелял бандитов, пленный сталкер в благодарность рассказывает, что только что бандиты вспоминали пароль для входа на Базу Монолита. Пароль этот «такой-то». А пройти на Базу можно, переодевшись в костюм бандита. Если игрок не обращает внимания на это событие, по достижении определенной точки (расположенной довольно близко к Базе Монолита) пленный не выдерживает, в панике сбегает с дороги и, петляя, пытается убежать. Бандиты остаются на дороге, поднимают автоматы и расстреливают беднягу, после чего возвращаются в Лагерь.
- 349: Когда игрок проходит у входа в лагерь бандитов, он слышит громкие крики «На помощь! Спасите! Меня тут убьют скоро!». Можно дублировать сообщением на ПДА. Когда игрок подходит к решетке, заключенный говорит, что он разведчик Долга, его тут держат бандиты, что он узнал пароль для входа на базу Монолита. Потом резко обрывает диалог «Тсс! Сюда идут!». Отыгрывается скрипт Жертвоприношение. Заключенный говорит, что если игрок выпустит ему, он ему скажет пароль Монолита и еще кой-чего полезного. Когда игрок выпускает, тот называет пароль и говорит, что Монолитовцы тупые они зомбированные, поэтому их можно обмануть и проникнуть на территорию базы, переодевшись в костюм бандита. А ключ к Лаборатории Х18, между прочим, хранится у Борова.
- 353: Когда заключенный сказал «Тсс! Сюда идут!» в подвал входят несколько бандитов, которые ведут сталкера-новичка. Они подводят его к отверстию в полу (отверстие плохо видно из окна, через которое игрок общался с заключенным, поэтому игроку лучше перейти к соседнему окну, там вообще отломан кусок стены, поэтому будет отлично видно сценку). Перекидываются парой фраз «Ставлю 10 рублей, что ему оторвут голову», «Нет, он вообще превратится в кровавое месиво через 5 секунд», «Да хватит томить, толкайте его уже!». Потом один из бандитов толкает новичка в дырку (наносит хит), после чего веселая компания еще некоторое время смотрит, что происходит там, внизу, потом уходят.
- 357: Когда игрок заходит на территорию бензоколонки, он слышит приближающийся рокот двигателя, к главному входу на Базу Монолита подъезжает Камаз, из него выгружаются 4-5 человек и идут в здание Базы.
- 361: На каждом из трех входов с Гарбэджа сидят бандиты. При входе игрока в скриптовую зону они подбегают, после непродолжительного диалога дают в морду. Игрок теряет сознание, переход на скрипт Игрок в темнице
- 365: В окрестностях Лагеря Бандитов расставляем несколько патрулей. При виде игрока они кричат что-то вроде «Браток, подойди, дело есть. Только убери оружие». Если игрок подходит, ему дают в морду, после чего экран темнеет. Игрок приходит в себя в подвале Лагеря Бандитов, в клетке рядом с клеткой пленного долговца. Дверь клетки игрока открыта. Игрок видит бандита неподалеку, тот нажимает на кнопку пульта на стене и дверь захлопывается. Бандит бросает фразу «Попались, пташки! Ну, сидите, ждите своей участи» и уходит. Долговец сидит на полу своей клетки и что-то бубнит. Из оружия у игрока остались только болты. Ему нужно попасть болтом в пульт (нажать тем самым на кнопку), тогда его дверь и дверь долговца открывается. Игрок на тумбочке возле пульта берет пистолет и коробку патронов, убивает охранника, который стоит наверху, у лестницы. В его рюкзаке находит все свои отобранные предметы. Долговец благодарит игрока, рассказывает, что пароль «такой-то», на Базу Монолита можно пробраться, переодевшись, а ключ от лаборатории есть у Борова.

| ID | WBS | Task | Duration | Start | Finish | Predecessors | Complete | Total slack | Free slack | Constraint | Deadline | Resources | Work | Actual work |
| --- | --- | --- | --- | --- | --- | --- | --- | --- | --- | --- | --- | --- | --- | --- |
| 369 | 1.5.3.13 | **Scene 7 - Suicide.** | 8.88d? | 2005-02-25 A | 2005-03-07 A |  | 100% |  |  |  |  |  | 87h | 87h |
| 370 | 1.5.3.13.1 | Accomplishment | 8.88d? | 2005-02-25 A | 2005-03-07 A |  | 100% |  |  | start no earlier than 2005-02-25 |  | Змей | 71h | 71h |
| 371 | 1.5.3.13.2 | Arrangement | 1d | 2005-02-25 A | 2005-02-25 A |  | 100% |  |  | start no earlier than 2005-02-25 |  | Шишкин | 8h | 8h |
| 372 | 1.5.3.13.3 | Texts, Dialogues, Tasks, Marks on the map, news, characters' profiles (think over) | 1d? | 2005-02-25 A | 2005-02-25 A |  | 100% |  |  | start no earlier than 2005-02-25 |  | Шишкин | 8h | 8h |
| 373 | 1.5.3.14 | **Scene 7 - Swindling the jerk.** | 21d? | 2005-02-26 A | 2005-03-22 A |  | 100% |  |  |  |  |  | 55h | 55h |
| 374 | 1.5.3.14.1 | Accomplishment | 1.88d | 2005-02-26 A | 2005-02-28 A |  | 100% |  |  |  |  | Змей | 15h | 15h |
| 375 | 1.5.3.14.2 | Arrangement | 4d | 2005-03-18 A | 2005-03-22 A |  | 100% |  |  | finish no earlier than 2005-03-22 |  | Шишкин | 32h | 32h |
| 376 | 1.5.3.14.3 | Texts, Dialogues, Tasks, Marks on the map, news, characters' profiles (think over) | 1d? | 2005-02-28 A | 2005-02-28 A |  | 100% |  |  | start no earlier than 2005-02-28 |  | Шишкин | 8h | 8h |
| 377 | 1.5.3.15 | Testing | 5.75d? | 2005-03-21 | 2005-03-26 |  |  | -21.88d | 0d | finish no earlier than 2005-03-26 |  |  |  |  |
| 379 | 1.6 | **18_Prypiat** | 30d? | 2005-01-24 | 2005-02-26 |  |  | 24.88d |  |  | 2005-04-01 | Рома, Змей | 528h |  |
| 380 | 1.6.1 | **LevelDesign** | 11d? | 2005-02-15 | 2005-02-26 | 727 |  | 1.88d |  |  | 2005-03-01 | Веня | 288h |  |
| 381 | 1.6.1.1 | **Stage 1** | 11d? | 2005-02-15 | 2005-02-26 |  |  | 1.88d |  |  |  | Веня | 200h |  |
| 382 | 1.6.1.1.1 | List of Changes | 1d | 2005-02-15 | 2005-02-15 |  |  | 5.88d | 0d | start no earlier than 2005-02-15 |  | Веня | 8h |  |
| 383 | 1.6.1.1.2 | Changed Geometry | 5d | 2005-02-16 | 2005-02-21 | 382 |  | 5.88d | 0d |  |  | Веня | 40h |  |
| 384 | 1.6.1.1.3 | Check List 1 | 1d? | 2005-02-22 | 2005-02-22 | 383 |  | 5.88d |  |  |  | Веня | 8h |  |
| 385 | 1.6.1.1.4 | Check List 2 | 1d? | 2005-02-22 | 2005-02-22 |  |  | 5.88d |  | start no earlier than 2005-02-22 |  | Веня | 8h |  |
| 386 | 1.6.1.1.5 | Check List 3 | 1d? | 2005-02-22 | 2005-02-22 |  |  | 5.88d |  | start no earlier than 2005-02-22 |  | Веня | 8h |  |
| 387 | 1.6.1.1.6 | Check List 4 | 1d? | 2005-02-22 | 2005-02-22 |  |  | 1.88d | 0d | start no earlier than 2005-02-22 |  | Веня | 8h |  |
| 388 | 1.6.1.1.7 | Render Geometry | 3d | 2005-02-23 | 2005-02-25 | 387 |  | 1.88d | 0d |  |  | Веня | 24h |  |
| 389 | 1.6.1.1.8 | Grass | 1d? | 2005-02-26 | 2005-02-26 | 388 |  | 1.88d |  |  |  | Веня | 8h |  |
| 390 | 1.6.2 | **GameDesign** | 3d? | 2005-01-24 | 2005-01-26 |  |  | 55.88d |  |  |  |  |  |  |
| 391 | 1.6.2.1 | **Secrets** | 3d? | 2005-01-24 | 2005-01-26 |  |  | 55.88d |  |  |  |  |  |  |
| 392 | 1.6.2.1.1 | **Stage 1** | 3d? | 2005-01-24 | 2005-01-26 |  |  | 55.88d |  |  |  |  |  |  |
| 393 | 1.6.2.1.1.1 | Design | 1d? | 2005-01-24 | 2005-01-24 |  |  | 55.88d | 0d |  |  |  |  |  |
| 394 | 1.6.2.1.1.2 | Implementation | 1d? | 2005-01-25 | 2005-01-25 | 393 |  | 55.88d | 0d |  |  |  |  |  |
| 395 | 1.6.2.1.1.3 | Tuning | 1d? | 2005-01-26 | 2005-01-26 | 394 |  | 55.88d |  |  |  |  |  |  |

Notes:
- 369: По ПДА на предыдущих уровнях Торговец сообщает, что сталкеры шепчутся о появлении в окрестностях сталкера Васи, которого не видели уже месяцев шесть он пытался найти проход к центру зоны и бесследно исчез, а теперь вот объявился. Его недавно видели в Темной Долине, где-то за базой Монолита. Игрок находит этого Васю, он весь такой испуганный, мелет полный бред о том, что он был ТАМ, он видел ЭТО. ОНО говорило с ним. В его голове звучал этот ужасный голос, выжигая мозги. Ужас, ужас, ужас! Игрок говорит ему пару фраз, успокаивает. Тот в нервной форме благодарит за сочувствие, просит передать какой-то предмет бармену, тот уже передаст его семье. Дает игроку артефакт, отбегает на несколько метров и с криком «ОНО меня не получит!» забегает в Мясорубку.
- 373: Игроку на PDA приходит информация от сталкера из группировки бандитов, что он продает мощную пушку (возможно даже, винтовку Гаусса) по низкой цене. Игрок приходит торговать, бандит говорит, что сейчас вынесет оружие, берет деньги, уходит в домик и не возвращается. Если игрок сунется туда, его не пропускает зоунгард («Вали отсюда, пока цел!»).

| ID | WBS | Task | Duration | Start | Finish | Predecessors | Total slack | Free slack |
| --- | --- | --- | --- | --- | --- | --- | --- | --- |
| 396 | 1.6.2.2 | **Smartterrains** | 3d? | 2005-01-24 | 2005-01-26 |  | 55.88d |  |
| 397 | 1.6.2.2.1 | **Stage 1** | 3d? | 2005-01-24 | 2005-01-26 |  | 55.88d |  |
| 398 | 1.6.2.2.1.1 | Design | 1d? | 2005-01-24 | 2005-01-24 |  | 55.88d | 0d |
| 399 | 1.6.2.2.1.2 | Implementation | 1d? | 2005-01-25 | 2005-01-25 | 398 | 55.88d | 0d |
| 400 | 1.6.2.2.1.3 | Tuning | 1d? | 2005-01-26 | 2005-01-26 | 399 | 55.88d |  |
| 401 | 1.6.2.3 | **Monsters/Spawns** | 3d? | 2005-01-24 | 2005-01-26 |  | 55.88d |  |
| 402 | 1.6.2.3.1 | **Stage 1** | 3d? | 2005-01-24 | 2005-01-26 |  | 55.88d |  |
| 403 | 1.6.2.3.1.1 | Design | 1d? | 2005-01-24 | 2005-01-24 |  | 55.88d | 0d |
| 404 | 1.6.2.3.1.2 | Implementation | 1d? | 2005-01-25 | 2005-01-25 | 403 | 55.88d | 0d |
| 405 | 1.6.2.3.1.3 | Tuning | 1d? | 2005-01-26 | 2005-01-26 | 404 | 55.88d |  |
| 406 | 1.6.2.4 | **Stalkers/Spawns** | 3d? | 2005-01-24 | 2005-01-26 |  | 55.88d |  |
| 407 | 1.6.2.4.1 | **Stage 1** | 3d? | 2005-01-24 | 2005-01-26 |  | 55.88d |  |
| 408 | 1.6.2.4.1.1 | Design | 1d? | 2005-01-24 | 2005-01-24 |  | 55.88d | 0d |
| 409 | 1.6.2.4.1.2 | Implementation | 1d? | 2005-01-25 | 2005-01-25 | 408 | 55.88d | 0d |
| 410 | 1.6.2.4.1.3 | Tuning | 1d? | 2005-01-26 | 2005-01-26 | 409 | 55.88d |  |
| 411 | 1.6.2.5 | **Anomalies/Spawns** | 3d? | 2005-01-24 | 2005-01-26 |  | 55.88d |  |
| 412 | 1.6.2.5.1 | **Stage 1** | 3d? | 2005-01-24 | 2005-01-26 |  | 55.88d |  |
| 413 | 1.6.2.5.1.1 | Design | 1d? | 2005-01-24 | 2005-01-24 |  | 55.88d | 0d |
| 414 | 1.6.2.5.1.2 | Implementation | 1d? | 2005-01-25 | 2005-01-25 | 413 | 55.88d | 0d |
| 415 | 1.6.2.5.1.3 | Tuning | 1d? | 2005-01-26 | 2005-01-26 | 414 | 55.88d |  |
| 416 | 1.6.2.6 | **Physicks** | 3d? | 2005-01-24 | 2005-01-26 |  | 55.88d |  |
| 417 | 1.6.2.6.1 | **Stage 1** | 3d? | 2005-01-24 | 2005-01-26 |  | 55.88d |  |
| 418 | 1.6.2.6.1.1 | Design | 1d? | 2005-01-24 | 2005-01-24 |  | 55.88d | 0d |
| 419 | 1.6.2.6.1.2 | Implementation | 1d? | 2005-01-25 | 2005-01-25 | 418 | 55.88d | 0d |
| 420 | 1.6.2.6.1.3 | Tuning | 1d? | 2005-01-26 | 2005-01-26 | 419 | 55.88d |  |

| ID | WBS | Task | Duration | Start | Finish | Predecessors | Total slack | Free slack |
| --- | --- | --- | --- | --- | --- | --- | --- | --- |
| 421 | 1.6.3 | **Scripts** | 5d? | 2005-01-24 | 2005-01-28 |  | 53.88d |  |
| 422 | 1.6.3.1 | **Script 1** | 5d? | 2005-01-24 | 2005-01-28 |  | 53.88d |  |
| 423 | 1.6.3.1.1 | Scenario(text) | 1d? | 2005-01-24 | 2005-01-24 |  | 53.88d | 0d |
| 424 | 1.6.3.1.2 | Постановка задач | 1d? | 2005-01-25 | 2005-01-25 | 423 | 53.88d | 0d |
| 425 | 1.6.3.1.3 | Implimentation | 1d? | 2005-01-26 | 2005-01-26 | 424 | 53.88d | 0d |
| 426 | 1.6.3.1.4 | Dilogs/VO/Icons/Objects/Animations | 1d? | 2005-01-27 | 2005-01-27 | 425 | 53.88d | 0d |
| 427 | 1.6.3.1.5 | Настройка | 1d? | 2005-01-28 | 2005-01-28 | 426 | 53.88d |  |
| 428 | 1.6.3.2 | **Script 2** | 5d? | 2005-01-24 | 2005-01-28 |  | 53.88d |  |
| 429 | 1.6.3.2.1 | Scenario(text) | 1d? | 2005-01-24 | 2005-01-24 |  | 53.88d | 0d |
| 430 | 1.6.3.2.2 | Постановка задач | 1d? | 2005-01-25 | 2005-01-25 | 429 | 53.88d | 0d |
| 431 | 1.6.3.2.3 | Implimentation | 1d? | 2005-01-26 | 2005-01-26 | 430 | 53.88d | 0d |
| 432 | 1.6.3.2.4 | Dilogs/VO/Icons/Objects/Animations | 1d? | 2005-01-27 | 2005-01-27 | 431 | 53.88d | 0d |
| 433 | 1.6.3.2.5 | Настройка | 1d? | 2005-01-28 | 2005-01-28 | 432 | 53.88d |  |
| 434 | 1.6.3.3 | **Script 3** | 5d? | 2005-01-24 | 2005-01-28 |  | 53.88d |  |
| 435 | 1.6.3.3.1 | Scenario(text) | 1d? | 2005-01-24 | 2005-01-24 |  | 53.88d | 0d |
| 436 | 1.6.3.3.2 | Постановка задач | 1d? | 2005-01-25 | 2005-01-25 | 435 | 53.88d | 0d |
| 437 | 1.6.3.3.3 | Implimentation | 1d? | 2005-01-26 | 2005-01-26 | 436 | 53.88d | 0d |
| 438 | 1.6.3.3.4 | Dilogs/VO/Icons/Objects/Animations | 1d? | 2005-01-27 | 2005-01-27 | 437 | 53.88d | 0d |
| 439 | 1.6.3.3.5 | Настройка | 1d? | 2005-01-28 | 2005-01-28 | 438 | 53.88d |  |
| 440 | 1.6.3.4 | **Script 4** | 5d? | 2005-01-24 | 2005-01-28 |  | 53.88d |  |
| 441 | 1.6.3.4.1 | Scenario(text) | 1d? | 2005-01-24 | 2005-01-24 |  | 53.88d | 0d |
| 442 | 1.6.3.4.2 | Постановка задач | 1d? | 2005-01-25 | 2005-01-25 | 441 | 53.88d | 0d |
| 443 | 1.6.3.4.3 | Implimentation | 1d? | 2005-01-26 | 2005-01-26 | 442 | 53.88d | 0d |
| 444 | 1.6.3.4.4 | Dilogs/VO/Icons/Objects/Animations | 1d? | 2005-01-27 | 2005-01-27 | 443 | 53.88d | 0d |
| 445 | 1.6.3.4.5 | Настройка | 1d? | 2005-01-28 | 2005-01-28 | 444 | 53.88d |  |

| ID | WBS | Task | Duration | Start | Finish | Predecessors | Total slack | Free slack | Deadline | Resources | Work |
| --- | --- | --- | --- | --- | --- | --- | --- | --- | --- | --- | --- |
| 446 | 1.6.3.5 | **Script 5** | 5d? | 2005-01-24 | 2005-01-28 |  | 53.88d |  |  |  |  |
| 447 | 1.6.3.5.1 | Scenario(text) | 1d? | 2005-01-24 | 2005-01-24 |  | 53.88d | 0d |  |  |  |
| 448 | 1.6.3.5.2 | Постановка задач | 1d? | 2005-01-25 | 2005-01-25 | 447 | 53.88d | 0d |  |  |  |
| 449 | 1.6.3.5.3 | Implimentation | 1d? | 2005-01-26 | 2005-01-26 | 448 | 53.88d | 0d |  |  |  |
| 450 | 1.6.3.5.4 | Dilogs/VO/Icons/Objects/Animations | 1d? | 2005-01-27 | 2005-01-27 | 449 | 53.88d | 0d |  |  |  |
| 451 | 1.6.3.5.5 | Настройка | 1d? | 2005-01-28 | 2005-01-28 | 450 | 53.88d |  |  |  |  |
| 453 | 1.7 | **13_Dead_City** | 9d? | 2005-01-24 | 2005-02-02 |  | 49.88d |  | 2005-04-29 | Рома, Змей | 288h |
| 454 | 1.7.1 | **LevelDesign** | 9d? | 2005-01-24 | 2005-02-02 |  | 49.88d |  | 2005-04-01 | Rainbow | 216h |
| 455 | 1.7.1.1 | **Stage 1** | 9d? | 2005-01-24 | 2005-02-02 |  | 49.88d |  |  | Rainbow | 144h |
| 456 | 1.7.1.1.1 | List of Changes | 2d | 2005-01-24 | 2005-01-25 |  | 49.88d | 0d |  | Rainbow | 16h |
| 457 | 1.7.1.1.2 | Changed Geometry | 1d? | 2005-01-26 | 2005-01-26 | 456 | 49.88d | 0d |  | Rainbow | 8h |
| 458 | 1.7.1.1.3 | Check List 1 | 1d? | 2005-01-27 | 2005-01-27 | 457 | 49.88d | 0d |  | Rainbow | 8h |
| 459 | 1.7.1.1.4 | Check List 2 | 1d? | 2005-01-28 | 2005-01-28 | 458 | 49.88d | 0d |  | Rainbow | 8h |
| 460 | 1.7.1.1.5 | Check List 3 | 1d? | 2005-01-29 | 2005-01-29 | 459 | 49.88d | 0d |  | Rainbow | 8h |
| 461 | 1.7.1.1.6 | Check List 4 | 1d? | 2005-01-31 | 2005-01-31 | 460 | 49.88d | 0d |  | Rainbow | 8h |
| 462 | 1.7.1.1.7 | Render Geometry | 1d? | 2005-02-01 | 2005-02-01 | 461 | 49.88d | 0d |  | Rainbow | 8h |
| 463 | 1.7.1.1.8 | Grass | 1d? | 2005-02-02 | 2005-02-02 | 462 | 49.88d |  |  | Rainbow | 8h |
| 464 | 1.7.2 | **GameDesign** | 3d? | 2005-01-24 | 2005-01-26 |  | 79.88d |  |  |  |  |
| 465 | 1.7.2.1 | **Secrets** | 3d? | 2005-01-24 | 2005-01-26 |  | 79.88d |  |  |  |  |
| 466 | 1.7.2.1.1 | **Stage 1** | 3d? | 2005-01-24 | 2005-01-26 |  | 79.88d |  |  |  |  |
| 467 | 1.7.2.1.1.1 | Design | 1d? | 2005-01-24 | 2005-01-24 |  | 79.88d | 0d |  |  |  |
| 468 | 1.7.2.1.1.2 | Implementation | 1d? | 2005-01-25 | 2005-01-25 | 467 | 79.88d | 0d |  |  |  |
| 469 | 1.7.2.1.1.3 | Tuning | 1d? | 2005-01-26 | 2005-01-26 | 468 | 79.88d |  |  |  |  |
| 470 | 1.7.2.2 | **Smartterrains** | 3d? | 2005-01-24 | 2005-01-26 |  | 79.88d |  |  |  |  |
| 471 | 1.7.2.2.1 | **Stage 1** | 3d? | 2005-01-24 | 2005-01-26 |  | 79.88d |  |  |  |  |
| 472 | 1.7.2.2.1.1 | Design | 1d? | 2005-01-24 | 2005-01-24 |  | 79.88d | 0d |  |  |  |
| 473 | 1.7.2.2.1.2 | Implementation | 1d? | 2005-01-25 | 2005-01-25 | 472 | 79.88d | 0d |  |  |  |
| 474 | 1.7.2.2.1.3 | Tuning | 1d? | 2005-01-26 | 2005-01-26 | 473 | 79.88d |  |  |  |  |

| ID | WBS | Task | Duration | Start | Finish | Predecessors | Total slack | Free slack |
| --- | --- | --- | --- | --- | --- | --- | --- | --- |
| 475 | 1.7.2.3 | **Monsters/Spawns** | 3d? | 2005-01-24 | 2005-01-26 |  | 79.88d |  |
| 476 | 1.7.2.3.1 | **Stage 1** | 3d? | 2005-01-24 | 2005-01-26 |  | 79.88d |  |
| 477 | 1.7.2.3.1.1 | Design | 1d? | 2005-01-24 | 2005-01-24 |  | 79.88d | 0d |
| 478 | 1.7.2.3.1.2 | Implementation | 1d? | 2005-01-25 | 2005-01-25 | 477 | 79.88d | 0d |
| 479 | 1.7.2.3.1.3 | Tuning | 1d? | 2005-01-26 | 2005-01-26 | 478 | 79.88d |  |
| 480 | 1.7.2.4 | **Stalkers/Spawns** | 3d? | 2005-01-24 | 2005-01-26 |  | 79.88d |  |
| 481 | 1.7.2.4.1 | **Stage 1** | 3d? | 2005-01-24 | 2005-01-26 |  | 79.88d |  |
| 482 | 1.7.2.4.1.1 | Design | 1d? | 2005-01-24 | 2005-01-24 |  | 79.88d | 0d |
| 483 | 1.7.2.4.1.2 | Implementation | 1d? | 2005-01-25 | 2005-01-25 | 482 | 79.88d | 0d |
| 484 | 1.7.2.4.1.3 | Tuning | 1d? | 2005-01-26 | 2005-01-26 | 483 | 79.88d |  |
| 485 | 1.7.2.5 | **Anomalies/Spawns** | 3d? | 2005-01-24 | 2005-01-26 |  | 79.88d |  |
| 486 | 1.7.2.5.1 | **Stage 1** | 3d? | 2005-01-24 | 2005-01-26 |  | 79.88d |  |
| 487 | 1.7.2.5.1.1 | Design | 1d? | 2005-01-24 | 2005-01-24 |  | 79.88d | 0d |
| 488 | 1.7.2.5.1.2 | Implementation | 1d? | 2005-01-25 | 2005-01-25 | 487 | 79.88d | 0d |
| 489 | 1.7.2.5.1.3 | Tuning | 1d? | 2005-01-26 | 2005-01-26 | 488 | 79.88d |  |
| 490 | 1.7.2.6 | **Physicks** | 3d? | 2005-01-24 | 2005-01-26 |  | 79.88d |  |
| 491 | 1.7.2.6.1 | **Stage 1** | 3d? | 2005-01-24 | 2005-01-26 |  | 79.88d |  |
| 492 | 1.7.2.6.1.1 | Design | 1d? | 2005-01-24 | 2005-01-24 |  | 79.88d | 0d |
| 493 | 1.7.2.6.1.2 | Implementation | 1d? | 2005-01-25 | 2005-01-25 | 492 | 79.88d | 0d |
| 494 | 1.7.2.6.1.3 | Tuning | 1d? | 2005-01-26 | 2005-01-26 | 493 | 79.88d |  |
| 495 | 1.7.3 | **Scripts** | 5d? | 2005-01-24 | 2005-01-28 |  | 77.88d |  |
| 496 | 1.7.3.1 | **Script 1** | 5d? | 2005-01-24 | 2005-01-28 |  | 77.88d |  |
| 497 | 1.7.3.1.1 | Scenario(text) | 1d? | 2005-01-24 | 2005-01-24 |  | 77.88d | 0d |
| 498 | 1.7.3.1.2 | Постановка задач | 1d? | 2005-01-25 | 2005-01-25 | 497 | 77.88d | 0d |
| 499 | 1.7.3.1.3 | Implimentation | 1d? | 2005-01-26 | 2005-01-26 | 498 | 77.88d | 0d |
| 500 | 1.7.3.1.4 | Dilogs/VO/Icons/Objects/Animations | 1d? | 2005-01-27 | 2005-01-27 | 499 | 77.88d | 0d |
| 501 | 1.7.3.1.5 | Настройка | 1d? | 2005-01-28 | 2005-01-28 | 500 | 77.88d |  |

| ID | WBS | Task | Duration | Start | Finish | Predecessors | Total slack | Free slack |
| --- | --- | --- | --- | --- | --- | --- | --- | --- |
| 502 | 1.7.3.2 | **Script 2** | 5d? | 2005-01-24 | 2005-01-28 |  | 77.88d |  |
| 503 | 1.7.3.2.1 | Scenario(text) | 1d? | 2005-01-24 | 2005-01-24 |  | 77.88d | 0d |
| 504 | 1.7.3.2.2 | Постановка задач | 1d? | 2005-01-25 | 2005-01-25 | 503 | 77.88d | 0d |
| 505 | 1.7.3.2.3 | Implimentation | 1d? | 2005-01-26 | 2005-01-26 | 504 | 77.88d | 0d |
| 506 | 1.7.3.2.4 | Dilogs/VO/Icons/Objects/Animations | 1d? | 2005-01-27 | 2005-01-27 | 505 | 77.88d | 0d |
| 507 | 1.7.3.2.5 | Настройка | 1d? | 2005-01-28 | 2005-01-28 | 506 | 77.88d |  |
| 508 | 1.7.3.3 | **Script 3** | 5d? | 2005-01-24 | 2005-01-28 |  | 77.88d |  |
| 509 | 1.7.3.3.1 | Scenario(text) | 1d? | 2005-01-24 | 2005-01-24 |  | 77.88d | 0d |
| 510 | 1.7.3.3.2 | Постановка задач | 1d? | 2005-01-25 | 2005-01-25 | 509 | 77.88d | 0d |
| 511 | 1.7.3.3.3 | Implimentation | 1d? | 2005-01-26 | 2005-01-26 | 510 | 77.88d | 0d |
| 512 | 1.7.3.3.4 | Dilogs/VO/Icons/Objects/Animations | 1d? | 2005-01-27 | 2005-01-27 | 511 | 77.88d | 0d |
| 513 | 1.7.3.3.5 | Настройка | 1d? | 2005-01-28 | 2005-01-28 | 512 | 77.88d |  |
| 514 | 1.7.3.4 | **Script 4** | 5d? | 2005-01-24 | 2005-01-28 |  | 77.88d |  |
| 515 | 1.7.3.4.1 | Scenario(text) | 1d? | 2005-01-24 | 2005-01-24 |  | 77.88d | 0d |
| 516 | 1.7.3.4.2 | Постановка задач | 1d? | 2005-01-25 | 2005-01-25 | 515 | 77.88d | 0d |
| 517 | 1.7.3.4.3 | Implimentation | 1d? | 2005-01-26 | 2005-01-26 | 516 | 77.88d | 0d |
| 518 | 1.7.3.4.4 | Dilogs/VO/Icons/Objects/Animations | 1d? | 2005-01-27 | 2005-01-27 | 517 | 77.88d | 0d |
| 519 | 1.7.3.4.5 | Настройка | 1d? | 2005-01-28 | 2005-01-28 | 518 | 77.88d |  |
| 520 | 1.7.3.5 | **Script 5** | 5d? | 2005-01-24 | 2005-01-28 |  | 77.88d |  |
| 521 | 1.7.3.5.1 | Scenario(text) | 1d? | 2005-01-24 | 2005-01-24 |  | 77.88d | 0d |
| 522 | 1.7.3.5.2 | Постановка задач | 1d? | 2005-01-25 | 2005-01-25 | 521 | 77.88d | 0d |
| 523 | 1.7.3.5.3 | Implimentation | 1d? | 2005-01-26 | 2005-01-26 | 522 | 77.88d | 0d |
| 524 | 1.7.3.5.4 | Dilogs/VO/Icons/Objects/Animations | 1d? | 2005-01-27 | 2005-01-27 | 523 | 77.88d | 0d |
| 525 | 1.7.3.5.5 | Настройка | 1d? | 2005-01-28 | 2005-01-28 | 524 | 77.88d |  |

| ID | WBS | Task | Duration | Start | Finish | Predecessors | Complete | Remaining | Total slack | Free slack | Constraint | Deadline | Resources | Work | Actual work |
| --- | --- | --- | --- | --- | --- | --- | --- | --- | --- | --- | --- | --- | --- | --- | --- |
| 527 | 1.8 | **06_Dark_Valley_Underground** | 53.75d? | 2005-01-24 A | 2005-03-26 |  | 71% | 15.73d? | -21.88d | 0d |  | 2005-03-01 | Джим, Негоробов | 1301h | 715h |
| 528 | 1.8.1 | **LevelDesign** | 13d? | 2005-01-24 A | 2005-02-07 A |  | 100% |  |  |  |  | 2005-02-07 | Негоробов | 328h | 328h |
| 529 | 1.8.1.1 | **Stage 1** | 13d? | 2005-01-24 A | 2005-02-07 A |  | 100% |  |  |  |  |  | Негоробов | 224h | 224h |
| 530 | 1.8.1.1.1 | List of Changes | 2d | 2005-01-24 A | 2005-01-25 A |  | 100% |  |  |  |  |  | Негоробов | 16h | 16h |
| 531 | 1.8.1.1.2 | Changed Geometry | 7d | 2005-01-26 A | 2005-02-02 A | 530 | 100% |  |  |  |  |  | Негоробов | 56h | 56h |
| 532 | 1.8.1.1.3 | Check List 1 | 1d? | 2005-02-03 A | 2005-02-03 A | 531 | 100% |  |  |  |  |  | Негоробов | 8h | 8h |
| 533 | 1.8.1.1.4 | Check List 2 | 1d? | 2005-02-04 A | 2005-02-04 A | 532 | 100% |  |  |  | start no earlier than 2005-02-03 |  | Негоробов | 8h | 8h |
| 534 | 1.8.1.1.5 | Check List 3 | 1d? | 2005-02-04 A | 2005-02-04 A |  | 100% |  |  |  | start no earlier than 2005-02-04 |  | Негоробов | 8h | 8h |
| 535 | 1.8.1.1.6 | Check List 4 | 1d? | 2005-02-04 A | 2005-02-04 A |  | 100% |  |  |  | start no earlier than 2005-02-04 |  | Негоробов | 8h | 8h |
| 536 | 1.8.1.1.7 | Render Geometry | 2d | 2005-02-05 A | 2005-02-07 A | 535 | 100% |  |  |  |  |  | Негоробов | 16h | 16h |
| 537 | 1.8.2 | **GameDesign** | 15d | 2005-01-24 A | 2005-02-09 | 528 | 34% | 9.95d | 16.88d |  |  |  |  |  |  |
| 538 | 1.8.2.1 | **Secrets** | 3d | 2005-01-24 A | 2005-01-26 |  | 33% | 2d | 28.88d |  |  |  |  |  |  |
| 539 | 1.8.2.1.1 | **Stage 1** | 3d | 2005-01-24 A | 2005-01-26 |  | 33% | 2d | 28.88d |  |  |  |  |  |  |
| 540 | 1.8.2.1.1.1 | Design | 1d | 2005-01-24 A | 2005-01-24 A |  | 100% |  |  |  |  |  |  |  |  |
| 541 | 1.8.2.1.1.2 | Implementation | 1d | 2005-01-25 | 2005-01-25 | 540 |  |  | 28.88d | 0d |  |  |  |  |  |
| 542 | 1.8.2.1.1.3 | Tuning | 1d | 2005-01-26 | 2005-01-26 | 541 |  |  | 28.88d |  |  |  |  |  |  |
| 543 | 1.8.2.2 | **Monsters/Spawns** | 15d | 2005-01-24 A | 2005-02-09 |  | 50% | 7.5d | 16.88d |  |  |  |  |  |  |
| 544 | 1.8.2.2.1 | **Stage 1** | 15d | 2005-01-24 A | 2005-02-09 |  | 50% | 7.5d | 16.88d |  |  |  |  |  |  |
| 545 | 1.8.2.2.1.1 | Design | 4d | 2005-01-24 A | 2005-01-27 A |  | 100% |  |  |  |  |  |  |  |  |
| 546 | 1.8.2.2.1.2 | Implementation | 6d | 2005-01-28 A | 2005-02-03 | 545 | 50% | 3d | 17.38d | 0d |  |  |  |  |  |
| 547 | 1.8.2.2.1.3 | Tuning | 5d | 2005-02-04 A | 2005-02-09 | 546 | 10% | 4.5d | 16.88d |  |  |  |  |  |  |
| 548 | 1.8.2.3 | **Anomalies/Spawns** | 5d | 2005-01-24 A | 2005-01-28 |  | 32% | 3.4d | 26.88d |  |  |  |  |  |  |
| 549 | 1.8.2.3.1 | **Stage 1** | 5d | 2005-01-24 A | 2005-01-28 |  | 32% | 3.4d | 26.88d |  |  |  |  |  |  |
| 550 | 1.8.2.3.1.1 | Design | 2d | 2005-01-24 A | 2005-01-25 |  | 80% | 0.4d | 26.88d | 0d |  |  |  |  |  |
| 551 | 1.8.2.3.1.2 | Implementation | 1d | 2005-01-26 | 2005-01-26 | 550 |  |  | 26.88d | 0d |  |  |  |  |  |
| 552 | 1.8.2.3.1.3 | Tuning | 2d | 2005-01-27 | 2005-01-28 | 551 |  |  | 26.88d |  |  |  |  |  |  |

| ID | WBS | Task | Duration | Start | Finish | Predecessors | Complete | Remaining | Total slack | Free slack | Constraint | Resources | Work | Actual work |
| --- | --- | --- | --- | --- | --- | --- | --- | --- | --- | --- | --- | --- | --- | --- |
| 553 | 1.8.2.4 | **Physics** | 7d | 2005-01-24 | 2005-01-31 |  |  |  | 24.88d |  |  |  |  |  |
| 554 | 1.8.2.4.1 | **Stage 1** | 7d | 2005-01-24 | 2005-01-31 |  |  |  | 24.88d |  |  |  |  |  |
| 555 | 1.8.2.4.1.1 | Design | 2d | 2005-01-24 | 2005-01-25 |  |  |  | 24.88d | 0d |  |  |  |  |
| 556 | 1.8.2.4.1.2 | Implementation | 2d | 2005-01-26 | 2005-01-27 | 555 |  |  | 24.88d | 0d |  |  |  |  |
| 557 | 1.8.2.4.1.3 | Tuning | 3d | 2005-01-28 | 2005-01-31 | 556 |  |  | 24.88d |  |  |  |  |  |
| 558 | 1.8.3 | **Scripts** | 30d? | 2005-01-25 A | 2005-02-28 |  | 99% | 0d? | 0d |  |  |  | 543h | 387h |
| 559 | 1.8.3.1 | Scenario (text) | 4d | 2005-01-25 A | 2005-01-28 A |  | 100% |  |  |  | start no earlier than 2005-01-25 | Джим | 32h | 32h |
| 560 | 1.8.3.2 | Setting tasks | 1d | 2005-01-31 A | 2005-01-31 A |  | 100% |  |  |  | start no earlier than 2005-01-31 | Джим | 8h | 8h |
| 561 | 1.8.3.3 | **Script 1 :: Burer Eluder :: Floor 2** | 18d | 2005-02-01 A | 2005-02-21 | 560 | 99% | 0d | 0d |  |  | Джим | 295h | 153.4h |
| 562 | 1.8.3.3.1 | Accomplishment | 15.88d | 2005-02-01 A | 2005-02-18 A |  | 100% |  |  |  |  | Джим | 127h | 127h |
| 563 | 1.8.3.3.2 | Arrangement | 3d | 2005-02-18 A | 2005-02-21 A |  | 100% |  |  |  |  | Джим | 24h | 24h |
| 564 | 1.8.3.4 | **Script 2 :: Key and Doors** | 3d | 2005-02-21 A | 2005-02-23 A | 561 | 100% |  |  |  |  | Джим | 48h | 48h |
| 565 | 1.8.3.4.1 | Accomplishment | 1d | 2005-02-21 A | 2005-02-21 A |  | 100% |  |  |  |  | Джим | 8h | 8h |
| 566 | 1.8.3.4.2 | Arrangement | 2d | 2005-02-21 A | 2005-02-23 A |  | 100% |  |  |  |  | Джим | 16h | 16h |
| 567 | 1.8.3.5 | **Script 3 :: Global monster holders** | 2d | 2005-02-21 A | 2005-02-22 | 564 | 99% | 0d | 0d |  |  | Джим | 40h | 25.6h |
| 568 | 1.8.3.5.1 | Accomplishment | 1d | 2005-02-21 A | 2005-02-21 A |  | 100% |  |  |  |  | Джим | 8h | 8h |
| 569 | 1.8.3.5.2 | Arrangement | 2d | 2005-02-21 A | 2005-02-22 A |  | 100% |  |  |  |  | Джим | 16h | 16h |
| 570 | 1.8.3.6 | **Script 4 :: Random burer spawner** | 3d | 2005-02-23 A | 2005-02-25 A | 567 | 100% |  |  |  |  | Джим | 48h | 48h |
| 571 | 1.8.3.6.1 | Accomplishment | 2d | 2005-02-23 A | 2005-02-24 A |  | 100% |  |  |  | start no earlier than 2005-02-23 | Джим | 16h | 16h |
| 572 | 1.8.3.6.2 | Arrangement | 1d | 2005-02-25 A | 2005-02-25 A |  | 100% |  |  |  | start no earlier than 2005-02-24 | Джим | 8h | 8h |
| 573 | 1.8.3.7 | **Script 5 :: Stalker explorer** | 5d? | 2005-02-23 A | 2005-02-28 A |  | 100% |  |  |  |  | Джим | 72h | 72h |
| 574 | 1.8.3.7.1 | Accomplishment | 2d | 2005-02-23 A | 2005-02-24 A |  | 100% |  |  |  | start no earlier than 2005-02-23 | Джим | 16h | 16h |
| 575 | 1.8.3.7.2 | Arrangement | 1d | 2005-02-25 A | 2005-02-25 A |  | 100% |  |  |  | start no earlier than 2005-02-24 | Джим | 8h | 8h |
| 576 | 1.8.3.7.3 | Texts, Dialogues, Tasks, Marks on the map, news, characters' profiles (think over) | 1d? | 2005-02-28 A | 2005-02-28 A |  | 100% |  |  |  | start no earlier than 2005-02-28 | Джим | 8h | 8h |
| 577 | 1.8.4 | Testing | 5.75d? | 2005-03-21 | 2005-03-26 |  |  |  | -21.88d | 0d | finish no earlier than 2005-03-26 |  |  |  |

| ID | WBS | Task | Duration | Start | Finish | Predecessors | Total slack | Free slack | Constraint | Deadline | Resources | Work |
| --- | --- | --- | --- | --- | --- | --- | --- | --- | --- | --- | --- | --- |
| 580 | 1.9 | **16_Radar_Antena_Control_Undergaround** | 33d? | 2005-01-24 | 2005-03-02 |  | 25.88d |  |  | 2005-04-01 | Джим, Угрюмый | 368h |
| 581 | 1.9.1 | **LevelDesign** | 3d? | 2005-02-28 | 2005-03-02 | 1188 | -1.12d | 0d |  | 2005-03-01 | Mike | 104h |
| 582 | 1.9.1.1 | **Stage 1** | 3d? | 2005-02-28 | 2005-03-02 |  | -1.12d | 0d |  |  | Mike | 80h |
| 583 | 1.9.1.1.1 | List of Changes | 1d | 2005-02-28 | 2005-02-28 |  | 0.88d |  | start no earlier than 2005-02-28 |  | Mike | 8h |
| 584 | 1.9.1.1.2 | Changed Geometry | 1d? | 2005-02-28 | 2005-02-28 |  | -0.12d | 0d | start no earlier than 2005-02-28 |  | Mike | 8h |
| 585 | 1.9.1.1.3 | Check List 1 | 1d? | 2005-03-01 | 2005-03-01 | 584 | -0.12d | 0d | start no earlier than 2005-02-28 |  | Mike | 8h |
| 586 | 1.9.1.1.4 | Check List 2 | 1d? | 2005-03-01 | 2005-03-01 |  | -0.12d | 0d | start no earlier than 2005-03-01 |  | Mike | 8h |
| 587 | 1.9.1.1.5 | Check List 3 | 1d? | 2005-03-01 | 2005-03-01 |  | -0.12d | 0d | start no earlier than 2005-03-01 |  | Mike | 8h |
| 588 | 1.9.1.1.6 | Check List 4 | 1d? | 2005-03-01 | 2005-03-01 |  | -1.12d | 0d | start no earlier than 2005-03-01 |  | Mike | 8h |
| 589 | 1.9.1.1.7 | Render Geometry | 1d? | 2005-03-02 | 2005-03-02 | 588 | -1.12d | 0d | start no earlier than 2005-02-28 |  | Mike | 8h |
| 590 | 1.9.2 | **GameDesign** | 3d? | 2005-01-24 | 2005-01-26 |  | 55.88d |  |  |  |  |  |
| 591 | 1.9.2.1 | **Secrets** | 3d? | 2005-01-24 | 2005-01-26 |  | 55.88d |  |  |  |  |  |
| 592 | 1.9.2.1.1 | **Stage 1** | 3d? | 2005-01-24 | 2005-01-26 |  | 55.88d |  |  |  |  |  |
| 593 | 1.9.2.1.1.1 | Design | 1d? | 2005-01-24 | 2005-01-24 |  | 55.88d | 0d |  |  |  |  |
| 594 | 1.9.2.1.1.2 | Implementation | 1d? | 2005-01-25 | 2005-01-25 | 593 | 55.88d | 0d |  |  |  |  |
| 595 | 1.9.2.1.1.3 | Tuning | 1d? | 2005-01-26 | 2005-01-26 | 594 | 55.88d |  |  |  |  |  |
| 596 | 1.9.2.2 | **Smartterrains** | 3d? | 2005-01-24 | 2005-01-26 |  | 55.88d |  |  |  |  |  |
| 597 | 1.9.2.2.1 | **Stage 1** | 3d? | 2005-01-24 | 2005-01-26 |  | 55.88d |  |  |  |  |  |
| 598 | 1.9.2.2.1.1 | Design | 1d? | 2005-01-24 | 2005-01-24 |  | 55.88d | 0d |  |  |  |  |
| 599 | 1.9.2.2.1.2 | Implementation | 1d? | 2005-01-25 | 2005-01-25 | 598 | 55.88d | 0d |  |  |  |  |
| 600 | 1.9.2.2.1.3 | Tuning | 1d? | 2005-01-26 | 2005-01-26 | 599 | 55.88d |  |  |  |  |  |
| 601 | 1.9.2.3 | **Monsters/Spawns** | 3d? | 2005-01-24 | 2005-01-26 |  | 55.88d |  |  |  |  |  |
| 602 | 1.9.2.3.1 | **Stage 1** | 3d? | 2005-01-24 | 2005-01-26 |  | 55.88d |  |  |  |  |  |
| 603 | 1.9.2.3.1.1 | Design | 1d? | 2005-01-24 | 2005-01-24 |  | 55.88d | 0d |  |  |  |  |
| 604 | 1.9.2.3.1.2 | Implementation | 1d? | 2005-01-25 | 2005-01-25 | 603 | 55.88d | 0d |  |  |  |  |
| 605 | 1.9.2.3.1.3 | Tuning | 1d? | 2005-01-26 | 2005-01-26 | 604 | 55.88d |  |  |  |  |  |

| ID | WBS | Task | Duration | Start | Finish | Predecessors | Total slack | Free slack |
| --- | --- | --- | --- | --- | --- | --- | --- | --- |
| 606 | 1.9.2.4 | **Stalkers/Spawns** | 3d? | 2005-01-24 | 2005-01-26 |  | 55.88d |  |
| 607 | 1.9.2.4.1 | **Stage 1** | 3d? | 2005-01-24 | 2005-01-26 |  | 55.88d |  |
| 608 | 1.9.2.4.1.1 | Design | 1d? | 2005-01-24 | 2005-01-24 |  | 55.88d | 0d |
| 609 | 1.9.2.4.1.2 | Implementation | 1d? | 2005-01-25 | 2005-01-25 | 608 | 55.88d | 0d |
| 610 | 1.9.2.4.1.3 | Tuning | 1d? | 2005-01-26 | 2005-01-26 | 609 | 55.88d |  |
| 611 | 1.9.2.5 | **Anomalies/Spawns** | 3d? | 2005-01-24 | 2005-01-26 |  | 55.88d |  |
| 612 | 1.9.2.5.1 | **Stage 1** | 3d? | 2005-01-24 | 2005-01-26 |  | 55.88d |  |
| 613 | 1.9.2.5.1.1 | Design | 1d? | 2005-01-24 | 2005-01-24 |  | 55.88d | 0d |
| 614 | 1.9.2.5.1.2 | Implementation | 1d? | 2005-01-25 | 2005-01-25 | 613 | 55.88d | 0d |
| 615 | 1.9.2.5.1.3 | Tuning | 1d? | 2005-01-26 | 2005-01-26 | 614 | 55.88d |  |
| 616 | 1.9.2.6 | **Physicks** | 3d? | 2005-01-24 | 2005-01-26 |  | 55.88d |  |
| 617 | 1.9.2.6.1 | **Stage 1** | 3d? | 2005-01-24 | 2005-01-26 |  | 55.88d |  |
| 618 | 1.9.2.6.1.1 | Design | 1d? | 2005-01-24 | 2005-01-24 |  | 55.88d | 0d |
| 619 | 1.9.2.6.1.2 | Implementation | 1d? | 2005-01-25 | 2005-01-25 | 618 | 55.88d | 0d |
| 620 | 1.9.2.6.1.3 | Tuning | 1d? | 2005-01-26 | 2005-01-26 | 619 | 55.88d |  |
| 621 | 1.9.3 | **Scripts** | 5d? | 2005-01-24 | 2005-01-28 |  | 53.88d |  |
| 622 | 1.9.3.1 | **Script 1** | 5d? | 2005-01-24 | 2005-01-28 |  | 53.88d |  |
| 623 | 1.9.3.1.1 | Scenario(text) | 1d? | 2005-01-24 | 2005-01-24 |  | 53.88d | 0d |
| 624 | 1.9.3.1.2 | Постановка задач | 1d? | 2005-01-25 | 2005-01-25 | 623 | 53.88d | 0d |
| 625 | 1.9.3.1.3 | Implimentation | 1d? | 2005-01-26 | 2005-01-26 | 624 | 53.88d | 0d |
| 626 | 1.9.3.1.4 | Dilogs/VO/Icons/Objects/Animations | 1d? | 2005-01-27 | 2005-01-27 | 625 | 53.88d | 0d |
| 627 | 1.9.3.1.5 | Настройка | 1d? | 2005-01-28 | 2005-01-28 | 626 | 53.88d |  |
| 628 | 1.9.3.2 | **Script 2** | 5d? | 2005-01-24 | 2005-01-28 |  | 53.88d |  |
| 629 | 1.9.3.2.1 | Scenario(text) | 1d? | 2005-01-24 | 2005-01-24 |  | 53.88d | 0d |
| 630 | 1.9.3.2.2 | Постановка задач | 1d? | 2005-01-25 | 2005-01-25 | 629 | 53.88d | 0d |
| 631 | 1.9.3.2.3 | Implimentation | 1d? | 2005-01-26 | 2005-01-26 | 630 | 53.88d | 0d |
| 632 | 1.9.3.2.4 | Dilogs/VO/Icons/Objects/Animations | 1d? | 2005-01-27 | 2005-01-27 | 631 | 53.88d | 0d |
| 633 | 1.9.3.2.5 | Настройка | 1d? | 2005-01-28 | 2005-01-28 | 632 | 53.88d |  |

| ID | WBS | Task | Duration | Start | Finish | Predecessors | Total slack | Free slack | Constraint | Deadline | Resources | Work |
| --- | --- | --- | --- | --- | --- | --- | --- | --- | --- | --- | --- | --- |
| 634 | 1.9.3.3 | **Script 3** | 5d? | 2005-01-24 | 2005-01-28 |  | 53.88d |  |  |  |  |  |
| 635 | 1.9.3.3.1 | Scenario(text) | 1d? | 2005-01-24 | 2005-01-24 |  | 53.88d | 0d |  |  |  |  |
| 636 | 1.9.3.3.2 | Постановка задач | 1d? | 2005-01-25 | 2005-01-25 | 635 | 53.88d | 0d |  |  |  |  |
| 637 | 1.9.3.3.3 | Implimentation | 1d? | 2005-01-26 | 2005-01-26 | 636 | 53.88d | 0d |  |  |  |  |
| 638 | 1.9.3.3.4 | Dilogs/VO/Icons/Objects/Animations | 1d? | 2005-01-27 | 2005-01-27 | 637 | 53.88d | 0d |  |  |  |  |
| 639 | 1.9.3.3.5 | Настройка | 1d? | 2005-01-28 | 2005-01-28 | 638 | 53.88d |  |  |  |  |  |
| 640 | 1.9.3.4 | **Script 4** | 5d? | 2005-01-24 | 2005-01-28 |  | 53.88d |  |  |  |  |  |
| 641 | 1.9.3.4.1 | Scenario(text) | 1d? | 2005-01-24 | 2005-01-24 |  | 53.88d | 0d |  |  |  |  |
| 642 | 1.9.3.4.2 | Постановка задач | 1d? | 2005-01-25 | 2005-01-25 | 641 | 53.88d | 0d |  |  |  |  |
| 643 | 1.9.3.4.3 | Implimentation | 1d? | 2005-01-26 | 2005-01-26 | 642 | 53.88d | 0d |  |  |  |  |
| 644 | 1.9.3.4.4 | Dilogs/VO/Icons/Objects/Animations | 1d? | 2005-01-27 | 2005-01-27 | 643 | 53.88d | 0d |  |  |  |  |
| 645 | 1.9.3.4.5 | Настройка | 1d? | 2005-01-28 | 2005-01-28 | 644 | 53.88d |  |  |  |  |  |
| 646 | 1.9.3.5 | **Script 5** | 5d? | 2005-01-24 | 2005-01-28 |  | 53.88d |  |  |  |  |  |
| 647 | 1.9.3.5.1 | Scenario(text) | 1d? | 2005-01-24 | 2005-01-24 |  | 53.88d | 0d |  |  |  |  |
| 648 | 1.9.3.5.2 | Постановка задач | 1d? | 2005-01-25 | 2005-01-25 | 647 | 53.88d | 0d |  |  |  |  |
| 649 | 1.9.3.5.3 | Implimentation | 1d? | 2005-01-26 | 2005-01-26 | 648 | 53.88d | 0d |  |  |  |  |
| 650 | 1.9.3.5.4 | Dilogs/VO/Icons/Objects/Animations | 1d? | 2005-01-27 | 2005-01-27 | 649 | 53.88d | 0d |  |  |  |  |
| 651 | 1.9.3.5.5 | Настройка | 1d? | 2005-01-28 | 2005-01-28 | 650 | 53.88d |  |  |  |  |  |
| 653 | 1.10 | **17_Radar_Monolith_Control_Underground** | 58d? | 2005-01-24 | 2005-03-31 |  | 24.88d |  |  | 2005-04-29 | Джим, Угрюмый | 824h |
| 654 | 1.10.1 | **LevelDesign** | 14d? | 2005-03-16 | 2005-03-31 | 1328 | 0.88d | 0d |  | 2005-04-01 | Mike | 360h |
| 655 | 1.10.1.1 | **Stage 1** | 14d? | 2005-03-16 | 2005-03-31 |  | 0.88d |  |  |  | Mike | 248h |
| 656 | 1.10.1.1.1 | List of Changes | 1d | 2005-03-16 | 2005-03-16 |  | 3.88d | 0d |  |  | Mike | 8h |
| 657 | 1.10.1.1.2 | Changed Geometry | 9d | 2005-03-17 | 2005-03-26 | 656 | 3.88d | 0d |  |  | Mike | 72h |
| 658 | 1.10.1.1.3 | Check List 1 | 1d? | 2005-03-28 | 2005-03-28 | 657 | 3.88d |  |  |  | Mike | 8h |
| 659 | 1.10.1.1.4 | Check List 2 | 1d? | 2005-03-28 | 2005-03-28 |  | 3.88d |  | start no earlier than 2005-03-28 |  | Mike | 8h |
| 660 | 1.10.1.1.5 | Check List 3 | 1d? | 2005-03-28 | 2005-03-28 |  | 3.88d |  | start no earlier than 2005-03-28 |  | Mike | 8h |
| 661 | 1.10.1.1.6 | Check List 4 | 1d? | 2005-03-28 | 2005-03-28 |  | 0.88d | 0d | start no earlier than 2005-03-28 |  | Mike | 8h |
| 662 | 1.10.1.1.7 | Render Geometry | 3d | 2005-03-29 | 2005-03-31 | 661 | 0.88d |  |  |  | Mike | 24h |

| ID | WBS | Task | Duration | Start | Finish | Predecessors | Total slack | Free slack |
| --- | --- | --- | --- | --- | --- | --- | --- | --- |
| 663 | 1.10.2 | **GameDesign** | 3d? | 2005-01-24 | 2005-01-26 |  | 79.88d |  |
| 664 | 1.10.2.1 | **Secrets** | 3d? | 2005-01-24 | 2005-01-26 |  | 79.88d |  |
| 665 | 1.10.2.1.1 | **Stage 1** | 3d? | 2005-01-24 | 2005-01-26 |  | 79.88d |  |
| 666 | 1.10.2.1.1.1 | Design | 1d? | 2005-01-24 | 2005-01-24 |  | 79.88d | 0d |
| 667 | 1.10.2.1.1.2 | Implementation | 1d? | 2005-01-25 | 2005-01-25 | 666 | 79.88d | 0d |
| 668 | 1.10.2.1.1.3 | Tuning | 1d? | 2005-01-26 | 2005-01-26 | 667 | 79.88d |  |
| 669 | 1.10.2.2 | **Smartterrains** | 3d? | 2005-01-24 | 2005-01-26 |  | 79.88d |  |
| 670 | 1.10.2.2.1 | **Stage 1** | 3d? | 2005-01-24 | 2005-01-26 |  | 79.88d |  |
| 671 | 1.10.2.2.1.1 | Design | 1d? | 2005-01-24 | 2005-01-24 |  | 79.88d | 0d |
| 672 | 1.10.2.2.1.2 | Implementation | 1d? | 2005-01-25 | 2005-01-25 | 671 | 79.88d | 0d |
| 673 | 1.10.2.2.1.3 | Tuning | 1d? | 2005-01-26 | 2005-01-26 | 672 | 79.88d |  |
| 674 | 1.10.2.3 | **Monsters/Spawns** | 3d? | 2005-01-24 | 2005-01-26 |  | 79.88d |  |
| 675 | 1.10.2.3.1 | **Stage 1** | 3d? | 2005-01-24 | 2005-01-26 |  | 79.88d |  |
| 676 | 1.10.2.3.1.1 | Design | 1d? | 2005-01-24 | 2005-01-24 |  | 79.88d | 0d |
| 677 | 1.10.2.3.1.2 | Implementation | 1d? | 2005-01-25 | 2005-01-25 | 676 | 79.88d | 0d |
| 678 | 1.10.2.3.1.3 | Tuning | 1d? | 2005-01-26 | 2005-01-26 | 677 | 79.88d |  |
| 679 | 1.10.2.4 | **Stalkers/Spawns** | 3d? | 2005-01-24 | 2005-01-26 |  | 79.88d |  |
| 680 | 1.10.2.4.1 | **Stage 1** | 3d? | 2005-01-24 | 2005-01-26 |  | 79.88d |  |
| 681 | 1.10.2.4.1.1 | Design | 1d? | 2005-01-24 | 2005-01-24 |  | 79.88d | 0d |
| 682 | 1.10.2.4.1.2 | Implementation | 1d? | 2005-01-25 | 2005-01-25 | 681 | 79.88d | 0d |
| 683 | 1.10.2.4.1.3 | Tuning | 1d? | 2005-01-26 | 2005-01-26 | 682 | 79.88d |  |
| 684 | 1.10.2.5 | **Anomalies/Spawns** | 3d? | 2005-01-24 | 2005-01-26 |  | 79.88d |  |
| 685 | 1.10.2.5.1 | **Stage 1** | 3d? | 2005-01-24 | 2005-01-26 |  | 79.88d |  |
| 686 | 1.10.2.5.1.1 | Design | 1d? | 2005-01-24 | 2005-01-24 |  | 79.88d | 0d |
| 687 | 1.10.2.5.1.2 | Implementation | 1d? | 2005-01-25 | 2005-01-25 | 686 | 79.88d | 0d |
| 688 | 1.10.2.5.1.3 | Tuning | 1d? | 2005-01-26 | 2005-01-26 | 687 | 79.88d |  |

| ID | WBS | Task | Duration | Start | Finish | Predecessors | Total slack | Free slack |
| --- | --- | --- | --- | --- | --- | --- | --- | --- |
| 689 | 1.10.2.6 | **Physicks** | 3d? | 2005-01-24 | 2005-01-26 |  | 79.88d |  |
| 690 | 1.10.2.6.1 | **Stage 1** | 3d? | 2005-01-24 | 2005-01-26 |  | 79.88d |  |
| 691 | 1.10.2.6.1.1 | Design | 1d? | 2005-01-24 | 2005-01-24 |  | 79.88d | 0d |
| 692 | 1.10.2.6.1.2 | Implementation | 1d? | 2005-01-25 | 2005-01-25 | 691 | 79.88d | 0d |
| 693 | 1.10.2.6.1.3 | Tuning | 1d? | 2005-01-26 | 2005-01-26 | 692 | 79.88d |  |
| 694 | 1.10.3 | **Scripts** | 5d? | 2005-01-24 | 2005-01-28 |  | 77.88d |  |
| 695 | 1.10.3.1 | **Script 1** | 5d? | 2005-01-24 | 2005-01-28 |  | 77.88d |  |
| 696 | 1.10.3.1.1 | Scenario(text) | 1d? | 2005-01-24 | 2005-01-24 |  | 77.88d | 0d |
| 697 | 1.10.3.1.2 | Постановка задач | 1d? | 2005-01-25 | 2005-01-25 | 696 | 77.88d | 0d |
| 698 | 1.10.3.1.3 | Implimentation | 1d? | 2005-01-26 | 2005-01-26 | 697 | 77.88d | 0d |
| 699 | 1.10.3.1.4 | Dilogs/VO/Icons/Objects/Animations | 1d? | 2005-01-27 | 2005-01-27 | 698 | 77.88d | 0d |
| 700 | 1.10.3.1.5 | Настройка | 1d? | 2005-01-28 | 2005-01-28 | 699 | 77.88d |  |
| 701 | 1.10.3.2 | **Script 2** | 5d? | 2005-01-24 | 2005-01-28 |  | 77.88d |  |
| 702 | 1.10.3.2.1 | Scenario(text) | 1d? | 2005-01-24 | 2005-01-24 |  | 77.88d | 0d |
| 703 | 1.10.3.2.2 | Постановка задач | 1d? | 2005-01-25 | 2005-01-25 | 702 | 77.88d | 0d |
| 704 | 1.10.3.2.3 | Implimentation | 1d? | 2005-01-26 | 2005-01-26 | 703 | 77.88d | 0d |
| 705 | 1.10.3.2.4 | Dilogs/VO/Icons/Objects/Animations | 1d? | 2005-01-27 | 2005-01-27 | 704 | 77.88d | 0d |
| 706 | 1.10.3.2.5 | Настройка | 1d? | 2005-01-28 | 2005-01-28 | 705 | 77.88d |  |
| 707 | 1.10.3.3 | **Script 3** | 5d? | 2005-01-24 | 2005-01-28 |  | 77.88d |  |
| 708 | 1.10.3.3.1 | Scenario(text) | 1d? | 2005-01-24 | 2005-01-24 |  | 77.88d | 0d |
| 709 | 1.10.3.3.2 | Постановка задач | 1d? | 2005-01-25 | 2005-01-25 | 708 | 77.88d | 0d |
| 710 | 1.10.3.3.3 | Implimentation | 1d? | 2005-01-26 | 2005-01-26 | 709 | 77.88d | 0d |
| 711 | 1.10.3.3.4 | Dilogs/VO/Icons/Objects/Animations | 1d? | 2005-01-27 | 2005-01-27 | 710 | 77.88d | 0d |
| 712 | 1.10.3.3.5 | Настройка | 1d? | 2005-01-28 | 2005-01-28 | 711 | 77.88d |  |

| ID | WBS | Task | Duration | Start | Finish | Predecessors | Complete | Remaining | Total slack | Free slack | Constraint | Deadline | Resources | Work | Actual work |
| --- | --- | --- | --- | --- | --- | --- | --- | --- | --- | --- | --- | --- | --- | --- | --- |
| 713 | 1.10.3.4 | **Script 4** | 5d? | 2005-01-24 | 2005-01-28 |  |  |  | 77.88d |  |  |  |  |  |  |
| 714 | 1.10.3.4.1 | Scenario(text) | 1d? | 2005-01-24 | 2005-01-24 |  |  |  | 77.88d | 0d |  |  |  |  |  |
| 715 | 1.10.3.4.2 | Постановка задач | 1d? | 2005-01-25 | 2005-01-25 | 714 |  |  | 77.88d | 0d |  |  |  |  |  |
| 716 | 1.10.3.4.3 | Implimentation | 1d? | 2005-01-26 | 2005-01-26 | 715 |  |  | 77.88d | 0d |  |  |  |  |  |
| 717 | 1.10.3.4.4 | Dilogs/VO/Icons/Objects/Animations | 1d? | 2005-01-27 | 2005-01-27 | 716 |  |  | 77.88d | 0d |  |  |  |  |  |
| 718 | 1.10.3.4.5 | Настройка | 1d? | 2005-01-28 | 2005-01-28 | 717 |  |  | 77.88d |  |  |  |  |  |  |
| 719 | 1.10.3.5 | **Script 5** | 5d? | 2005-01-24 | 2005-01-28 |  |  |  | 77.88d |  |  |  |  |  |  |
| 720 | 1.10.3.5.1 | Scenario(text) | 1d? | 2005-01-24 | 2005-01-24 |  |  |  | 77.88d | 0d |  |  |  |  |  |
| 721 | 1.10.3.5.2 | Постановка задач | 1d? | 2005-01-25 | 2005-01-25 | 720 |  |  | 77.88d | 0d |  |  |  |  |  |
| 722 | 1.10.3.5.3 | Implimentation | 1d? | 2005-01-26 | 2005-01-26 | 721 |  |  | 77.88d | 0d |  |  |  |  |  |
| 723 | 1.10.3.5.4 | Dilogs/VO/Icons/Objects/Animations | 1d? | 2005-01-27 | 2005-01-27 | 722 |  |  | 77.88d | 0d |  |  |  |  |  |
| 724 | 1.10.3.5.5 | Настройка | 1d? | 2005-01-28 | 2005-01-28 | 723 |  |  | 77.88d |  |  |  |  |  |  |
| 726 | 1.11 | **07_Rostok** | 54d? | 2005-01-24 A | 2005-03-26 |  | 76% | 13.05d? | -3.12d | 0d |  | 2005-03-15 | Коан, Руслан | 2931h | 2354.07h |
| 727 | 1.11.1 | **LevelDesign** | 18d? | 2005-01-24 A | 2005-02-12 A |  | 100% |  |  |  |  | 2005-02-14 | Веня | 456h | 456h |
| 728 | 1.11.1.1 | **Stage 1** | 18d? | 2005-01-24 A | 2005-02-12 A |  | 100% |  |  |  |  |  | Веня | 312h | 312h |
| 729 | 1.11.1.1.1 | List of Changes | 2d | 2005-01-24 A | 2005-01-25 A |  | 100% |  |  |  |  |  | Веня | 16h | 16h |
| 730 | 1.11.1.1.2 | Changed Geometry | 10d | 2005-01-26 A | 2005-02-05 A | 729 | 100% |  |  |  |  |  | Веня | 80h | 80h |
| 731 | 1.11.1.1.3 | Check List 1 | 1d? | 2005-02-07 A | 2005-02-07 A | 730 | 100% |  |  |  |  |  | Веня | 8h | 8h |
| 732 | 1.11.1.1.4 | Check List 2 | 1d? | 2005-02-07 A | 2005-02-07 A |  | 100% |  |  |  | start no earlier than 2005-02-07 |  | Веня | 8h | 8h |
| 733 | 1.11.1.1.5 | Check List 3 | 1d? | 2005-02-07 A | 2005-02-07 A |  | 100% |  |  |  | start no earlier than 2005-02-07 |  | Веня | 8h | 8h |
| 734 | 1.11.1.1.6 | Check List 4 | 1d | 2005-02-07 A | 2005-02-07 A |  | 100% |  |  |  | start no earlier than 2005-02-07 |  | Веня | 8h | 8h |
| 735 | 1.11.1.1.7 | Render Geometry | 4d | 2005-02-08 A | 2005-02-11 A | 734 | 100% |  |  |  |  |  | Веня | 32h | 32h |
| 736 | 1.11.1.1.8 | Grass | 1d? | 2005-02-12 A | 2005-02-12 A | 735 | 100% |  |  |  |  |  | Веня | 8h | 8h |
| 737 | 1.11.2 | **GameDesign** | 3d? | 2005-01-24 | 2005-01-26 |  |  |  | 40.88d |  |  |  |  |  |  |
| 738 | 1.11.2.1 | **Secrets** | 3d? | 2005-01-24 | 2005-01-26 |  |  |  | 40.88d |  |  |  |  |  |  |
| 739 | 1.11.2.1.1 | **Stage 1** | 3d? | 2005-01-24 | 2005-01-26 |  |  |  | 40.88d |  |  |  |  |  |  |
| 740 | 1.11.2.1.1.1 | Design | 1d? | 2005-01-24 | 2005-01-24 |  |  |  | 40.88d | 0d |  |  |  |  |  |
| 741 | 1.11.2.1.1.2 | Implementation | 1d? | 2005-01-25 | 2005-01-25 | 740 |  |  | 40.88d | 0d |  |  |  |  |  |
| 742 | 1.11.2.1.1.3 | Tuning | 1d? | 2005-01-26 | 2005-01-26 | 741 |  |  | 40.88d |  |  |  |  |  |  |

| ID | WBS | Task | Duration | Start | Finish | Predecessors | Total slack | Free slack |
| --- | --- | --- | --- | --- | --- | --- | --- | --- |
| 743 | 1.11.2.2 | **Smartterrains** | 3d? | 2005-01-24 | 2005-01-26 |  | 40.88d |  |
| 744 | 1.11.2.2.1 | **Stage 1** | 3d? | 2005-01-24 | 2005-01-26 |  | 40.88d |  |
| 745 | 1.11.2.2.1.1 | Design | 1d? | 2005-01-24 | 2005-01-24 |  | 40.88d | 0d |
| 746 | 1.11.2.2.1.2 | Implementation | 1d? | 2005-01-25 | 2005-01-25 | 745 | 40.88d | 0d |
| 747 | 1.11.2.2.1.3 | Tuning | 1d? | 2005-01-26 | 2005-01-26 | 746 | 40.88d |  |
| 748 | 1.11.2.3 | **Monsters/Spawns** | 3d? | 2005-01-24 | 2005-01-26 |  | 40.88d |  |
| 749 | 1.11.2.3.1 | **Stage 1** | 3d? | 2005-01-24 | 2005-01-26 |  | 40.88d |  |
| 750 | 1.11.2.3.1.1 | Design | 1d? | 2005-01-24 | 2005-01-24 |  | 40.88d | 0d |
| 751 | 1.11.2.3.1.2 | Implementation | 1d? | 2005-01-25 | 2005-01-25 | 750 | 40.88d | 0d |
| 752 | 1.11.2.3.1.3 | Tuning | 1d? | 2005-01-26 | 2005-01-26 | 751 | 40.88d |  |
| 753 | 1.11.2.4 | **Stalkers/Spawns** | 3d? | 2005-01-24 | 2005-01-26 |  | 40.88d |  |
| 754 | 1.11.2.4.1 | **Stage 1** | 3d? | 2005-01-24 | 2005-01-26 |  | 40.88d |  |
| 755 | 1.11.2.4.1.1 | Design | 1d? | 2005-01-24 | 2005-01-24 |  | 40.88d | 0d |
| 756 | 1.11.2.4.1.2 | Implementation | 1d? | 2005-01-25 | 2005-01-25 | 755 | 40.88d | 0d |
| 757 | 1.11.2.4.1.3 | Tuning | 1d? | 2005-01-26 | 2005-01-26 | 756 | 40.88d |  |
| 758 | 1.11.2.5 | **Anomalies/Spawns** | 3d? | 2005-01-24 | 2005-01-26 |  | 40.88d |  |
| 759 | 1.11.2.5.1 | **Stage 1** | 3d? | 2005-01-24 | 2005-01-26 |  | 40.88d |  |
| 760 | 1.11.2.5.1.1 | Design | 1d? | 2005-01-24 | 2005-01-24 |  | 40.88d | 0d |
| 761 | 1.11.2.5.1.2 | Implementation | 1d? | 2005-01-25 | 2005-01-25 | 760 | 40.88d | 0d |
| 762 | 1.11.2.5.1.3 | Tuning | 1d? | 2005-01-26 | 2005-01-26 | 761 | 40.88d |  |
| 763 | 1.11.2.6 | **Physicks** | 3d? | 2005-01-24 | 2005-01-26 |  | 40.88d |  |
| 764 | 1.11.2.6.1 | **Stage 1** | 3d? | 2005-01-24 | 2005-01-26 |  | 40.88d |  |
| 765 | 1.11.2.6.1.1 | Design | 1d? | 2005-01-24 | 2005-01-24 |  | 40.88d | 0d |
| 766 | 1.11.2.6.1.2 | Implementation | 1d? | 2005-01-25 | 2005-01-25 | 765 | 40.88d | 0d |
| 767 | 1.11.2.6.1.3 | Tuning | 1d? | 2005-01-26 | 2005-01-26 | 766 | 40.88d |  |

| ID | WBS | Task | Duration | Start | Finish | Complete | Remaining | Total slack | Free slack | Constraint | Resources | Work | Actual work |
| --- | --- | --- | --- | --- | --- | --- | --- | --- | --- | --- | --- | --- | --- |
| 768 | 1.11.3 | **Scripts** | 47.88d? | 2005-01-27 A | 2005-03-23 | 79% | 10.04d? | 0d |  |  |  | 2067h | 1588.7h |
| 769 | 1.11.3.1 | Scenario (text) | 3.88d | 2005-01-27 A | 2005-01-31 A | 100% |  |  |  |  | Коан | 31h | 31h |
| 770 | 1.11.3.2 | Setting tasks | 2.88d? | 2005-02-04 A | 2005-02-07 A | 100% |  |  |  | finish no earlier than 2005-02-07 | Коан | 23h | 23h |
| 771 | 1.11.3.3 | **Scene 1 - "Stalker" Bar** | 27.88d? | 2005-02-14 A | 2005-03-17 | 80% | 5.48d? | 0d |  |  |  | 231h | 186.4h |
| 772 | 1.11.3.3.1 | Accomplishment | 27.88d? | 2005-02-14 A | 2005-03-17 | 80% | 5.58d? | 0d |  | finish no earlier than 2005-03-17 |  |  |  |
| 773 | 1.11.3.3.2 | Arrangement | 27.88d | 2005-02-14 A | 2005-03-17 | 80% | 5.58d | 0d |  | finish no earlier than 2005-03-17 | Коан | 223h | 178.4h |
| 774 | 1.11.3.3.3 | Texts, Dialogues, Tasks, Marks on the map, news, characters' profiles (think over) | 1d | 2005-02-17 A | 2005-02-18 A | 100% |  |  |  | finish no earlier than 2005-02-17 | Коан | 8h | 8h |
| 775 | 1.11.3.4 | **Scene 2 - Duty Grouping** | 28.88d? | 2005-02-14 A | 2005-03-18 | 92% | 2.45d? | 0d |  |  |  | 303h | 303h |
| 776 | 1.11.3.4.1 | Accomplishment | 27.88d? | 2005-02-14 A | 2005-03-17 | 80% | 5.58d? | 0d |  | finish no earlier than 2005-03-17 |  |  |  |
| 777 | 1.11.3.4.2 | Arrangement | 28.88d | 2005-02-14 A | 2005-03-18 A | 100% |  |  |  | finish no earlier than 2005-03-18 | Коан | 231h | 231h |
| 778 | 1.11.3.4.3 | Texts, Dialogues, Tasks, Marks on the map, news, characters' profiles (think over) | 9d | 2005-02-17 A | 2005-02-28 A | 100% |  |  |  | finish no earlier than 2005-02-17 | Коан | 72h | 72h |
| 779 | 1.11.3.5 | **Scene 3 - Duty Outpost** | 19.75d? | 2005-02-25 A | 2005-03-19 | 87% | 2.61d? | 0d |  |  |  | 308h | 246.4h |
| 780 | 1.11.3.5.1 | Accomplishment | 19.75d? | 2005-02-25 A | 2005-03-19 A | 100% |  |  |  |  |  |  |  |
| 781 | 1.11.3.5.2 | Arrangement | 19.75d | 2005-02-25 A | 2005-03-19 | 80% | 3.95d | 0d |  | finish no earlier than 2005-03-19 | Коан | 158h | 126.4h |
| 782 | 1.11.3.5.3 | Texts, Dialogues, Tasks, Marks on the map, news, characters' profiles (think over) | 18.75d | 2005-02-26 A | 2005-03-19 | 80% | 3.75d | 0d |  | finish no earlier than 2005-03-19 | Коан | 150h | 120h |
| 783 | 1.11.3.6 | **Scene 4 - Duty Yard** | 17.75d? | 2005-02-28 A | 2005-03-19 | 84% | 2.83d? | 0d |  |  |  | 214h | 185.6h |
| 784 | 1.11.3.6.1 | Accomplishment | 17.75d? | 2005-02-28 A | 2005-03-19 | 80% | 3.55d? | 0d |  | finish no earlier than 2005-03-19 |  |  |  |
| 785 | 1.11.3.6.2 | Arrangement | 17.75d | 2005-02-28 A | 2005-03-19 | 80% | 3.55d | 0d |  | finish no earlier than 2005-03-19 | Коан | 142h | 113.6h |
| 786 | 1.11.3.6.3 | Texts, Dialogues, Tasks, Marks on the map, news, characters' profiles (think over) | 9d | 2005-03-01 A | 2005-03-10 A | 100% |  |  |  | finish no earlier than 2005-02-17 | Коан | 72h | 72h |
| 787 | 1.11.3.7 | **Scene 5 - Arena** | 5.88d? | 2005-03-16 | 2005-03-22 |  |  | -6d | 0d |  |  | 94h |  |
| 788 | 1.11.3.7.1 | Accomplishment | 1.75d? | 2005-03-16 | 2005-03-17 |  |  | -1.88d | 0d | start no earlier than 2005-03-16 |  |  |  |
| 789 | 1.11.3.7.2 | Arrangement | 5.88d | 2005-03-16 | 2005-03-22 |  |  | -6d | 0d | start no earlier than 2005-03-16 | Коан | 47h |  |
| 790 | 1.11.3.7.3 | Texts, Dialogues, Tasks, Marks on the map, news, characters' profiles (think over) | 5.88d | 2005-03-16 | 2005-03-22 |  |  | -6d | 0d | start no earlier than 2005-03-16 | Коан | 47h |  |
| 791 | 1.11.3.8 | **Scene 6 - Sniper on the Tower** | 3.88d? | 2005-02-28 A | 2005-03-03 A | 100% |  |  |  |  |  | 39h | 39h |
| 792 | 1.11.3.8.1 | Accomplishment | 1.88d? | 2005-02-28 A | 2005-03-01 A | 100% |  |  |  |  |  |  |  |
| 793 | 1.11.3.8.2 | Arrangement | 3.88d | 2005-02-28 A | 2005-03-03 A | 100% |  |  |  | finish no earlier than 2005-03-03 | Коан | 31h | 31h |
| 794 | 1.11.3.8.3 | Texts, Dialogues, Tasks, Marks on the map, news, characters' profiles (think over) | 1d | 2005-03-01 A | 2005-03-02 A | 100% |  |  |  | finish no earlier than 2005-02-18 | Коан | 8h | 8h |

| ID | WBS | Task | Duration | Start | Finish | Complete | Remaining | Total slack | Free slack | Constraint | Resources | Work | Actual work |
| --- | --- | --- | --- | --- | --- | --- | --- | --- | --- | --- | --- | --- | --- |
| 795 | 1.11.3.9 | **Scene 7 - Helicopter, survived scientists and Freedom stalkers** | 16.75d? | 2005-03-01 A | 2005-03-19 | 80% | 3.35d? | 0d |  |  |  | 236h | 188.8h |
| 796 | 1.11.3.9.1 | Accomplishment | 15.75d? | 2005-03-02 A | 2005-03-19 | 80% | 3.15d? | 0d |  | finish no earlier than 2005-03-19 |  |  |  |
| 797 | 1.11.3.9.2 | Arrangement | 16.75d | 2005-03-01 A | 2005-03-19 | 80% | 3.35d | 0d |  | finish no earlier than 2005-03-19 | Коан | 134h | 107.2h |
| 798 | 1.11.3.9.3 | Texts, Dialogues, Tasks, Marks on the map, news, characters' profiles (think over) | 12.75d | 2005-03-05 A | 2005-03-19 | 80% | 2.55d | 0d |  | finish no earlier than 2005-03-19 | Коан | 102h | 81.6h |
| 799 | 1.11.3.10 | **Scene 8 - Feral veterans** | 11.75d? | 2005-03-07 A | 2005-03-19 | 81% | 2.25d? | 0d |  |  |  | 102h | 83.2h |
| 800 | 1.11.3.10.1 | Accomplishment | 11.75d? | 2005-03-07 A | 2005-03-19 | 80% | 2.35d? | 0d |  | finish no earlier than 2005-03-19 |  |  |  |
| 801 | 1.11.3.10.2 | Arrangement | 11.75d | 2005-03-07 A | 2005-03-19 | 80% | 2.35d | 0d |  | finish no earlier than 2005-03-19 | Коан | 94h | 75.2h |
| 802 | 1.11.3.10.3 | Texts, Dialogues, Tasks, Marks on the map, news, characters' profiles (think over) | 1d | 2005-03-09 A | 2005-03-09 A | 100% |  |  |  | start no earlier than 2005-02-04 | Коан | 8h | 8h |
| 803 | 1.11.3.11 | **Scene 9 - Bloodsuckers' abode** | 6.88d? | 2005-03-16 | 2005-03-23 |  |  | -7d | 0d |  |  | 110h |  |
| 804 | 1.11.3.11.1 | Accomplishment | 1.75d? | 2005-03-16 | 2005-03-17 |  |  | -1.88d | 0d | start no earlier than 2005-03-16 |  |  |  |
| 805 | 1.11.3.11.2 | Arrangement | 6.88d | 2005-03-16 | 2005-03-23 |  |  | -7d | 0d | start no earlier than 2005-03-16 | Коан | 55h |  |
| 806 | 1.11.3.11.3 | Texts, Dialogues, Tasks, Marks on the map, news, characters' profiles (think over) | 6.88d | 2005-03-16 | 2005-03-23 |  |  | -7d | 0d | start no earlier than 2005-03-16 | Коан | 55h |  |
| 807 | 1.11.3.12 | **Scene 10 - Freedom soldiers on concrete construction** | 14.88d | 2005-03-04 A | 2005-03-21 | 74% | 3.9d | 0d |  |  |  | 149h | 105.55h |
| 808 | 1.11.3.12.1 | Accomplishment | 12d | 2005-03-05 A | 2005-03-18 | 78% | 2.6d | -3.12d | 0d | start no earlier than 2005-03-05 |  |  |  |
| 809 | 1.11.3.12.2 | Arrangement | 13.75d | 2005-03-04 A | 2005-03-19 | 80% | 2.75d | 0d |  | finish no earlier than 2005-03-19 | Коан | 110h | 88h |
| 810 | 1.11.3.12.3 | Texts, Dialogues, Tasks, Marks on the map, news, characters' profiles (think over) | 4.88d | 2005-03-16 A | 2005-03-21 | 45% | 2.68d | 0d |  | finish no earlier than 2005-03-21 | Коан | 39h | 17.55h |
| 811 | 1.11.3.13 | **Scene 11 - Hermit** | 15.88d | 2005-03-05 A | 2005-03-23 | 86% | 2.17d | 0d |  |  |  | 149h | 118.75h |
| 812 | 1.11.3.13.1 | Accomplishment | 9d | 2005-03-05 A | 2005-03-15 A | 100% |  |  |  | start no earlier than 2005-03-05 |  |  |  |
| 813 | 1.11.3.13.2 | Arrangement | 11.75d | 2005-03-07 A | 2005-03-19 A | 100% |  |  |  | start no earlier than 2005-03-07 | Коан | 94h | 94h |
| 814 | 1.11.3.13.3 | Texts, Dialogues, Tasks, Marks on the map, news, characters' profiles (think over) | 6.88d | 2005-03-16 A | 2005-03-23 | 45% | 3.78d | -7d | 0d | start no earlier than 2005-03-16 | Коан | 55h | 24.75h |
| 815 | 1.11.3.14 | **Scene 12 - Duty's security guard** | 4.88d | 2005-03-09 A | 2005-03-14 A | 100% |  |  |  |  |  | 78h | 78h |
| 816 | 1.11.3.14.1 | Accomplishment | 4.88d | 2005-03-09 A | 2005-03-14 A | 100% |  |  |  | start no earlier than 2005-03-05 |  |  |  |
| 817 | 1.11.3.14.2 | Arrangement | 4.88d | 2005-03-09 A | 2005-03-14 A | 100% |  |  |  | start no earlier than 2005-03-09 | Коан | 39h | 39h |
| 818 | 1.11.3.14.3 | Texts, Dialogues, Tasks, Marks on the map, news, characters' profiles (think over) | 4.88d | 2005-03-09 A | 2005-03-14 A | 100% |  |  |  | start no earlier than 2005-03-09 | Коан | 39h | 39h |
| 819 | 1.11.4 | Testing | 6d | 2005-03-21 | 2005-03-26 |  |  | -10.12d | 0d | start no earlier than 2005-03-21 |  |  |  |

| ID | WBS | Task | Duration | Start | Finish | Predecessors | Total slack | Free slack | Constraint | Deadline | Resources | Work |
| --- | --- | --- | --- | --- | --- | --- | --- | --- | --- | --- | --- | --- |
| 821 | 1.12 | **11_Yantar** | 43d? | 2005-01-24 | 2005-03-14 |  | 27.88d |  |  | 2005-04-15 | Коан, Руслан | 656h |
| 822 | 1.12.1 | **LevelDesign** | 12d? | 2005-03-01 | 2005-03-14 | 1255 | 0.88d |  |  | 2005-03-15 | Glory | 312h |
| 823 | 1.12.1.1 | **Stage 1** | 12d? | 2005-03-01 | 2005-03-14 |  | 0.88d |  |  |  | Glory | 216h |
| 824 | 1.12.1.1.1 | List of Changes | 2d | 2005-03-01 | 2005-03-02 |  | 5.88d | 0d |  |  | Glory | 16h |
| 825 | 1.12.1.1.2 | Changed Geometry | 4d | 2005-03-03 | 2005-03-07 | 824 | 5.88d | 0d |  |  | Glory | 32h |
| 826 | 1.12.1.1.3 | Check List 1 | 1d? | 2005-03-08 | 2005-03-08 | 825 | 5.88d |  |  |  | Glory | 8h |
| 827 | 1.12.1.1.4 | Check List 2 | 1d? | 2005-03-08 | 2005-03-08 |  | 5.88d |  | start no earlier than 2005-03-08 |  | Glory | 8h |
| 828 | 1.12.1.1.5 | Check List 3 | 1d? | 2005-03-08 | 2005-03-08 |  | 5.88d |  | start no earlier than 2005-03-08 |  | Glory | 8h |
| 829 | 1.12.1.1.6 | Check List 4 | 1d? | 2005-03-08 | 2005-03-08 |  | 0.88d | 0d | start no earlier than 2005-03-08 |  | Glory | 8h |
| 830 | 1.12.1.1.7 | Render Geometry | 4d | 2005-03-09 | 2005-03-12 | 829 | 0.88d | 0d |  |  | Glory | 32h |
| 831 | 1.12.1.1.8 | Grass | 1d? | 2005-03-14 | 2005-03-14 | 830 | 0.88d |  |  |  | Glory | 8h |
| 832 | 1.12.2 | **GameDesign** | 3d? | 2005-01-24 | 2005-01-26 |  | 67.88d |  |  |  |  |  |
| 833 | 1.12.2.1 | **Secrets** | 3d? | 2005-01-24 | 2005-01-26 |  | 67.88d |  |  |  |  |  |
| 834 | 1.12.2.1.1 | **Stage 1** | 3d? | 2005-01-24 | 2005-01-26 |  | 67.88d |  |  |  |  |  |
| 835 | 1.12.2.1.1.1 | Design | 1d? | 2005-01-24 | 2005-01-24 |  | 67.88d | 0d |  |  |  |  |
| 836 | 1.12.2.1.1.2 | Implementation | 1d? | 2005-01-25 | 2005-01-25 | 835 | 67.88d | 0d |  |  |  |  |
| 837 | 1.12.2.1.1.3 | Tuning | 1d? | 2005-01-26 | 2005-01-26 | 836 | 67.88d |  |  |  |  |  |
| 838 | 1.12.2.2 | **Smartterrains** | 3d? | 2005-01-24 | 2005-01-26 |  | 67.88d |  |  |  |  |  |
| 839 | 1.12.2.2.1 | **Stage 1** | 3d? | 2005-01-24 | 2005-01-26 |  | 67.88d |  |  |  |  |  |
| 840 | 1.12.2.2.1.1 | Design | 1d? | 2005-01-24 | 2005-01-24 |  | 67.88d | 0d |  |  |  |  |
| 841 | 1.12.2.2.1.2 | Implementation | 1d? | 2005-01-25 | 2005-01-25 | 840 | 67.88d | 0d |  |  |  |  |
| 842 | 1.12.2.2.1.3 | Tuning | 1d? | 2005-01-26 | 2005-01-26 | 841 | 67.88d |  |  |  |  |  |
| 843 | 1.12.2.3 | **Monsters/Spawns** | 3d? | 2005-01-24 | 2005-01-26 |  | 67.88d |  |  |  |  |  |
| 844 | 1.12.2.3.1 | **Stage 1** | 3d? | 2005-01-24 | 2005-01-26 |  | 67.88d |  |  |  |  |  |
| 845 | 1.12.2.3.1.1 | Design | 1d? | 2005-01-24 | 2005-01-24 |  | 67.88d | 0d |  |  |  |  |
| 846 | 1.12.2.3.1.2 | Implementation | 1d? | 2005-01-25 | 2005-01-25 | 845 | 67.88d | 0d |  |  |  |  |
| 847 | 1.12.2.3.1.3 | Tuning | 1d? | 2005-01-26 | 2005-01-26 | 846 | 67.88d |  |  |  |  |  |

| ID | WBS | Task | Duration | Start | Finish | Predecessors | Total slack | Free slack |
| --- | --- | --- | --- | --- | --- | --- | --- | --- |
| 848 | 1.12.2.4 | **Stalkers/Spawns** | 3d? | 2005-01-24 | 2005-01-26 |  | 67.88d |  |
| 849 | 1.12.2.4.1 | **Stage 1** | 3d? | 2005-01-24 | 2005-01-26 |  | 67.88d |  |
| 850 | 1.12.2.4.1.1 | Design | 1d? | 2005-01-24 | 2005-01-24 |  | 67.88d | 0d |
| 851 | 1.12.2.4.1.2 | Implementation | 1d? | 2005-01-25 | 2005-01-25 | 850 | 67.88d | 0d |
| 852 | 1.12.2.4.1.3 | Tuning | 1d? | 2005-01-26 | 2005-01-26 | 851 | 67.88d |  |
| 853 | 1.12.2.5 | **Anomalies/Spawns** | 3d? | 2005-01-24 | 2005-01-26 |  | 67.88d |  |
| 854 | 1.12.2.5.1 | **Stage 1** | 3d? | 2005-01-24 | 2005-01-26 |  | 67.88d |  |
| 855 | 1.12.2.5.1.1 | Design | 1d? | 2005-01-24 | 2005-01-24 |  | 67.88d | 0d |
| 856 | 1.12.2.5.1.2 | Implementation | 1d? | 2005-01-25 | 2005-01-25 | 855 | 67.88d | 0d |
| 857 | 1.12.2.5.1.3 | Tuning | 1d? | 2005-01-26 | 2005-01-26 | 856 | 67.88d |  |
| 858 | 1.12.2.6 | **Physicks** | 3d? | 2005-01-24 | 2005-01-26 |  | 67.88d |  |
| 859 | 1.12.2.6.1 | **Stage 1** | 3d? | 2005-01-24 | 2005-01-26 |  | 67.88d |  |
| 860 | 1.12.2.6.1.1 | Design | 1d? | 2005-01-24 | 2005-01-24 |  | 67.88d | 0d |
| 861 | 1.12.2.6.1.2 | Implementation | 1d? | 2005-01-25 | 2005-01-25 | 860 | 67.88d | 0d |
| 862 | 1.12.2.6.1.3 | Tuning | 1d? | 2005-01-26 | 2005-01-26 | 861 | 67.88d |  |
| 863 | 1.12.3 | **Scripts** | 5d? | 2005-01-24 | 2005-01-28 |  | 65.88d |  |
| 864 | 1.12.3.1 | **Script 1** | 5d? | 2005-01-24 | 2005-01-28 |  | 65.88d |  |
| 865 | 1.12.3.1.1 | Scenario(text) | 1d? | 2005-01-24 | 2005-01-24 |  | 65.88d | 0d |
| 866 | 1.12.3.1.2 | Постановка задач | 1d? | 2005-01-25 | 2005-01-25 | 865 | 65.88d | 0d |
| 867 | 1.12.3.1.3 | Implimentation | 1d? | 2005-01-26 | 2005-01-26 | 866 | 65.88d | 0d |
| 868 | 1.12.3.1.4 | Dilogs/VO/Icons/Objects/Animations | 1d? | 2005-01-27 | 2005-01-27 | 867 | 65.88d | 0d |
| 869 | 1.12.3.1.5 | Настройка | 1d? | 2005-01-28 | 2005-01-28 | 868 | 65.88d |  |
| 870 | 1.12.3.2 | **Script 2** | 5d? | 2005-01-24 | 2005-01-28 |  | 65.88d |  |
| 871 | 1.12.3.2.1 | Scenario(text) | 1d? | 2005-01-24 | 2005-01-24 |  | 65.88d | 0d |
| 872 | 1.12.3.2.2 | Постановка задач | 1d? | 2005-01-25 | 2005-01-25 | 871 | 65.88d | 0d |
| 873 | 1.12.3.2.3 | Implimentation | 1d? | 2005-01-26 | 2005-01-26 | 872 | 65.88d | 0d |
| 874 | 1.12.3.2.4 | Dilogs/VO/Icons/Objects/Animations | 1d? | 2005-01-27 | 2005-01-27 | 873 | 65.88d | 0d |
| 875 | 1.12.3.2.5 | Настройка | 1d? | 2005-01-28 | 2005-01-28 | 874 | 65.88d |  |

| ID | WBS | Task | Duration | Start | Finish | Predecessors | Total slack | Free slack | Constraint | Deadline | Resources | Work |
| --- | --- | --- | --- | --- | --- | --- | --- | --- | --- | --- | --- | --- |
| 876 | 1.12.3.3 | **Script 3** | 5d? | 2005-01-24 | 2005-01-28 |  | 65.88d |  |  |  |  |  |
| 877 | 1.12.3.3.1 | Scenario(text) | 1d? | 2005-01-24 | 2005-01-24 |  | 65.88d | 0d |  |  |  |  |
| 878 | 1.12.3.3.2 | Постановка задач | 1d? | 2005-01-25 | 2005-01-25 | 877 | 65.88d | 0d |  |  |  |  |
| 879 | 1.12.3.3.3 | Implimentation | 1d? | 2005-01-26 | 2005-01-26 | 878 | 65.88d | 0d |  |  |  |  |
| 880 | 1.12.3.3.4 | Dilogs/VO/Icons/Objects/Animations | 1d? | 2005-01-27 | 2005-01-27 | 879 | 65.88d | 0d |  |  |  |  |
| 881 | 1.12.3.3.5 | Настройка | 1d? | 2005-01-28 | 2005-01-28 | 880 | 65.88d |  |  |  |  |  |
| 882 | 1.12.3.4 | **Script 4** | 5d? | 2005-01-24 | 2005-01-28 |  | 65.88d |  |  |  |  |  |
| 883 | 1.12.3.4.1 | Scenario(text) | 1d? | 2005-01-24 | 2005-01-24 |  | 65.88d | 0d |  |  |  |  |
| 884 | 1.12.3.4.2 | Постановка задач | 1d? | 2005-01-25 | 2005-01-25 | 883 | 65.88d | 0d |  |  |  |  |
| 885 | 1.12.3.4.3 | Implimentation | 1d? | 2005-01-26 | 2005-01-26 | 884 | 65.88d | 0d |  |  |  |  |
| 886 | 1.12.3.4.4 | Dilogs/VO/Icons/Objects/Animations | 1d? | 2005-01-27 | 2005-01-27 | 885 | 65.88d | 0d |  |  |  |  |
| 887 | 1.12.3.4.5 | Настройка | 1d? | 2005-01-28 | 2005-01-28 | 886 | 65.88d |  |  |  |  |  |
| 888 | 1.12.3.5 | **Script 5** | 5d? | 2005-01-24 | 2005-01-28 |  | 65.88d |  |  |  |  |  |
| 889 | 1.12.3.5.1 | Scenario(text) | 1d? | 2005-01-24 | 2005-01-24 |  | 65.88d | 0d |  |  |  |  |
| 890 | 1.12.3.5.2 | Постановка задач | 1d? | 2005-01-25 | 2005-01-25 | 889 | 65.88d | 0d |  |  |  |  |
| 891 | 1.12.3.5.3 | Implimentation | 1d? | 2005-01-26 | 2005-01-26 | 890 | 65.88d | 0d |  |  |  |  |
| 892 | 1.12.3.5.4 | Dilogs/VO/Icons/Objects/Animations | 1d? | 2005-01-27 | 2005-01-27 | 891 | 65.88d | 0d |  |  |  |  |
| 893 | 1.12.3.5.5 | Настройка | 1d? | 2005-01-28 | 2005-01-28 | 892 | 65.88d |  |  |  |  |  |
| 895 | 1.13 | **22_Warlab** | 71d? | 2005-01-24 | 2005-04-15 |  | 23.88d |  |  | 2005-05-13 | Коан, Руслан | 904h |
| 896 | 1.13.1 | **LevelDesign** | 13d? | 2005-04-01 | 2005-04-15 | 654 | -0.12d | 0d |  | 2005-04-15 | Mike | 336h |
| 897 | 1.13.1.1 | **Stage 1** | 13d? | 2005-04-01 | 2005-04-15 |  | -0.12d | 0d |  |  | Mike | 232h |
| 898 | 1.13.1.1.1 | List of Changes | 1d | 2005-04-01 | 2005-04-01 |  | 2.88d | 0d |  |  | Mike | 8h |
| 899 | 1.13.1.1.2 | Changed Geometry | 8d | 2005-04-02 | 2005-04-11 | 898 | 2.88d | 0d |  |  | Mike | 64h |
| 900 | 1.13.1.1.3 | Check List 1 | 1d? | 2005-04-12 | 2005-04-12 | 899 | 2.88d |  |  |  | Mike | 8h |
| 901 | 1.13.1.1.4 | Check List 2 | 1d? | 2005-04-12 | 2005-04-12 |  | 2.88d |  | start no earlier than 2005-04-12 |  | Mike | 8h |
| 902 | 1.13.1.1.5 | Check List 3 | 1d? | 2005-04-12 | 2005-04-12 |  | 2.88d |  | start no earlier than 2005-04-12 |  | Mike | 8h |
| 903 | 1.13.1.1.6 | Check List 4 | 1d? | 2005-04-12 | 2005-04-12 |  | -0.12d | 0d | start no earlier than 2005-04-12 |  | Mike | 8h |
| 904 | 1.13.1.1.7 | Render Geometry | 3d | 2005-04-13 | 2005-04-15 | 903 | -0.12d | 0d |  |  | Mike | 24h |

| ID | WBS | Task | Duration | Start | Finish | Predecessors | Total slack | Free slack |
| --- | --- | --- | --- | --- | --- | --- | --- | --- |
| 905 | 1.13.2 | **GameDesign** | 3d? | 2005-01-24 | 2005-01-26 |  | 91.88d |  |
| 906 | 1.13.2.1 | **Secrets** | 3d? | 2005-01-24 | 2005-01-26 |  | 91.88d |  |
| 907 | 1.13.2.1.1 | **Stage 1** | 3d? | 2005-01-24 | 2005-01-26 |  | 91.88d |  |
| 908 | 1.13.2.1.1.1 | Design | 1d? | 2005-01-24 | 2005-01-24 |  | 91.88d | 0d |
| 909 | 1.13.2.1.1.2 | Implementation | 1d? | 2005-01-25 | 2005-01-25 | 908 | 91.88d | 0d |
| 910 | 1.13.2.1.1.3 | Tuning | 1d? | 2005-01-26 | 2005-01-26 | 909 | 91.88d |  |
| 911 | 1.13.2.2 | **Smartterrains** | 3d? | 2005-01-24 | 2005-01-26 |  | 91.88d |  |
| 912 | 1.13.2.2.1 | **Stage 1** | 3d? | 2005-01-24 | 2005-01-26 |  | 91.88d |  |
| 913 | 1.13.2.2.1.1 | Design | 1d? | 2005-01-24 | 2005-01-24 |  | 91.88d | 0d |
| 914 | 1.13.2.2.1.2 | Implementation | 1d? | 2005-01-25 | 2005-01-25 | 913 | 91.88d | 0d |
| 915 | 1.13.2.2.1.3 | Tuning | 1d? | 2005-01-26 | 2005-01-26 | 914 | 91.88d |  |
| 916 | 1.13.2.3 | **Monsters/Spawns** | 3d? | 2005-01-24 | 2005-01-26 |  | 91.88d |  |
| 917 | 1.13.2.3.1 | **Stage 1** | 3d? | 2005-01-24 | 2005-01-26 |  | 91.88d |  |
| 918 | 1.13.2.3.1.1 | Design | 1d? | 2005-01-24 | 2005-01-24 |  | 91.88d | 0d |
| 919 | 1.13.2.3.1.2 | Implementation | 1d? | 2005-01-25 | 2005-01-25 | 918 | 91.88d | 0d |
| 920 | 1.13.2.3.1.3 | Tuning | 1d? | 2005-01-26 | 2005-01-26 | 919 | 91.88d |  |
| 921 | 1.13.2.4 | **Stalkers/Spawns** | 3d? | 2005-01-24 | 2005-01-26 |  | 91.88d |  |
| 922 | 1.13.2.4.1 | **Stage 1** | 3d? | 2005-01-24 | 2005-01-26 |  | 91.88d |  |
| 923 | 1.13.2.4.1.1 | Design | 1d? | 2005-01-24 | 2005-01-24 |  | 91.88d | 0d |
| 924 | 1.13.2.4.1.2 | Implementation | 1d? | 2005-01-25 | 2005-01-25 | 923 | 91.88d | 0d |
| 925 | 1.13.2.4.1.3 | Tuning | 1d? | 2005-01-26 | 2005-01-26 | 924 | 91.88d |  |
| 926 | 1.13.2.5 | **Anomalies/Spawns** | 3d? | 2005-01-24 | 2005-01-26 |  | 91.88d |  |
| 927 | 1.13.2.5.1 | **Stage 1** | 3d? | 2005-01-24 | 2005-01-26 |  | 91.88d |  |
| 928 | 1.13.2.5.1.1 | Design | 1d? | 2005-01-24 | 2005-01-24 |  | 91.88d | 0d |
| 929 | 1.13.2.5.1.2 | Implementation | 1d? | 2005-01-25 | 2005-01-25 | 928 | 91.88d | 0d |
| 930 | 1.13.2.5.1.3 | Tuning | 1d? | 2005-01-26 | 2005-01-26 | 929 | 91.88d |  |

| ID | WBS | Task | Duration | Start | Finish | Predecessors | Total slack | Free slack |
| --- | --- | --- | --- | --- | --- | --- | --- | --- |
| 931 | 1.13.2.6 | **Physicks** | 3d? | 2005-01-24 | 2005-01-26 |  | 91.88d |  |
| 932 | 1.13.2.6.1 | **Stage 1** | 3d? | 2005-01-24 | 2005-01-26 |  | 91.88d |  |
| 933 | 1.13.2.6.1.1 | Design | 1d? | 2005-01-24 | 2005-01-24 |  | 91.88d | 0d |
| 934 | 1.13.2.6.1.2 | Implementation | 1d? | 2005-01-25 | 2005-01-25 | 933 | 91.88d | 0d |
| 935 | 1.13.2.6.1.3 | Tuning | 1d? | 2005-01-26 | 2005-01-26 | 934 | 91.88d |  |
| 936 | 1.13.3 | **Scripts** | 5d? | 2005-01-24 | 2005-01-28 |  | 89.88d |  |
| 937 | 1.13.3.1 | **Script 1** | 5d? | 2005-01-24 | 2005-01-28 |  | 89.88d |  |
| 938 | 1.13.3.1.1 | Scenario(text) | 1d? | 2005-01-24 | 2005-01-24 |  | 89.88d | 0d |
| 939 | 1.13.3.1.2 | Постановка задач | 1d? | 2005-01-25 | 2005-01-25 | 938 | 89.88d | 0d |
| 940 | 1.13.3.1.3 | Implimentation | 1d? | 2005-01-26 | 2005-01-26 | 939 | 89.88d | 0d |
| 941 | 1.13.3.1.4 | Dilogs/VO/Icons/Objects/Animations | 1d? | 2005-01-27 | 2005-01-27 | 940 | 89.88d | 0d |
| 942 | 1.13.3.1.5 | Настройка | 1d? | 2005-01-28 | 2005-01-28 | 941 | 89.88d |  |
| 943 | 1.13.3.2 | **Script 2** | 5d? | 2005-01-24 | 2005-01-28 |  | 89.88d |  |
| 944 | 1.13.3.2.1 | Scenario(text) | 1d? | 2005-01-24 | 2005-01-24 |  | 89.88d | 0d |
| 945 | 1.13.3.2.2 | Постановка задач | 1d? | 2005-01-25 | 2005-01-25 | 944 | 89.88d | 0d |
| 946 | 1.13.3.2.3 | Implimentation | 1d? | 2005-01-26 | 2005-01-26 | 945 | 89.88d | 0d |
| 947 | 1.13.3.2.4 | Dilogs/VO/Icons/Objects/Animations | 1d? | 2005-01-27 | 2005-01-27 | 946 | 89.88d | 0d |
| 948 | 1.13.3.2.5 | Настройка | 1d? | 2005-01-28 | 2005-01-28 | 947 | 89.88d |  |
| 949 | 1.13.3.3 | **Script 3** | 5d? | 2005-01-24 | 2005-01-28 |  | 89.88d |  |
| 950 | 1.13.3.3.1 | Scenario(text) | 1d? | 2005-01-24 | 2005-01-24 |  | 89.88d | 0d |
| 951 | 1.13.3.3.2 | Постановка задач | 1d? | 2005-01-25 | 2005-01-25 | 950 | 89.88d | 0d |
| 952 | 1.13.3.3.3 | Implimentation | 1d? | 2005-01-26 | 2005-01-26 | 951 | 89.88d | 0d |
| 953 | 1.13.3.3.4 | Dilogs/VO/Icons/Objects/Animations | 1d? | 2005-01-27 | 2005-01-27 | 952 | 89.88d | 0d |
| 954 | 1.13.3.3.5 | Настройка | 1d? | 2005-01-28 | 2005-01-28 | 953 | 89.88d |  |

| ID | WBS | Task | Duration | Start | Finish | Predecessors | Complete | Remaining | Total slack | Free slack | Constraint | Deadline | Resources | Work | Actual work |
| --- | --- | --- | --- | --- | --- | --- | --- | --- | --- | --- | --- | --- | --- | --- | --- |
| 955 | 1.13.3.4 | **Script 4** | 5d? | 2005-01-24 | 2005-01-28 |  |  |  | 89.88d |  |  |  |  |  |  |
| 956 | 1.13.3.4.1 | Scenario(text) | 1d? | 2005-01-24 | 2005-01-24 |  |  |  | 89.88d | 0d |  |  |  |  |  |
| 957 | 1.13.3.4.2 | Постановка задач | 1d? | 2005-01-25 | 2005-01-25 | 956 |  |  | 89.88d | 0d |  |  |  |  |  |
| 958 | 1.13.3.4.3 | Implimentation | 1d? | 2005-01-26 | 2005-01-26 | 957 |  |  | 89.88d | 0d |  |  |  |  |  |
| 959 | 1.13.3.4.4 | Dilogs/VO/Icons/Objects/Animations | 1d? | 2005-01-27 | 2005-01-27 | 958 |  |  | 89.88d | 0d |  |  |  |  |  |
| 960 | 1.13.3.4.5 | Настройка | 1d? | 2005-01-28 | 2005-01-28 | 959 |  |  | 89.88d |  |  |  |  |  |  |
| 961 | 1.13.3.5 | **Script 5** | 5d? | 2005-01-24 | 2005-01-28 |  |  |  | 89.88d |  |  |  |  |  |  |
| 962 | 1.13.3.5.1 | Scenario(text) | 1d? | 2005-01-24 | 2005-01-24 |  |  |  | 89.88d | 0d |  |  |  |  |  |
| 963 | 1.13.3.5.2 | Постановка задач | 1d? | 2005-01-25 | 2005-01-25 | 962 |  |  | 89.88d | 0d |  |  |  |  |  |
| 964 | 1.13.3.5.3 | Implimentation | 1d? | 2005-01-26 | 2005-01-26 | 963 |  |  | 89.88d | 0d |  |  |  |  |  |
| 965 | 1.13.3.5.4 | Dilogs/VO/Icons/Objects/Animations | 1d? | 2005-01-27 | 2005-01-27 | 964 |  |  | 89.88d | 0d |  |  |  |  |  |
| 966 | 1.13.3.5.5 | Настройка | 1d? | 2005-01-28 | 2005-01-28 | 965 |  |  | 89.88d |  |  |  |  |  |  |
| 968 | 1.14 | **10_Military_Base** | 53.75d? | 2005-01-24 A | 2005-03-26 |  | 88% | 6.31d? | -21.88d | 0d |  | 2005-03-01 | Маст Дай, Сидорович | 1523h | 1450.27h |
| 969 | 1.14.1 | **LevelDesign** | 19d? | 2005-01-24 A | 2005-02-14 A |  | 100% |  |  |  |  | 2005-02-14 | Майк | 480h | 480h |
| 970 | 1.14.1.1 | **Stage 1** | 19d? | 2005-01-24 A | 2005-02-14 A |  | 100% |  |  |  |  |  | Майк | 328h | 328h |
| 971 | 1.14.1.1.1 | List of Changes | 2d | 2005-01-24 A | 2005-01-25 A |  | 100% |  |  |  |  |  | Майк | 16h | 16h |
| 972 | 1.14.1.1.2 | Changed Geometry | 12d | 2005-01-26 A | 2005-02-08 A | 971 | 100% |  |  |  |  |  | Майк | 96h | 96h |
| 973 | 1.14.1.1.3 | Check List 1 | 1d? | 2005-02-09 A | 2005-02-09 A | 972 | 100% |  |  |  |  |  | Майк | 8h | 8h |
| 974 | 1.14.1.1.4 | Check List 2 | 1d? | 2005-02-09 A | 2005-02-09 A |  | 100% |  |  |  | start no earlier than 2005-02-09 |  | Майк | 8h | 8h |
| 975 | 1.14.1.1.5 | Check List 3 | 1d? | 2005-02-09 A | 2005-02-09 A |  | 100% |  |  |  | start no earlier than 2005-02-09 |  | Майк | 8h | 8h |
| 976 | 1.14.1.1.6 | Check List 4 | 1d? | 2005-02-09 A | 2005-02-09 A |  | 100% |  |  |  | start no earlier than 2005-02-09 |  | Майк | 8h | 8h |
| 977 | 1.14.1.1.7 | Render Geometry | 3d | 2005-02-10 A | 2005-02-12 A | 976 | 100% |  |  |  |  |  | Майк | 24h | 24h |
| 978 | 1.14.1.1.8 | Grass | 1d? | 2005-02-14 A | 2005-02-14 A | 977 | 100% |  |  |  |  |  | Майк | 8h | 8h |
| 979 | 1.14.2 | **GameDesign** | 31.88d? | 2005-01-24 A | 2005-03-01 |  | 63% | 11.94d? | 0d |  |  |  |  | 83h | 60.75h |
| 980 | 1.14.2.1 | **Secrets** | 3.88d? | 2005-02-25 A | 2005-03-01 |  | 69% | 1.22d? | 0d |  |  |  |  | 23h | 17.25h |
| 981 | 1.14.2.1.1 | **Stage 1** | 3.88d? | 2005-02-25 A | 2005-03-01 |  | 69% | 1.22d? | 0d |  |  |  |  | 23h | 17.25h |
| 982 | 1.14.2.1.1.1 | Design | 1.88d? | 2005-02-25 A | 2005-02-26 |  | 75% | 0.47d? | 1.25d | 0d | start no earlier than 2005-02-25 |  | Mustdie | 15h | 11.25h |
| 983 | 1.14.2.1.1.2 | Implementation | 1d? | 2005-02-26 A | 2005-02-28 | 982 | 75% | 0.25d? | 0.5d | 0d |  |  | Mustdie | 8h | 6h |
| 984 | 1.14.2.1.1.3 | Tuning | 1d? | 2005-02-28 A | 2005-03-01 | 983 | 50% | 0.5d? | 0d |  |  |  |  |  |  |

| ID | WBS | Task | Duration | Start | Finish | Predecessors | Complete | Remaining | Total slack | Free slack | Constraint | Resources | Work | Actual work |
| --- | --- | --- | --- | --- | --- | --- | --- | --- | --- | --- | --- | --- | --- | --- |
| 985 | 1.14.2.2 | **Smartterrains** | 3.88d? | 2005-02-25 A | 2005-03-01 |  | 74% | 1d? | 0d |  |  |  | 15h | 15h |
| 986 | 1.14.2.2.1 | **Stage 1** | 3.88d? | 2005-02-25 A | 2005-03-01 |  | 74% | 1d? | 0d |  |  |  | 15h | 15h |
| 987 | 1.14.2.2.1.1 | Design | 1.88d? | 2005-02-25 A | 2005-02-26 A |  | 100% |  |  |  | start no earlier than 2005-02-25 | Mustdie | 15h | 15h |
| 988 | 1.14.2.2.1.2 | Implementation | 1d? | 2005-02-26 A | 2005-02-28 A | 987 | 100% |  |  |  |  |  |  |  |
| 989 | 1.14.2.2.1.3 | Tuning | 1d? | 2005-02-28 | 2005-03-01 | 988 |  |  | 0d |  |  |  |  |  |
| 990 | 1.14.2.3 | **Monsters/Spawns** | 3.88d? | 2005-02-25 A | 2005-03-01 |  | 67% | 1.29d? | 0d |  |  |  | 15h | 13.5h |
| 991 | 1.14.2.3.1 | **Stage 1** | 3.88d? | 2005-02-25 A | 2005-03-01 |  | 67% | 1.29d? | 0d |  |  |  | 15h | 13.5h |
| 992 | 1.14.2.3.1.1 | Design | 1.88d? | 2005-02-25 A | 2005-02-26 |  | 90% | 0.19d? | 0.9d | 0d | start no earlier than 2005-02-25 | Маст Дай, Сидорович | 15h | 13.5h |
| 993 | 1.14.2.3.1.2 | Implementation | 1d? | 2005-02-26 A | 2005-02-28 | 992 | 90% | 0.1d? | 0d |  |  |  |  |  |
| 994 | 1.14.2.3.1.3 | Tuning | 1d? | 2005-02-28 | 2005-03-01 | 993 |  |  | 0d |  |  |  |  |  |
| 995 | 1.14.2.4 | **Stalkers/Spawns** | 3.88d? | 2005-02-25 | 2005-03-01 |  |  |  | 0d |  |  |  | 15h |  |
| 996 | 1.14.2.4.1 | **Stage 1** | 3.88d? | 2005-02-25 | 2005-03-01 |  |  |  | 0d |  |  |  | 15h |  |
| 997 | 1.14.2.4.1.1 | Design | 1.88d? | 2005-02-25 | 2005-02-26 |  |  |  | 0d |  | start no earlier than 2005-02-25 | Сидорович, Маст Дай | 15h |  |
| 998 | 1.14.2.4.1.2 | Implementation | 1d? | 2005-02-26 | 2005-02-28 | 997 |  |  | 0d |  |  |  |  |  |
| 999 | 1.14.2.4.1.3 | Tuning | 1d? | 2005-02-28 | 2005-03-01 | 998 |  |  | 0d |  |  |  |  |  |
| 1000 | 1.14.2.5 | **Anomalies/Spawns** | 3.88d? | 2005-02-25 A | 2005-03-01 |  | 74% | 1d? | 0d |  |  |  | 15h | 15h |
| 1001 | 1.14.2.5.1 | **Stage 1** | 3.88d? | 2005-02-25 A | 2005-03-01 |  | 74% | 1d? | 0d |  |  |  | 15h | 15h |
| 1002 | 1.14.2.5.1.1 | Design | 1.88d? | 2005-02-25 A | 2005-02-26 A |  | 100% |  |  |  | start no earlier than 2005-02-25 | Сидорович, Маст Дай | 15h | 15h |
| 1003 | 1.14.2.5.1.2 | Implementation | 1d? | 2005-02-26 A | 2005-02-28 A | 1002 | 100% |  |  |  |  |  |  |  |
| 1004 | 1.14.2.5.1.3 | Tuning | 1d? | 2005-02-28 | 2005-03-01 | 1003 |  |  | 0d |  |  |  |  |  |
| 1005 | 1.14.2.6 | **Physicks** | 3d? | 2005-01-24 A | 2005-01-26 A |  | 100% |  |  |  |  |  |  |  |
| 1006 | 1.14.2.6.1 | **Stage 1** | 3d? | 2005-01-24 A | 2005-01-26 A |  | 100% |  |  |  |  |  |  |  |
| 1007 | 1.14.2.6.1.1 | Design | 1d? | 2005-01-24 A | 2005-01-24 A |  | 100% |  |  |  |  |  |  |  |
| 1008 | 1.14.2.6.1.2 | Implementation | 1d? | 2005-01-25 A | 2005-01-25 A | 1007 | 100% |  |  |  |  |  |  |  |
| 1009 | 1.14.2.6.1.3 | Tuning | 1d? | 2005-01-26 A | 2005-01-26 A | 1008 | 100% |  |  |  |  |  |  |  |

| ID | WBS | Task | Duration | Start | Finish | Complete | Remaining | Total slack | Free slack | Constraint | Deadline | Resources | Work | Actual work |
| --- | --- | --- | --- | --- | --- | --- | --- | --- | --- | --- | --- | --- | --- | --- |
| 1010 | 1.14.3 | **Scripts** | 53.75d? | 2005-01-24 A | 2005-03-26 | 92% | 4.07d? | -21.88d | 0d |  | 2005-03-01 |  | 530h | 530h |
| 1011 | 1.14.3.1 | Scenario (text) | 1d | 2005-01-24 A | 2005-01-24 A | 100% |  |  |  |  |  | Mustdie | 8h | 8h |
| 1012 | 1.14.3.2 | Setting tasks | 5d | 2005-01-25 A | 2005-01-29 A | 100% |  |  |  | start no earlier than 2005-02-01 |  | Mustdie | 40h | 40h |
| 1013 | 1.14.3.3 | **Scene 1 - Freedom base (GULAG)** | 18.88d | 2005-02-02 A | 2005-02-23 A | 100% |  |  |  |  |  |  | 309h | 309h |
| 1014 | 1.14.3.3.1 | Accomplishment | 15.75d | 2005-02-02 A | 2005-02-19 A | 100% |  |  |  | finish no earlier than 2005-02-19 |  | Сидорович | 126h | 126h |
| 1015 | 1.14.3.3.2 | Arrangement | 18.88d | 2005-02-02 A | 2005-02-23 A | 100% |  |  |  | finish no earlier than 2005-02-23 |  | Mustdie | 151h | 151h |
| 1016 | 1.14.3.3.3 | Texts, Dialogues, Tasks, Marks on the map, news, characters' profiles (think over) | 4d | 2005-02-11 A | 2005-02-15 A | 100% |  |  |  | start no earlier than 2005-02-11 |  | Mustdie | 32h | 32h |
| 1017 | 1.14.3.4 | **Scene 2 - Duty Grouping** | 6.08d | 2005-02-17 A | 2005-02-24 A | 100% |  |  |  |  |  |  | 85h | 85h |
| 1018 | 1.14.3.4.1 | Accomplishment | 2.75d | 2005-02-17 A | 2005-02-19 A | 100% |  |  |  | finish no earlier than 2005-02-19 |  | Сидорович | 22h | 22h |
| 1019 | 1.14.3.4.2 | Arrangement | 5.88d | 2005-02-17 A | 2005-02-23 A | 100% |  |  |  | start no earlier than 2005-02-17 |  | Mustdie | 47h | 47h |
| 1020 | 1.14.3.4.3 | Texts, Dialogues, Tasks, Marks on the map, news, characters' profiles (think over) | 2d | 2005-02-18 A | 2005-02-24 A | 100% |  |  |  |  |  | Mustdie | 16h | 16h |
| 1021 | 1.14.3.5 | **Scene 3 - Mad stalker** | 1d | 2005-02-21 A | 2005-02-21 A | 100% |  |  |  |  |  |  | 24h | 24h |
| 1022 | 1.14.3.5.1 | Accomplishment | 1d | 2005-02-21 A | 2005-02-21 A | 100% |  |  |  |  |  | Сидорович | 8h | 8h |
| 1023 | 1.14.3.5.2 | Arrangement | 1d | 2005-02-21 A | 2005-02-21 A | 100% |  |  |  |  |  | Mustdie | 8h | 8h |
| 1024 | 1.14.3.5.3 | Texts, Dialogues, Tasks, Marks on the map, news, characters' profiles (think over) | 1d | 2005-02-21 A | 2005-02-21 A | 100% |  |  |  | start no earlier than 2005-02-21 |  | Mustdie | 8h | 8h |
| 1025 | 1.14.3.6 | **Scene 4 - Fight - Killers and Bandits** | 1d? | 2005-02-22 A | 2005-02-22 A | 100% |  |  |  |  |  |  | 24h | 24h |
| 1026 | 1.14.3.6.1 | Accomplishment | 1d? | 2005-02-22 A | 2005-02-22 A | 100% |  |  |  |  |  |  |  |  |
| 1027 | 1.14.3.6.2 | Accomplishment | 1d | 2005-02-22 A | 2005-02-22 A | 100% |  |  |  | start no earlier than 2005-02-22 |  | Сидорович | 8h | 8h |
| 1028 | 1.14.3.6.3 | Arrangement | 1d? | 2005-02-22 A | 2005-02-22 A | 100% |  |  |  | start no earlier than 2005-02-22 |  | Mustdie | 8h | 8h |
| 1029 | 1.14.3.6.4 | Texts, Dialogues, Tasks, Marks on the map, news, characters' profiles (think over) | 1d? | 2005-02-22 A | 2005-02-22 A | 100% |  |  |  | start no earlier than 2005-02-22 |  | Mustdie | 8h | 8h |
| 1030 | 1.14.3.7 | **Scene 5 - Village** | 6.25d? | 2005-02-17 A | 2005-02-24 A | 100% |  |  |  |  |  |  | 40h | 40h |
| 1031 | 1.14.3.7.1 | Accomplishment | 2d | 2005-02-17 A | 2005-02-19 A | 100% |  |  |  | finish no earlier than 2005-02-19 |  | Сидорович | 16h | 16h |
| 1032 | 1.14.3.7.2 | Arrangement | 2d | 2005-02-22 A | 2005-02-24 A | 100% |  |  |  | finish no earlier than 2005-02-24 |  | Mustdie | 16h | 16h |
| 1033 | 1.14.3.7.3 | Texts, Dialogues, Tasks, Marks on the map, news, characters' profiles (think over) | 1d? | 2005-02-24 A | 2005-02-24 A | 100% |  |  |  | start no earlier than 2005-02-24 |  | Mustdie | 8h | 8h |

| ID | WBS | Task | Duration | Start | Finish | Predecessors | Complete | Total slack | Free slack | Constraint | Deadline | Resources | Work |
| --- | --- | --- | --- | --- | --- | --- | --- | --- | --- | --- | --- | --- | --- |
| 1034 | 1.14.3.8 | **Scene 6 - Monolit Ambush** | 1d? | 2005-02-24 A | 2005-02-25 A |  | 100% |  |  |  |  |  |  |
| 1035 | 1.14.3.8.1 | Accomplishment | 1d? | 2005-02-24 A | 2005-02-25 A |  | 100% |  |  |  |  |  |  |
| 1036 | 1.14.3.8.2 | Arrangement | 1d? | 2005-02-24 A | 2005-02-25 A |  | 100% |  |  |  |  |  |  |
| 1037 | 1.14.3.8.3 | Texts, Dialogues, Tasks, Marks on the map, news, characters' profiles (think over) | 1d? | 2005-02-24 A | 2005-02-25 A |  | 100% |  |  |  |  |  |  |
| 1038 | 1.14.3.9 | Testing | 5.75d? | 2005-03-21 | 2005-03-26 |  |  | -21.88d | 0d | finish no earlier than 2005-03-26 |  |  |  |
| 1040 | 1.15 | **20_Sarcofag** | 8d? | 2005-01-24 | 2005-02-01 |  |  | 23.88d |  |  | 2005-04-01 | Маст Дай, Сидорович | 256h |
| 1041 | 1.15.1 | **LevelDesign** | 8d? | 2005-01-24 | 2005-02-01 |  |  | 23.88d |  |  | 2005-03-01 | Rainbow | 192h |
| 1042 | 1.15.1.1 | **Stage 1** | 8d? | 2005-01-24 | 2005-02-01 |  |  | 23.88d |  |  |  | Rainbow | 128h |
| 1043 | 1.15.1.1.1 | List of Changes | 2d | 2005-01-24 | 2005-01-25 |  |  | 23.88d | 0d |  |  | Rainbow | 16h |
| 1044 | 1.15.1.1.2 | Changed Geometry | 1d? | 2005-01-26 | 2005-01-26 | 1043 |  | 23.88d | 0d |  |  | Rainbow | 8h |
| 1045 | 1.15.1.1.3 | Check List 1 | 1d? | 2005-01-27 | 2005-01-27 | 1044 |  | 23.88d | 0d |  |  | Rainbow | 8h |
| 1046 | 1.15.1.1.4 | Check List 2 | 1d? | 2005-01-28 | 2005-01-28 | 1045 |  | 23.88d | 0d |  |  | Rainbow | 8h |
| 1047 | 1.15.1.1.5 | Check List 3 | 1d? | 2005-01-29 | 2005-01-29 | 1046 |  | 23.88d | 0d |  |  | Rainbow | 8h |
| 1048 | 1.15.1.1.6 | Check List 4 | 1d? | 2005-01-31 | 2005-01-31 | 1047 |  | 23.88d | 0d |  |  | Rainbow | 8h |
| 1049 | 1.15.1.1.7 | Render Geometry | 1d? | 2005-02-01 | 2005-02-01 | 1048 |  | 23.88d |  |  |  | Rainbow | 8h |
| 1050 | 1.15.2 | **GameDesign** | 3d? | 2005-01-24 | 2005-01-26 |  |  | 55.88d |  |  |  |  |  |
| 1051 | 1.15.2.1 | **Secrets** | 3d? | 2005-01-24 | 2005-01-26 |  |  | 55.88d |  |  |  |  |  |
| 1052 | 1.15.2.1.1 | **Stage 1** | 3d? | 2005-01-24 | 2005-01-26 |  |  | 55.88d |  |  |  |  |  |
| 1053 | 1.15.2.1.1.1 | Design | 1d? | 2005-01-24 | 2005-01-24 |  |  | 55.88d | 0d |  |  |  |  |
| 1054 | 1.15.2.1.1.2 | Implementation | 1d? | 2005-01-25 | 2005-01-25 | 1053 |  | 55.88d | 0d |  |  |  |  |
| 1055 | 1.15.2.1.1.3 | Tuning | 1d? | 2005-01-26 | 2005-01-26 | 1054 |  | 55.88d |  |  |  |  |  |
| 1056 | 1.15.2.2 | **Smartterrains** | 3d? | 2005-01-24 | 2005-01-26 |  |  | 55.88d |  |  |  |  |  |
| 1057 | 1.15.2.2.1 | **Stage 1** | 3d? | 2005-01-24 | 2005-01-26 |  |  | 55.88d |  |  |  |  |  |
| 1058 | 1.15.2.2.1.1 | Design | 1d? | 2005-01-24 | 2005-01-24 |  |  | 55.88d | 0d |  |  |  |  |
| 1059 | 1.15.2.2.1.2 | Implementation | 1d? | 2005-01-25 | 2005-01-25 | 1058 |  | 55.88d | 0d |  |  |  |  |
| 1060 | 1.15.2.2.1.3 | Tuning | 1d? | 2005-01-26 | 2005-01-26 | 1059 |  | 55.88d |  |  |  |  |  |

| ID | WBS | Task | Duration | Start | Finish | Predecessors | Total slack | Free slack |
| --- | --- | --- | --- | --- | --- | --- | --- | --- |
| 1061 | 1.15.2.3 | **Monsters/Spawns** | 3d? | 2005-01-24 | 2005-01-26 |  | 55.88d |  |
| 1062 | 1.15.2.3.1 | **Stage 1** | 3d? | 2005-01-24 | 2005-01-26 |  | 55.88d |  |
| 1063 | 1.15.2.3.1.1 | Design | 1d? | 2005-01-24 | 2005-01-24 |  | 55.88d | 0d |
| 1064 | 1.15.2.3.1.2 | Implementation | 1d? | 2005-01-25 | 2005-01-25 | 1063 | 55.88d | 0d |
| 1065 | 1.15.2.3.1.3 | Tuning | 1d? | 2005-01-26 | 2005-01-26 | 1064 | 55.88d |  |
| 1066 | 1.15.2.4 | **Stalkers/Spawns** | 3d? | 2005-01-24 | 2005-01-26 |  | 55.88d |  |
| 1067 | 1.15.2.4.1 | **Stage 1** | 3d? | 2005-01-24 | 2005-01-26 |  | 55.88d |  |
| 1068 | 1.15.2.4.1.1 | Design | 1d? | 2005-01-24 | 2005-01-24 |  | 55.88d | 0d |
| 1069 | 1.15.2.4.1.2 | Implementation | 1d? | 2005-01-25 | 2005-01-25 | 1068 | 55.88d | 0d |
| 1070 | 1.15.2.4.1.3 | Tuning | 1d? | 2005-01-26 | 2005-01-26 | 1069 | 55.88d |  |
| 1071 | 1.15.2.5 | **Anomalies/Spawns** | 3d? | 2005-01-24 | 2005-01-26 |  | 55.88d |  |
| 1072 | 1.15.2.5.1 | **Stage 1** | 3d? | 2005-01-24 | 2005-01-26 |  | 55.88d |  |
| 1073 | 1.15.2.5.1.1 | Design | 1d? | 2005-01-24 | 2005-01-24 |  | 55.88d | 0d |
| 1074 | 1.15.2.5.1.2 | Implementation | 1d? | 2005-01-25 | 2005-01-25 | 1073 | 55.88d | 0d |
| 1075 | 1.15.2.5.1.3 | Tuning | 1d? | 2005-01-26 | 2005-01-26 | 1074 | 55.88d |  |
| 1076 | 1.15.2.6 | **Physicks** | 3d? | 2005-01-24 | 2005-01-26 |  | 55.88d |  |
| 1077 | 1.15.2.6.1 | **Stage 1** | 3d? | 2005-01-24 | 2005-01-26 |  | 55.88d |  |
| 1078 | 1.15.2.6.1.1 | Design | 1d? | 2005-01-24 | 2005-01-24 |  | 55.88d | 0d |
| 1079 | 1.15.2.6.1.2 | Implementation | 1d? | 2005-01-25 | 2005-01-25 | 1078 | 55.88d | 0d |
| 1080 | 1.15.2.6.1.3 | Tuning | 1d? | 2005-01-26 | 2005-01-26 | 1079 | 55.88d |  |
| 1081 | 1.15.3 | **Scripts** | 5d? | 2005-01-24 | 2005-01-28 |  | 53.88d |  |
| 1082 | 1.15.3.1 | **Script 1** | 5d? | 2005-01-24 | 2005-01-28 |  | 53.88d |  |
| 1083 | 1.15.3.1.1 | Scenario(text) | 1d? | 2005-01-24 | 2005-01-24 |  | 53.88d | 0d |
| 1084 | 1.15.3.1.2 | Постановка задач | 1d? | 2005-01-25 | 2005-01-25 | 1083 | 53.88d | 0d |
| 1085 | 1.15.3.1.3 | Implimentation | 1d? | 2005-01-26 | 2005-01-26 | 1084 | 53.88d | 0d |
| 1086 | 1.15.3.1.4 | Dilogs/VO/Icons/Objects/Animations | 1d? | 2005-01-27 | 2005-01-27 | 1085 | 53.88d | 0d |
| 1087 | 1.15.3.1.5 | Настройка | 1d? | 2005-01-28 | 2005-01-28 | 1086 | 53.88d |  |

| ID | WBS | Task | Duration | Start | Finish | Predecessors | Total slack | Free slack |
| --- | --- | --- | --- | --- | --- | --- | --- | --- |
| 1088 | 1.15.3.2 | **Script 2** | 5d? | 2005-01-24 | 2005-01-28 |  | 53.88d |  |
| 1089 | 1.15.3.2.1 | Scenario(text) | 1d? | 2005-01-24 | 2005-01-24 |  | 53.88d | 0d |
| 1090 | 1.15.3.2.2 | Постановка задач | 1d? | 2005-01-25 | 2005-01-25 | 1089 | 53.88d | 0d |
| 1091 | 1.15.3.2.3 | Implimentation | 1d? | 2005-01-26 | 2005-01-26 | 1090 | 53.88d | 0d |
| 1092 | 1.15.3.2.4 | Dilogs/VO/Icons/Objects/Animations | 1d? | 2005-01-27 | 2005-01-27 | 1091 | 53.88d | 0d |
| 1093 | 1.15.3.2.5 | Настройка | 1d? | 2005-01-28 | 2005-01-28 | 1092 | 53.88d |  |
| 1094 | 1.15.3.3 | **Script 3** | 5d? | 2005-01-24 | 2005-01-28 |  | 53.88d |  |
| 1095 | 1.15.3.3.1 | Scenario(text) | 1d? | 2005-01-24 | 2005-01-24 |  | 53.88d | 0d |
| 1096 | 1.15.3.3.2 | Постановка задач | 1d? | 2005-01-25 | 2005-01-25 | 1095 | 53.88d | 0d |
| 1097 | 1.15.3.3.3 | Implimentation | 1d? | 2005-01-26 | 2005-01-26 | 1096 | 53.88d | 0d |
| 1098 | 1.15.3.3.4 | Dilogs/VO/Icons/Objects/Animations | 1d? | 2005-01-27 | 2005-01-27 | 1097 | 53.88d | 0d |
| 1099 | 1.15.3.3.5 | Настройка | 1d? | 2005-01-28 | 2005-01-28 | 1098 | 53.88d |  |
| 1100 | 1.15.3.4 | **Script 4** | 5d? | 2005-01-24 | 2005-01-28 |  | 53.88d |  |
| 1101 | 1.15.3.4.1 | Scenario(text) | 1d? | 2005-01-24 | 2005-01-24 |  | 53.88d | 0d |
| 1102 | 1.15.3.4.2 | Постановка задач | 1d? | 2005-01-25 | 2005-01-25 | 1101 | 53.88d | 0d |
| 1103 | 1.15.3.4.3 | Implimentation | 1d? | 2005-01-26 | 2005-01-26 | 1102 | 53.88d | 0d |
| 1104 | 1.15.3.4.4 | Dilogs/VO/Icons/Objects/Animations | 1d? | 2005-01-27 | 2005-01-27 | 1103 | 53.88d | 0d |
| 1105 | 1.15.3.4.5 | Настройка | 1d? | 2005-01-28 | 2005-01-28 | 1104 | 53.88d |  |
| 1106 | 1.15.3.5 | **Script 5** | 5d? | 2005-01-24 | 2005-01-28 |  | 53.88d |  |
| 1107 | 1.15.3.5.1 | Scenario(text) | 1d? | 2005-01-24 | 2005-01-24 |  | 53.88d | 0d |
| 1108 | 1.15.3.5.2 | Постановка задач | 1d? | 2005-01-25 | 2005-01-25 | 1107 | 53.88d | 0d |
| 1109 | 1.15.3.5.3 | Implimentation | 1d? | 2005-01-26 | 2005-01-26 | 1108 | 53.88d | 0d |
| 1110 | 1.15.3.5.4 | Dilogs/VO/Icons/Objects/Animations | 1d? | 2005-01-27 | 2005-01-27 | 1109 | 53.88d | 0d |
| 1111 | 1.15.3.5.5 | Настройка | 1d? | 2005-01-28 | 2005-01-28 | 1110 | 53.88d |  |

| ID | WBS | Task | Duration | Start | Finish | Predecessors | Total slack | Free slack | Deadline | Resources | Work |
| --- | --- | --- | --- | --- | --- | --- | --- | --- | --- | --- | --- |
| 1113 | 1.16 | **19_Stancia** | 33d? | 2005-01-24 | 2005-03-02 |  | 30.88d |  | 2005-04-29 | Маст Дай, Сидорович | 344h |
| 1114 | 1.16.1 | **LevelDesign** | 1d? | 2005-03-02 | 2005-03-02 | 211 | -1.12d | 0d | 2005-03-01 | Rainbow | 80h |
| 1115 | 1.16.1.1 | **Stage 1** | 1d? | 2005-03-02 | 2005-03-02 |  | -1.12d | 0d |  | Rainbow | 72h |
| 1116 | 1.16.1.1.1 | List of Changes | 1d | 2005-03-02 | 2005-03-02 |  | -1.12d | 0d |  | Rainbow | 8h |
| 1117 | 1.16.1.1.2 | Changed Geometry | 1d? | 2005-03-02 | 2005-03-02 |  | -1.12d | 0d |  | Rainbow | 8h |
| 1118 | 1.16.1.1.3 | Check List 1 | 1d? | 2005-03-02 | 2005-03-02 |  | -1.12d | 0d |  | Rainbow | 8h |
| 1119 | 1.16.1.1.4 | Check List 2 | 1d? | 2005-03-02 | 2005-03-02 |  | -1.12d | 0d |  | Rainbow | 8h |
| 1120 | 1.16.1.1.5 | Check List 3 | 1d? | 2005-03-02 | 2005-03-02 |  | -1.12d | 0d |  | Rainbow | 8h |
| 1121 | 1.16.1.1.6 | Check List 4 | 1d? | 2005-03-02 | 2005-03-02 |  | -1.12d | 0d |  | Rainbow | 8h |
| 1122 | 1.16.1.1.7 | Render Geometry | 1d? | 2005-03-02 | 2005-03-02 |  | -1.12d | 0d |  | Rainbow | 8h |
| 1123 | 1.16.1.1.8 | Grass | 1d? | 2005-03-02 | 2005-03-02 |  | -1.12d | 0d |  | Rainbow | 8h |
| 1124 | 1.16.2 | **GameDesign** | 3d? | 2005-01-24 | 2005-01-26 |  | 79.88d |  |  |  |  |
| 1125 | 1.16.2.1 | **Secrets** | 3d? | 2005-01-24 | 2005-01-26 |  | 79.88d |  |  |  |  |
| 1126 | 1.16.2.1.1 | **Stage 1** | 3d? | 2005-01-24 | 2005-01-26 |  | 79.88d |  |  |  |  |
| 1127 | 1.16.2.1.1.1 | Design | 1d? | 2005-01-24 | 2005-01-24 |  | 79.88d | 0d |  |  |  |
| 1128 | 1.16.2.1.1.2 | Implementation | 1d? | 2005-01-25 | 2005-01-25 | 1127 | 79.88d | 0d |  |  |  |
| 1129 | 1.16.2.1.1.3 | Tuning | 1d? | 2005-01-26 | 2005-01-26 | 1128 | 79.88d |  |  |  |  |
| 1130 | 1.16.2.2 | **Smartterrains** | 3d? | 2005-01-24 | 2005-01-26 |  | 79.88d |  |  |  |  |
| 1131 | 1.16.2.2.1 | **Stage 1** | 3d? | 2005-01-24 | 2005-01-26 |  | 79.88d |  |  |  |  |
| 1132 | 1.16.2.2.1.1 | Design | 1d? | 2005-01-24 | 2005-01-24 |  | 79.88d | 0d |  |  |  |
| 1133 | 1.16.2.2.1.2 | Implementation | 1d? | 2005-01-25 | 2005-01-25 | 1132 | 79.88d | 0d |  |  |  |
| 1134 | 1.16.2.2.1.3 | Tuning | 1d? | 2005-01-26 | 2005-01-26 | 1133 | 79.88d |  |  |  |  |
| 1135 | 1.16.2.3 | **Monsters/Spawns** | 3d? | 2005-01-24 | 2005-01-26 |  | 79.88d |  |  |  |  |
| 1136 | 1.16.2.3.1 | **Stage 1** | 3d? | 2005-01-24 | 2005-01-26 |  | 79.88d |  |  |  |  |
| 1137 | 1.16.2.3.1.1 | Design | 1d? | 2005-01-24 | 2005-01-24 |  | 79.88d | 0d |  |  |  |
| 1138 | 1.16.2.3.1.2 | Implementation | 1d? | 2005-01-25 | 2005-01-25 | 1137 | 79.88d | 0d |  |  |  |
| 1139 | 1.16.2.3.1.3 | Tuning | 1d? | 2005-01-26 | 2005-01-26 | 1138 | 79.88d |  |  |  |  |

| ID | WBS | Task | Duration | Start | Finish | Predecessors | Total slack | Free slack |
| --- | --- | --- | --- | --- | --- | --- | --- | --- |
| 1140 | 1.16.2.4 | **Stalkers/Spawns** | 3d? | 2005-01-24 | 2005-01-26 |  | 79.88d |  |
| 1141 | 1.16.2.4.1 | **Stage 1** | 3d? | 2005-01-24 | 2005-01-26 |  | 79.88d |  |
| 1142 | 1.16.2.4.1.1 | Design | 1d? | 2005-01-24 | 2005-01-24 |  | 79.88d | 0d |
| 1143 | 1.16.2.4.1.2 | Implementation | 1d? | 2005-01-25 | 2005-01-25 | 1142 | 79.88d | 0d |
| 1144 | 1.16.2.4.1.3 | Tuning | 1d? | 2005-01-26 | 2005-01-26 | 1143 | 79.88d |  |
| 1145 | 1.16.2.5 | **Anomalies/Spawns** | 3d? | 2005-01-24 | 2005-01-26 |  | 79.88d |  |
| 1146 | 1.16.2.5.1 | **Stage 1** | 3d? | 2005-01-24 | 2005-01-26 |  | 79.88d |  |
| 1147 | 1.16.2.5.1.1 | Design | 1d? | 2005-01-24 | 2005-01-24 |  | 79.88d | 0d |
| 1148 | 1.16.2.5.1.2 | Implementation | 1d? | 2005-01-25 | 2005-01-25 | 1147 | 79.88d | 0d |
| 1149 | 1.16.2.5.1.3 | Tuning | 1d? | 2005-01-26 | 2005-01-26 | 1148 | 79.88d |  |
| 1150 | 1.16.2.6 | **Physicks** | 3d? | 2005-01-24 | 2005-01-26 |  | 79.88d |  |
| 1151 | 1.16.2.6.1 | **Stage 1** | 3d? | 2005-01-24 | 2005-01-26 |  | 79.88d |  |
| 1152 | 1.16.2.6.1.1 | Design | 1d? | 2005-01-24 | 2005-01-24 |  | 79.88d | 0d |
| 1153 | 1.16.2.6.1.2 | Implementation | 1d? | 2005-01-25 | 2005-01-25 | 1152 | 79.88d | 0d |
| 1154 | 1.16.2.6.1.3 | Tuning | 1d? | 2005-01-26 | 2005-01-26 | 1153 | 79.88d |  |
| 1155 | 1.16.3 | **Scripts** | 5d? | 2005-01-24 | 2005-01-28 |  | 77.88d |  |
| 1156 | 1.16.3.1 | **Script 1** | 5d? | 2005-01-24 | 2005-01-28 |  | 77.88d |  |
| 1157 | 1.16.3.1.1 | Scenario(text) | 1d? | 2005-01-24 | 2005-01-24 |  | 77.88d | 0d |
| 1158 | 1.16.3.1.2 | Постановка задач | 1d? | 2005-01-25 | 2005-01-25 | 1157 | 77.88d | 0d |
| 1159 | 1.16.3.1.3 | Implimentation | 1d? | 2005-01-26 | 2005-01-26 | 1158 | 77.88d | 0d |
| 1160 | 1.16.3.1.4 | Dilogs/VO/Icons/Objects/Animations | 1d? | 2005-01-27 | 2005-01-27 | 1159 | 77.88d | 0d |
| 1161 | 1.16.3.1.5 | Настройка | 1d? | 2005-01-28 | 2005-01-28 | 1160 | 77.88d |  |
| 1162 | 1.16.3.2 | **Script 2** | 5d? | 2005-01-24 | 2005-01-28 |  | 77.88d |  |
| 1163 | 1.16.3.2.1 | Scenario(text) | 1d? | 2005-01-24 | 2005-01-24 |  | 77.88d | 0d |
| 1164 | 1.16.3.2.2 | Постановка задач | 1d? | 2005-01-25 | 2005-01-25 | 1163 | 77.88d | 0d |
| 1165 | 1.16.3.2.3 | Implimentation | 1d? | 2005-01-26 | 2005-01-26 | 1164 | 77.88d | 0d |
| 1166 | 1.16.3.2.4 | Dilogs/VO/Icons/Objects/Animations | 1d? | 2005-01-27 | 2005-01-27 | 1165 | 77.88d | 0d |
| 1167 | 1.16.3.2.5 | Настройка | 1d? | 2005-01-28 | 2005-01-28 | 1166 | 77.88d |  |

| ID | WBS | Task | Duration | Start | Finish | Predecessors | Complete | Remaining | Total slack | Free slack | Constraint | Deadline | Resources | Work | Actual work |
| --- | --- | --- | --- | --- | --- | --- | --- | --- | --- | --- | --- | --- | --- | --- | --- |
| 1168 | 1.16.3.3 | **Script 3** | 5d? | 2005-01-24 | 2005-01-28 |  |  |  | 77.88d |  |  |  |  |  |  |
| 1169 | 1.16.3.3.1 | Scenario(text) | 1d? | 2005-01-24 | 2005-01-24 |  |  |  | 77.88d | 0d |  |  |  |  |  |
| 1170 | 1.16.3.3.2 | Постановка задач | 1d? | 2005-01-25 | 2005-01-25 | 1169 |  |  | 77.88d | 0d |  |  |  |  |  |
| 1171 | 1.16.3.3.3 | Implimentation | 1d? | 2005-01-26 | 2005-01-26 | 1170 |  |  | 77.88d | 0d |  |  |  |  |  |
| 1172 | 1.16.3.3.4 | Dilogs/VO/Icons/Objects/Animations | 1d? | 2005-01-27 | 2005-01-27 | 1171 |  |  | 77.88d | 0d |  |  |  |  |  |
| 1173 | 1.16.3.3.5 | Настройка | 1d? | 2005-01-28 | 2005-01-28 | 1172 |  |  | 77.88d |  |  |  |  |  |  |
| 1174 | 1.16.3.4 | **Script 4** | 5d? | 2005-01-24 | 2005-01-28 |  |  |  | 77.88d |  |  |  |  |  |  |
| 1175 | 1.16.3.4.1 | Scenario(text) | 1d? | 2005-01-24 | 2005-01-24 |  |  |  | 77.88d | 0d |  |  |  |  |  |
| 1176 | 1.16.3.4.2 | Постановка задач | 1d? | 2005-01-25 | 2005-01-25 | 1175 |  |  | 77.88d | 0d |  |  |  |  |  |
| 1177 | 1.16.3.4.3 | Implimentation | 1d? | 2005-01-26 | 2005-01-26 | 1176 |  |  | 77.88d | 0d |  |  |  |  |  |
| 1178 | 1.16.3.4.4 | Dilogs/VO/Icons/Objects/Animations | 1d? | 2005-01-27 | 2005-01-27 | 1177 |  |  | 77.88d | 0d |  |  |  |  |  |
| 1179 | 1.16.3.4.5 | Настройка | 1d? | 2005-01-28 | 2005-01-28 | 1178 |  |  | 77.88d |  |  |  |  |  |  |
| 1180 | 1.16.3.5 | **Script 5** | 5d? | 2005-01-24 | 2005-01-28 |  |  |  | 77.88d |  |  |  |  |  |  |
| 1181 | 1.16.3.5.1 | Scenario(text) | 1d? | 2005-01-24 | 2005-01-24 |  |  |  | 77.88d | 0d |  |  |  |  |  |
| 1182 | 1.16.3.5.2 | Постановка задач | 1d? | 2005-01-25 | 2005-01-25 | 1181 |  |  | 77.88d | 0d |  |  |  |  |  |
| 1183 | 1.16.3.5.3 | Implimentation | 1d? | 2005-01-26 | 2005-01-26 | 1182 |  |  | 77.88d | 0d |  |  |  |  |  |
| 1184 | 1.16.3.5.4 | Dilogs/VO/Icons/Objects/Animations | 1d? | 2005-01-27 | 2005-01-27 | 1183 |  |  | 77.88d | 0d |  |  |  |  |  |
| 1185 | 1.16.3.5.5 | Настройка | 1d? | 2005-01-28 | 2005-01-28 | 1184 |  |  | 77.88d |  |  |  |  |  |  |
| 1187 | 1.17 | **15_Radar** | 54d? | 2005-01-24 A | 2005-03-26 |  | 87% | 7.05d? | -22.12d | 0d |  | 2005-03-01 | Лестат, Чугай | 2349h | 2112.49h |
| 1188 | 1.17.1 | **LevelDesign** | 10d? | 2005-02-15 A | 2005-02-25 A | 969 | 100% |  |  |  |  | 2005-02-25 | Mike | 264h | 264h |
| 1189 | 1.17.1.1 | **Stage 1** | 10d? | 2005-02-15 A | 2005-02-25 A |  | 100% |  |  |  |  |  | Mike | 184h | 184h |
| 1190 | 1.17.1.1.1 | List of Changes | 2d | 2005-02-15 A | 2005-02-16 A |  | 100% |  |  |  |  |  | Mike | 16h | 16h |
| 1191 | 1.17.1.1.2 | Changed Geometry | 3d | 2005-02-17 A | 2005-02-19 A | 1190 | 100% |  |  |  | start no earlier than 2005-02-15 |  | Mike | 24h | 24h |
| 1192 | 1.17.1.1.3 | Check List 1 | 1d? | 2005-02-21 A | 2005-02-21 A | 1191 | 100% |  |  |  |  |  | Mike | 8h | 8h |
| 1193 | 1.17.1.1.4 | Check List 2 | 1d? | 2005-02-21 A | 2005-02-21 A |  | 100% |  |  |  | start no earlier than 2005-02-21 |  | Mike | 8h | 8h |
| 1194 | 1.17.1.1.5 | Check List 3 | 1d? | 2005-02-21 A | 2005-02-21 A |  | 100% |  |  |  | start no earlier than 2005-02-21 |  | Mike | 8h | 8h |
| 1195 | 1.17.1.1.6 | Check List 4 | 1d? | 2005-02-21 A | 2005-02-21 A |  | 100% |  |  |  | start no earlier than 2005-02-21 |  | Mike | 8h | 8h |
| 1196 | 1.17.1.1.7 | Render Geometry | 3d | 2005-02-22 A | 2005-02-24 A | 1195 | 100% |  |  |  |  |  | Mike | 24h | 24h |
| 1197 | 1.17.1.1.8 | Grass | 1d? | 2005-02-25 A | 2005-02-25 A | 1196 | 100% |  |  |  |  |  | Mike | 8h | 8h |

| ID | WBS | Task | Duration | Start | Finish | Predecessors | Complete | Remaining | Total slack | Free slack | Constraint | Resources | Work | Actual work |
| --- | --- | --- | --- | --- | --- | --- | --- | --- | --- | --- | --- | --- | --- | --- |
| 1198 | 1.17.2 | **GameDesign** | 16.88d? | 2005-01-24 A | 2005-02-11 |  | 61% | 6.58d? | 15d |  |  | Чугай, Лестат | 293h | 178.77h |
| 1199 | 1.17.2.1 | **Secrets** | 6.88d? | 2005-01-24 A | 2005-01-31 |  | 61% | 2.66d? | 25d |  |  |  | 31h | 19h |
| 1200 | 1.17.2.1.1 | **Stage 1** | 6.88d? | 2005-01-24 A | 2005-01-31 |  | 61% | 2.66d? | 25d |  |  |  | 31h | 19h |
| 1201 | 1.17.2.1.1.1 | Design | 1.88d? | 2005-01-24 A | 2005-01-25 A |  | 100% |  |  |  | finish no earlier than 2005-01-25 | LeSTAT | 15h | 15h |
| 1202 | 1.17.2.1.1.2 | Implementation | 1d? | 2005-01-25 A | 2005-01-26 | 1201 | 50% | 0.5d? | 28d | 3d | finish no earlier than 2005-01-25 | LeSTAT | 8h | 4h |
| 1203 | 1.17.2.1.1.3 | Tuning | 1d? | 2005-01-29 | 2005-01-31 | 1202 |  |  | 25d |  | finish no earlier than 2005-01-31 | LeSTAT | 8h |  |
| 1204 | 1.17.2.2 | **Smartterrains** | 16.88d? | 2005-01-24 A | 2005-02-11 |  | 67% | 5.62d? | 15d |  |  |  | 24h | 16h |
| 1205 | 1.17.2.2.1 | **Stage 1** | 16.88d? | 2005-01-24 A | 2005-02-11 |  | 67% | 5.62d? | 15d |  |  |  | 24h | 16h |
| 1206 | 1.17.2.2.1.1 | Design | 1d? | 2005-01-24 A | 2005-01-24 A |  | 100% |  |  |  |  | LeSTAT | 8h | 8h |
| 1207 | 1.17.2.2.1.2 | Implementation | 1d? | 2005-02-05 A | 2005-02-07 A | 1206 | 100% |  |  |  | finish no earlier than 2005-02-07 | LeSTAT | 8h | 8h |
| 1208 | 1.17.2.2.1.3 | Tuning | 1d? | 2005-02-10 | 2005-02-11 | 1207 |  |  | 15d |  | finish no earlier than 2005-02-11 | LeSTAT | 8h |  |
| 1209 | 1.17.2.3 | **Monsters/Spawns** | 3d? | 2005-01-24 A | 2005-01-26 |  | 67% | 1d? | 28.88d |  |  |  | 24h | 16h |
| 1210 | 1.17.2.3.1 | **Stage 1** | 3d? | 2005-01-24 A | 2005-01-26 |  | 67% | 1d? | 28.88d |  |  |  | 24h | 16h |
| 1211 | 1.17.2.3.1.1 | Design | 1d? | 2005-01-24 A | 2005-01-24 A |  | 100% |  |  |  |  | LeSTAT | 8h | 8h |
| 1212 | 1.17.2.3.1.2 | Implementation | 1d? | 2005-01-25 A | 2005-01-25 A | 1211 | 100% |  |  |  |  | LeSTAT | 8h | 8h |
| 1213 | 1.17.2.3.1.3 | Tuning | 1d? | 2005-01-26 | 2005-01-26 | 1212 |  |  | 28.88d |  |  | LeSTAT | 8h |  |
| 1214 | 1.17.2.4 | **Stalkers/Spawns** | 7.88d? | 2005-02-03 A | 2005-02-11 |  | 67% | 2.62d? | 15d |  |  |  | 24h | 16h |
| 1215 | 1.17.2.4.1 | **Stage 1** | 7.88d? | 2005-02-03 A | 2005-02-11 |  | 67% | 2.62d? | 15d |  |  |  | 24h | 16h |
| 1216 | 1.17.2.4.1.1 | Design | 1d? | 2005-02-03 A | 2005-02-03 A |  | 100% |  |  |  | start no earlier than 2005-02-03 | LeSTAT | 8h | 8h |
| 1217 | 1.17.2.4.1.2 | Implementation | 1d? | 2005-02-05 A | 2005-02-07 A | 1216 | 100% |  |  |  | finish no earlier than 2005-02-07 | LeSTAT | 8h | 8h |
| 1218 | 1.17.2.4.1.3 | Tuning | 1d? | 2005-02-10 | 2005-02-11 | 1217 |  |  | 15d |  | finish no earlier than 2005-02-11 | LeSTAT | 8h |  |
| 1219 | 1.17.2.5 | **Anomalies/Spawns** | 3d? | 2005-02-04 A | 2005-02-07 |  | 60% | 1.2d? | 18.88d |  |  |  | 24h | 14.4h |
| 1220 | 1.17.2.5.1 | **Stage 1** | 3d? | 2005-02-04 A | 2005-02-07 |  | 60% | 1.2d? | 18.88d |  |  |  | 24h | 14.4h |
| 1221 | 1.17.2.5.1.1 | Design | 1d? | 2005-02-04 A | 2005-02-04 A |  | 100% |  |  |  | start no earlier than 2005-02-04 | LeSTAT | 8h | 8h |
| 1222 | 1.17.2.5.1.2 | Implementation | 1d? | 2005-02-05 A | 2005-02-05 | 1221 | 80% | 0.2d? | 18.88d | 0d |  | LeSTAT | 8h | 6.4h |
| 1223 | 1.17.2.5.1.3 | Tuning | 1d? | 2005-02-07 | 2005-02-07 | 1222 |  |  | 18.88d |  |  | LeSTAT | 8h |  |

| ID | WBS | Task | Duration | Start | Finish | Predecessors | Complete | Remaining | Total slack | Free slack | Constraint | Resources | Work | Actual work |
| --- | --- | --- | --- | --- | --- | --- | --- | --- | --- | --- | --- | --- | --- | --- |
| 1224 | 1.17.2.6 | **Physicks** | 7.88d? | 2005-02-03 A | 2005-02-11 |  | 48% | 4.06d? | 15d |  |  |  | 31h | 15h |
| 1225 | 1.17.2.6.1 | **Stage 1** | 7.88d? | 2005-02-03 A | 2005-02-11 |  | 48% | 4.06d? | 15d |  |  |  | 31h | 15h |
| 1226 | 1.17.2.6.1.1 | Design | 1.88d? | 2005-02-03 A | 2005-02-04 A |  | 100% |  |  |  | finish no earlier than 2005-02-04 | LeSTAT | 15h | 15h |
| 1227 | 1.17.2.6.1.2 | Implementation | 1d? | 2005-02-05 | 2005-02-07 | 1226 |  |  | 18d | 3d | finish no earlier than 2005-02-07 | LeSTAT | 8h |  |
| 1228 | 1.17.2.6.1.3 | Tuning | 1d? | 2005-02-10 | 2005-02-11 | 1227 |  |  | 15d |  | finish no earlier than 2005-02-11 | LeSTAT | 8h |  |
| 1229 | 1.17.3 | **Scripts** | 28.88d? | 2005-01-24 A | 2005-02-25 |  | 95% | 1.34d? | 3d |  |  | Чугай, Лестат | 1360h | 1294.14h |
| 1230 | 1.17.3.1 | Scenario (text) | 1d | 2005-01-24 A | 2005-01-24 A |  | 100% |  |  |  |  | LeSTAT | 8h | 8h |
| 1231 | 1.17.3.2 | Setting tasks | 5d | 2005-01-25 A | 2005-01-29 A |  | 100% |  |  |  | start no earlier than 2005-02-01 | LeSTAT | 40h | 40h |
| 1232 | 1.17.3.3 | **Scene 1 - Monolith Camp (Forest)** | 14.88d | 2005-02-07 A | 2005-02-23 A |  | 100% |  |  |  |  | Чугай, Лестат | 245h | 245h |
| 1233 | 1.17.3.3.1 | Accomplishment | 12.88d | 2005-02-07 A | 2005-02-21 A |  | 100% |  |  |  | finish no earlier than 2005-02-21 | Чугай | 103h | 103h |
| 1234 | 1.17.3.3.2 | Arrangement | 1d | 2005-02-21 A | 2005-02-22 A | 1233 | 100% |  |  |  |  | LeSTAT | 8h | 8h |
| 1235 | 1.17.3.3.3 | Texts, Dialogues, Tasks, Marks on the map, news, characters' profiles (think over) | 1.88d | 2005-02-22 A | 2005-02-23 A |  | 100% |  |  |  | finish no earlier than 2005-02-21 | LeSTAT | 15h | 15h |
| 1236 | 1.17.3.4 | **Scene 2 - Monolithians small outpost (secret)** | 11.88d | 2005-02-09 A | 2005-02-22 A |  | 100% |  |  |  |  | Чугай, Лестат | 348h | 348h |
| 1237 | 1.17.3.4.1 | Accomplishment | 10.88d | 2005-02-09 A | 2005-02-21 A |  | 100% |  |  |  | finish no earlier than 2005-02-21 | Чугай | 87h | 87h |
| 1238 | 1.17.3.4.2 | Arrangement | 10.88d | 2005-02-10 A | 2005-02-22 A |  | 100% |  |  |  | finish no earlier than 2005-02-22 | LeSTAT | 87h | 87h |
| 1239 | 1.17.3.4.3 | Texts, Dialogues, Tasks, Marks on the map, news, characters' profiles (think over) | 9.88d | 2005-02-10 A | 2005-02-21 A |  | 100% |  |  |  | finish no earlier than 2005-02-21 | LeSTAT | 79h | 79h |
| 1240 | 1.17.3.5 | **Scene 3 - Aerials guarding camp (Monolith)** | 10.88d? | 2005-02-10 A | 2005-02-22 |  | 96% | 0.38d? | 6d |  |  | Чугай, Лестат | 324h | 312.65h |
| 1241 | 1.17.3.5.1 | Accomplishment | 10.88d | 2005-02-10 A | 2005-02-22 |  | 95% | 0.54d | 6d |  | finish no earlier than 2005-02-22 | Чугай | 87h | 82.65h |
| 1242 | 1.17.3.5.2 | Arrangement | 9.88d? | 2005-02-11 A | 2005-02-22 |  | 95% | 0.49d? | 6d |  | finish no earlier than 2005-02-22 | LeSTAT | 79h | 75.05h |
| 1243 | 1.17.3.5.3 | Texts, Dialogues, Tasks, Marks on the map, news, characters' profiles (think over) | 8.88d? | 2005-02-11 A | 2005-02-21 A |  | 100% |  |  |  | finish no earlier than 2005-02-21 | LeSTAT | 71h | 71h |
| 1244 | 1.17.3.6 | **Scene 4 - Bloodsuckers' ambush** | 1d? | 2005-02-14 A | 2005-02-14 A |  | 100% |  |  |  |  | Чугай, Лестат | 32h | 32h |
| 1245 | 1.17.3.6.1 | Accomplishment | 1d | 2005-02-14 A | 2005-02-14 A |  | 100% |  |  |  | start no earlier than 2005-02-14 | Чугай | 8h | 8h |
| 1246 | 1.17.3.6.2 | Arrangement | 1d | 2005-02-14 A | 2005-02-14 A |  | 100% |  |  |  | start no earlier than 2005-02-14 | LeSTAT | 8h | 8h |
| 1247 | 1.17.3.6.3 | Texts, Dialogues, Tasks, Marks on the map, news, characters' profiles (think over) | 1d? | 2005-02-14 A | 2005-02-14 A |  | 100% |  |  |  | start no earlier than 2005-02-14 | LeSTAT | 8h | 8h |

Notes:
- 1232: Небольшой лагерь монолита в лесу, возле вагончика, пара трупов зомби, сталкеров, мертвые кабаны. В лагере постоянно находятся два сталкера. Патруль. Так как сталкеры монолита зомбированны, они не очень общительны.
- 1233: 1. Все есть по плану. * Переносится на новую геометрию! / 2. Нет фраз!
- 1234: 1. Все есть по плану. * Переносится на новую геометрию! / 2. Нет фраз!
- 1236: Небольшой лагерь монолита возле заброшенного входа в подземелье, два мертвых сталкера висят на заборе, бочки с костром. Мертвые зомби лежат перед входом. Сталкеры прохаживаются по периметру. Контингент лагеря 3-4 сталкера.
- 1237: 1. Все есть по плану. * Переносится на новую геометрию! / 2. Нет фраз!
- 1238: 1. Все есть по плану. * Переносится на новую геометрию! / 2. Нет фраз!
- 1240: Главный лагерь монолита на этом уровне. Включает в себя патрули, охрану на постах, засаду при входе в подземелье, снайперов. Трупы, как монстров так и сталкеров. Горят бочки. Волмарки.
- 1241: 1. Все есть по плану. * Переносится на новую геометрию! / 2. Нет фраз!
- 1244: Машина врезалась в дерево, на ней повреждения от пуль, рядом лежат мертвые ученые с информацией о секретном проходе. / Как только игрок приближается к машине, игрок слышит звук и через несколько секунд, два невидимых кровососа прыгают с разных сторон на игрока.
- 1245: 1. Все есть по плану. * Переносится на новую геометрию!

| ID | WBS | Task | Duration | Start | Finish | Predecessors | Complete | Remaining | Total slack | Free slack | Constraint | Deadline | Resources | Work | Actual work |
| --- | --- | --- | --- | --- | --- | --- | --- | --- | --- | --- | --- | --- | --- | --- | --- |
| 1248 | 1.17.3.7 | **Scene 5 - Path** | 9.88d? | 2005-02-15 A | 2005-02-25 |  | 78% | 2.21d? | 3d |  |  |  | Чугай, Лестат | 212h | 164.5h |
| 1249 | 1.17.3.7.1 | Accomplishment | 4.88d | 2005-02-21 A | 2005-02-25 |  | 90% | 0.49d | 3d |  | finish no earlier than 2005-02-25 |  | Чугай | 39h | 35.1h |
| 1250 | 1.17.3.7.2 | Arrangement | 4.88d | 2005-02-21 A | 2005-02-25 |  | 90% | 0.49d | 3d |  | finish no earlier than 2005-02-25 |  | LeSTAT | 39h | 35.1h |
| 1251 | 1.17.3.7.3 | Texts, Dialogues, Tasks, Marks on the map, news, characters' profiles (think over) | 6.88d? | 2005-02-15 A | 2005-02-22 |  | 60% | 2.75d? | 6d |  | finish no earlier than 2005-02-22 |  | LeSTAT | 55h | 33h |
| 1252 | 1.17.4 | Testing | 6d | 2005-03-21 | 2005-03-26 |  |  |  | -22.12d | 0d | start no earlier than 2005-03-21 |  |  |  |  |
| 1254 | 1.18 | **12_Yantar_Underground** | 31d? | 2005-01-24 | 2005-02-28 |  |  |  | 12.88d |  |  | 2005-03-15 | Лестат, Чугай | 632h |  |
| 1255 | 1.18.1 | **LevelDesign** | 15d? | 2005-02-11 | 2005-02-28 |  |  |  | 0.88d | 0d |  | 2005-03-01 | Glory | 384h |  |
| 1256 | 1.18.1.1 | **Stage 1** | 15d? | 2005-02-11 | 2005-02-28 |  |  |  | 0.88d |  |  |  | Glory | 264h |  |
| 1257 | 1.18.1.1.1 | List of Changes | 2d | 2005-02-11 | 2005-02-12 |  |  |  | 5.88d | 0d | start no earlier than 2005-02-11 |  | Glory | 16h |  |
| 1258 | 1.18.1.1.2 | Changed Geometry | 7d | 2005-02-14 | 2005-02-21 | 1257 |  |  | 5.88d | 0d |  |  | Glory | 56h |  |
| 1259 | 1.18.1.1.3 | Check List 1 | 1d? | 2005-02-22 | 2005-02-22 | 1258 |  |  | 5.88d |  |  |  | Glory | 8h |  |
| 1260 | 1.18.1.1.4 | Check List 2 | 1d? | 2005-02-22 | 2005-02-22 |  |  |  | 5.88d |  | start no earlier than 2005-02-22 |  | Glory | 8h |  |
| 1261 | 1.18.1.1.5 | Check List 3 | 1d? | 2005-02-22 | 2005-02-22 |  |  |  | 5.88d |  | start no earlier than 2005-02-22 |  | Glory | 8h |  |
| 1262 | 1.18.1.1.6 | Check List 4 | 1d? | 2005-02-22 | 2005-02-22 |  |  |  | 0.88d | 0d | start no earlier than 2005-02-22 |  | Glory | 8h |  |
| 1263 | 1.18.1.1.7 | Render Geometry | 5d | 2005-02-23 | 2005-02-28 | 1262 |  |  | 0.88d |  |  |  | Glory | 40h |  |
| 1264 | 1.18.2 | **GameDesign** | 3d? | 2005-01-24 | 2005-01-26 |  |  |  | 40.88d |  |  |  |  |  |  |
| 1265 | 1.18.2.1 | **Secrets** | 3d? | 2005-01-24 | 2005-01-26 |  |  |  | 40.88d |  |  |  |  |  |  |
| 1266 | 1.18.2.1.1 | **Stage 1** | 3d? | 2005-01-24 | 2005-01-26 |  |  |  | 40.88d |  |  |  |  |  |  |
| 1267 | 1.18.2.1.1.1 | Design | 1d? | 2005-01-24 | 2005-01-24 |  |  |  | 40.88d | 0d |  |  |  |  |  |
| 1268 | 1.18.2.1.1.2 | Implementation | 1d? | 2005-01-25 | 2005-01-25 | 1267 |  |  | 40.88d | 0d |  |  |  |  |  |
| 1269 | 1.18.2.1.1.3 | Tuning | 1d? | 2005-01-26 | 2005-01-26 | 1268 |  |  | 40.88d |  |  |  |  |  |  |
| 1270 | 1.18.2.2 | **Smartterrains** | 3d? | 2005-01-24 | 2005-01-26 |  |  |  | 40.88d |  |  |  |  |  |  |
| 1271 | 1.18.2.2.1 | **Stage 1** | 3d? | 2005-01-24 | 2005-01-26 |  |  |  | 40.88d |  |  |  |  |  |  |
| 1272 | 1.18.2.2.1.1 | Design | 1d? | 2005-01-24 | 2005-01-24 |  |  |  | 40.88d | 0d |  |  |  |  |  |
| 1273 | 1.18.2.2.1.2 | Implementation | 1d? | 2005-01-25 | 2005-01-25 | 1272 |  |  | 40.88d | 0d |  |  |  |  |  |
| 1274 | 1.18.2.2.1.3 | Tuning | 1d? | 2005-01-26 | 2005-01-26 | 1273 |  |  | 40.88d |  |  |  |  |  |  |

Notes:
- 1248: Дорога находится под сильной охраной, патрули, снайперы и засады, а так же ракетчики. Места рядом с забором и земля либо заминирована, либо там аномалии. Дорога усеяна разбитыми машинами (военная колонна). Сложно проехать, немного проще пройти. Есть вариант обойти через лес или «перелезть» через забор или найти секретную дырку в заборе.
- 1249: 1. Все есть по плану. * Переносится на новую геометрию! / 2. Нет фраз!

| ID | WBS | Task | Duration | Start | Finish | Predecessors | Total slack | Free slack |
| --- | --- | --- | --- | --- | --- | --- | --- | --- |
| 1275 | 1.18.2.3 | **Monsters/Spawns** | 3d? | 2005-01-24 | 2005-01-26 |  | 40.88d |  |
| 1276 | 1.18.2.3.1 | **Stage 1** | 3d? | 2005-01-24 | 2005-01-26 |  | 40.88d |  |
| 1277 | 1.18.2.3.1.1 | Design | 1d? | 2005-01-24 | 2005-01-24 |  | 40.88d | 0d |
| 1278 | 1.18.2.3.1.2 | Implementation | 1d? | 2005-01-25 | 2005-01-25 | 1277 | 40.88d | 0d |
| 1279 | 1.18.2.3.1.3 | Tuning | 1d? | 2005-01-26 | 2005-01-26 | 1278 | 40.88d |  |
| 1280 | 1.18.2.4 | **Stalkers/Spawns** | 3d? | 2005-01-24 | 2005-01-26 |  | 40.88d |  |
| 1281 | 1.18.2.4.1 | **Stage 1** | 3d? | 2005-01-24 | 2005-01-26 |  | 40.88d |  |
| 1282 | 1.18.2.4.1.1 | Design | 1d? | 2005-01-24 | 2005-01-24 |  | 40.88d | 0d |
| 1283 | 1.18.2.4.1.2 | Implementation | 1d? | 2005-01-25 | 2005-01-25 | 1282 | 40.88d | 0d |
| 1284 | 1.18.2.4.1.3 | Tuning | 1d? | 2005-01-26 | 2005-01-26 | 1283 | 40.88d |  |
| 1285 | 1.18.2.5 | **Anomalies/Spawns** | 3d? | 2005-01-24 | 2005-01-26 |  | 40.88d |  |
| 1286 | 1.18.2.5.1 | **Stage 1** | 3d? | 2005-01-24 | 2005-01-26 |  | 40.88d |  |
| 1287 | 1.18.2.5.1.1 | Design | 1d? | 2005-01-24 | 2005-01-24 |  | 40.88d | 0d |
| 1288 | 1.18.2.5.1.2 | Implementation | 1d? | 2005-01-25 | 2005-01-25 | 1287 | 40.88d | 0d |
| 1289 | 1.18.2.5.1.3 | Tuning | 1d? | 2005-01-26 | 2005-01-26 | 1288 | 40.88d |  |
| 1290 | 1.18.2.6 | **Physicks** | 3d? | 2005-01-24 | 2005-01-26 |  | 40.88d |  |
| 1291 | 1.18.2.6.1 | **Stage 1** | 3d? | 2005-01-24 | 2005-01-26 |  | 40.88d |  |
| 1292 | 1.18.2.6.1.1 | Design | 1d? | 2005-01-24 | 2005-01-24 |  | 40.88d | 0d |
| 1293 | 1.18.2.6.1.2 | Implementation | 1d? | 2005-01-25 | 2005-01-25 | 1292 | 40.88d | 0d |
| 1294 | 1.18.2.6.1.3 | Tuning | 1d? | 2005-01-26 | 2005-01-26 | 1293 | 40.88d |  |
| 1295 | 1.18.3 | **Scripts** | 5d? | 2005-01-24 | 2005-01-28 |  | 38.88d |  |
| 1296 | 1.18.3.1 | **Script 1** | 5d? | 2005-01-24 | 2005-01-28 |  | 38.88d |  |
| 1297 | 1.18.3.1.1 | Scenario(text) | 1d? | 2005-01-24 | 2005-01-24 |  | 38.88d | 0d |
| 1298 | 1.18.3.1.2 | Постановка задач | 1d? | 2005-01-25 | 2005-01-25 | 1297 | 38.88d | 0d |
| 1299 | 1.18.3.1.3 | Implimentation | 1d? | 2005-01-26 | 2005-01-26 | 1298 | 38.88d | 0d |
| 1300 | 1.18.3.1.4 | Dilogs/VO/Icons/Objects/Animations | 1d? | 2005-01-27 | 2005-01-27 | 1299 | 38.88d | 0d |
| 1301 | 1.18.3.1.5 | Настройка | 1d? | 2005-01-28 | 2005-01-28 | 1300 | 38.88d |  |

| ID | WBS | Task | Duration | Start | Finish | Predecessors | Total slack | Free slack |
| --- | --- | --- | --- | --- | --- | --- | --- | --- |
| 1302 | 1.18.3.2 | **Script 2** | 5d? | 2005-01-24 | 2005-01-28 |  | 38.88d |  |
| 1303 | 1.18.3.2.1 | Scenario(text) | 1d? | 2005-01-24 | 2005-01-24 |  | 38.88d | 0d |
| 1304 | 1.18.3.2.2 | Постановка задач | 1d? | 2005-01-25 | 2005-01-25 | 1303 | 38.88d | 0d |
| 1305 | 1.18.3.2.3 | Implimentation | 1d? | 2005-01-26 | 2005-01-26 | 1304 | 38.88d | 0d |
| 1306 | 1.18.3.2.4 | Dilogs/VO/Icons/Objects/Animations | 1d? | 2005-01-27 | 2005-01-27 | 1305 | 38.88d | 0d |
| 1307 | 1.18.3.2.5 | Настройка | 1d? | 2005-01-28 | 2005-01-28 | 1306 | 38.88d |  |
| 1308 | 1.18.3.3 | **Script 3** | 5d? | 2005-01-24 | 2005-01-28 |  | 38.88d |  |
| 1309 | 1.18.3.3.1 | Scenario(text) | 1d? | 2005-01-24 | 2005-01-24 |  | 38.88d | 0d |
| 1310 | 1.18.3.3.2 | Постановка задач | 1d? | 2005-01-25 | 2005-01-25 | 1309 | 38.88d | 0d |
| 1311 | 1.18.3.3.3 | Implimentation | 1d? | 2005-01-26 | 2005-01-26 | 1310 | 38.88d | 0d |
| 1312 | 1.18.3.3.4 | Dilogs/VO/Icons/Objects/Animations | 1d? | 2005-01-27 | 2005-01-27 | 1311 | 38.88d | 0d |
| 1313 | 1.18.3.3.5 | Настройка | 1d? | 2005-01-28 | 2005-01-28 | 1312 | 38.88d |  |
| 1314 | 1.18.3.4 | **Script 4** | 5d? | 2005-01-24 | 2005-01-28 |  | 38.88d |  |
| 1315 | 1.18.3.4.1 | Scenario(text) | 1d? | 2005-01-24 | 2005-01-24 |  | 38.88d | 0d |
| 1316 | 1.18.3.4.2 | Постановка задач | 1d? | 2005-01-25 | 2005-01-25 | 1315 | 38.88d | 0d |
| 1317 | 1.18.3.4.3 | Implimentation | 1d? | 2005-01-26 | 2005-01-26 | 1316 | 38.88d | 0d |
| 1318 | 1.18.3.4.4 | Dilogs/VO/Icons/Objects/Animations | 1d? | 2005-01-27 | 2005-01-27 | 1317 | 38.88d | 0d |
| 1319 | 1.18.3.4.5 | Настройка | 1d? | 2005-01-28 | 2005-01-28 | 1318 | 38.88d |  |
| 1320 | 1.18.3.5 | **Script 5** | 5d? | 2005-01-24 | 2005-01-28 |  | 38.88d |  |
| 1321 | 1.18.3.5.1 | Scenario(text) | 1d? | 2005-01-24 | 2005-01-24 |  | 38.88d | 0d |
| 1322 | 1.18.3.5.2 | Постановка задач | 1d? | 2005-01-25 | 2005-01-25 | 1321 | 38.88d | 0d |
| 1323 | 1.18.3.5.3 | Implimentation | 1d? | 2005-01-26 | 2005-01-26 | 1322 | 38.88d | 0d |
| 1324 | 1.18.3.5.4 | Dilogs/VO/Icons/Objects/Animations | 1d? | 2005-01-27 | 2005-01-27 | 1323 | 38.88d | 0d |
| 1325 | 1.18.3.5.5 | Настройка | 1d? | 2005-01-28 | 2005-01-28 | 1324 | 38.88d |  |

| ID | WBS | Task | Duration | Start | Finish | Predecessors | Total slack | Free slack | Constraint | Deadline | Resources | Work |
| --- | --- | --- | --- | --- | --- | --- | --- | --- | --- | --- | --- | --- |
| 1327 | 1.19 | **14_Swamp** | 44d? | 2005-01-24 | 2005-03-15 |  | 26.88d |  |  | 2005-04-15 | Лестат, Чугай | 640h |
| 1328 | 1.19.1 | **LevelDesign** | 11d? | 2005-03-03 | 2005-03-15 | 581 | -0.12d | 0d |  | 2005-03-15 | Mike | 288h |
| 1329 | 1.19.1.1 | **Stage 1** | 11d? | 2005-03-03 | 2005-03-15 |  | -0.12d | 0d |  |  | Mike | 200h |
| 1330 | 1.19.1.1.1 | List of Changes | 1d | 2005-03-03 | 2005-03-03 |  | 3.88d | 0d |  |  | Mike | 8h |
| 1331 | 1.19.1.1.2 | Changed Geometry | 5d | 2005-03-04 | 2005-03-09 | 1330 | 3.88d | 0d |  |  | Mike | 40h |
| 1332 | 1.19.1.1.3 | Check List 1 | 1d? | 2005-03-10 | 2005-03-10 | 1331 | 3.88d |  |  |  | Mike | 8h |
| 1333 | 1.19.1.1.4 | Check List 2 | 1d? | 2005-03-10 | 2005-03-10 |  | 3.88d |  | start no earlier than 2005-03-10 |  | Mike | 8h |
| 1334 | 1.19.1.1.5 | Check List 3 | 1d? | 2005-03-10 | 2005-03-10 |  | 3.88d |  | start no earlier than 2005-03-10 |  | Mike | 8h |
| 1335 | 1.19.1.1.6 | Check List 4 | 1d? | 2005-03-10 | 2005-03-10 |  | -0.12d | 0d | start no earlier than 2005-03-10 |  | Mike | 8h |
| 1336 | 1.19.1.1.7 | Render Geometry | 3d | 2005-03-11 | 2005-03-14 | 1335 | -0.12d | 0d |  |  | Mike | 24h |
| 1337 | 1.19.1.1.8 | Grass | 1d? | 2005-03-15 | 2005-03-15 | 1336 | -0.12d | 0d |  |  | Mike | 8h |
| 1338 | 1.19.2 | **GameDesign** | 3d? | 2005-01-24 | 2005-01-26 |  | 67.88d |  |  |  |  |  |
| 1339 | 1.19.2.1 | **Secrets** | 3d? | 2005-01-24 | 2005-01-26 |  | 67.88d |  |  |  |  |  |
| 1340 | 1.19.2.1.1 | **Stage 1** | 3d? | 2005-01-24 | 2005-01-26 |  | 67.88d |  |  |  |  |  |
| 1341 | 1.19.2.1.1.1 | Design | 1d? | 2005-01-24 | 2005-01-24 |  | 67.88d | 0d |  |  |  |  |
| 1342 | 1.19.2.1.1.2 | Implementation | 1d? | 2005-01-25 | 2005-01-25 | 1341 | 67.88d | 0d |  |  |  |  |
| 1343 | 1.19.2.1.1.3 | Tuning | 1d? | 2005-01-26 | 2005-01-26 | 1342 | 67.88d |  |  |  |  |  |
| 1344 | 1.19.2.2 | **Smartterrains** | 3d? | 2005-01-24 | 2005-01-26 |  | 67.88d |  |  |  |  |  |
| 1345 | 1.19.2.2.1 | **Stage 1** | 3d? | 2005-01-24 | 2005-01-26 |  | 67.88d |  |  |  |  |  |
| 1346 | 1.19.2.2.1.1 | Design | 1d? | 2005-01-24 | 2005-01-24 |  | 67.88d | 0d |  |  |  |  |
| 1347 | 1.19.2.2.1.2 | Implementation | 1d? | 2005-01-25 | 2005-01-25 | 1346 | 67.88d | 0d |  |  |  |  |
| 1348 | 1.19.2.2.1.3 | Tuning | 1d? | 2005-01-26 | 2005-01-26 | 1347 | 67.88d |  |  |  |  |  |
| 1349 | 1.19.2.3 | **Monsters/Spawns** | 3d? | 2005-01-24 | 2005-01-26 |  | 67.88d |  |  |  |  |  |
| 1350 | 1.19.2.3.1 | **Stage 1** | 3d? | 2005-01-24 | 2005-01-26 |  | 67.88d |  |  |  |  |  |
| 1351 | 1.19.2.3.1.1 | Design | 1d? | 2005-01-24 | 2005-01-24 |  | 67.88d | 0d |  |  |  |  |
| 1352 | 1.19.2.3.1.2 | Implementation | 1d? | 2005-01-25 | 2005-01-25 | 1351 | 67.88d | 0d |  |  |  |  |
| 1353 | 1.19.2.3.1.3 | Tuning | 1d? | 2005-01-26 | 2005-01-26 | 1352 | 67.88d |  |  |  |  |  |

| ID | WBS | Task | Duration | Start | Finish | Predecessors | Total slack | Free slack |
| --- | --- | --- | --- | --- | --- | --- | --- | --- |
| 1354 | 1.19.2.4 | **Stalkers/Spawns** | 3d? | 2005-01-24 | 2005-01-26 |  | 67.88d |  |
| 1355 | 1.19.2.4.1 | **Stage 1** | 3d? | 2005-01-24 | 2005-01-26 |  | 67.88d |  |
| 1356 | 1.19.2.4.1.1 | Design | 1d? | 2005-01-24 | 2005-01-24 |  | 67.88d | 0d |
| 1357 | 1.19.2.4.1.2 | Implementation | 1d? | 2005-01-25 | 2005-01-25 | 1356 | 67.88d | 0d |
| 1358 | 1.19.2.4.1.3 | Tuning | 1d? | 2005-01-26 | 2005-01-26 | 1357 | 67.88d |  |
| 1359 | 1.19.2.5 | **Anomalies/Spawns** | 3d? | 2005-01-24 | 2005-01-26 |  | 67.88d |  |
| 1360 | 1.19.2.5.1 | **Stage 1** | 3d? | 2005-01-24 | 2005-01-26 |  | 67.88d |  |
| 1361 | 1.19.2.5.1.1 | Design | 1d? | 2005-01-24 | 2005-01-24 |  | 67.88d | 0d |
| 1362 | 1.19.2.5.1.2 | Implementation | 1d? | 2005-01-25 | 2005-01-25 | 1361 | 67.88d | 0d |
| 1363 | 1.19.2.5.1.3 | Tuning | 1d? | 2005-01-26 | 2005-01-26 | 1362 | 67.88d |  |
| 1364 | 1.19.2.6 | **Physicks** | 3d? | 2005-01-24 | 2005-01-26 |  | 67.88d |  |
| 1365 | 1.19.2.6.1 | **Stage 1** | 3d? | 2005-01-24 | 2005-01-26 |  | 67.88d |  |
| 1366 | 1.19.2.6.1.1 | Design | 1d? | 2005-01-24 | 2005-01-24 |  | 67.88d | 0d |
| 1367 | 1.19.2.6.1.2 | Implementation | 1d? | 2005-01-25 | 2005-01-25 | 1366 | 67.88d | 0d |
| 1368 | 1.19.2.6.1.3 | Tuning | 1d? | 2005-01-26 | 2005-01-26 | 1367 | 67.88d |  |
| 1369 | 1.19.3 | **Scripts** | 5d? | 2005-01-24 | 2005-01-28 |  | 65.88d |  |
| 1370 | 1.19.3.1 | **Script 1** | 5d? | 2005-01-24 | 2005-01-28 |  | 65.88d |  |
| 1371 | 1.19.3.1.1 | Scenario(text) | 1d? | 2005-01-24 | 2005-01-24 |  | 65.88d | 0d |
| 1372 | 1.19.3.1.2 | Постановка задач | 1d? | 2005-01-25 | 2005-01-25 | 1371 | 65.88d | 0d |
| 1373 | 1.19.3.1.3 | Implimentation | 1d? | 2005-01-26 | 2005-01-26 | 1372 | 65.88d | 0d |
| 1374 | 1.19.3.1.4 | Dilogs/VO/Icons/Objects/Animations | 1d? | 2005-01-27 | 2005-01-27 | 1373 | 65.88d | 0d |
| 1375 | 1.19.3.1.5 | Настройка | 1d? | 2005-01-28 | 2005-01-28 | 1374 | 65.88d |  |
| 1376 | 1.19.3.2 | **Script 2** | 5d? | 2005-01-24 | 2005-01-28 |  | 65.88d |  |
| 1377 | 1.19.3.2.1 | Scenario(text) | 1d? | 2005-01-24 | 2005-01-24 |  | 65.88d | 0d |
| 1378 | 1.19.3.2.2 | Постановка задач | 1d? | 2005-01-25 | 2005-01-25 | 1377 | 65.88d | 0d |
| 1379 | 1.19.3.2.3 | Implimentation | 1d? | 2005-01-26 | 2005-01-26 | 1378 | 65.88d | 0d |
| 1380 | 1.19.3.2.4 | Dilogs/VO/Icons/Objects/Animations | 1d? | 2005-01-27 | 2005-01-27 | 1379 | 65.88d | 0d |
| 1381 | 1.19.3.2.5 | Настройка | 1d? | 2005-01-28 | 2005-01-28 | 1380 | 65.88d |  |

| ID | WBS | Task | Duration | Start | Finish | Predecessors | Total slack | Free slack | Constraint | Resources | Work |
| --- | --- | --- | --- | --- | --- | --- | --- | --- | --- | --- | --- |
| 1382 | 1.19.3.3 | **Script 3** | 5d? | 2005-01-24 | 2005-01-28 |  | 65.88d |  |  |  |  |
| 1383 | 1.19.3.3.1 | Scenario(text) | 1d? | 2005-01-24 | 2005-01-24 |  | 65.88d | 0d |  |  |  |
| 1384 | 1.19.3.3.2 | Постановка задач | 1d? | 2005-01-25 | 2005-01-25 | 1383 | 65.88d | 0d |  |  |  |
| 1385 | 1.19.3.3.3 | Implimentation | 1d? | 2005-01-26 | 2005-01-26 | 1384 | 65.88d | 0d |  |  |  |
| 1386 | 1.19.3.3.4 | Dilogs/VO/Icons/Objects/Animations | 1d? | 2005-01-27 | 2005-01-27 | 1385 | 65.88d | 0d |  |  |  |
| 1387 | 1.19.3.3.5 | Настройка | 1d? | 2005-01-28 | 2005-01-28 | 1386 | 65.88d |  |  |  |  |
| 1388 | 1.19.3.4 | **Script 4** | 5d? | 2005-01-24 | 2005-01-28 |  | 65.88d |  |  |  |  |
| 1389 | 1.19.3.4.1 | Scenario(text) | 1d? | 2005-01-24 | 2005-01-24 |  | 65.88d | 0d |  |  |  |
| 1390 | 1.19.3.4.2 | Постановка задач | 1d? | 2005-01-25 | 2005-01-25 | 1389 | 65.88d | 0d |  |  |  |
| 1391 | 1.19.3.4.3 | Implimentation | 1d? | 2005-01-26 | 2005-01-26 | 1390 | 65.88d | 0d |  |  |  |
| 1392 | 1.19.3.4.4 | Dilogs/VO/Icons/Objects/Animations | 1d? | 2005-01-27 | 2005-01-27 | 1391 | 65.88d | 0d |  |  |  |
| 1393 | 1.19.3.4.5 | Настройка | 1d? | 2005-01-28 | 2005-01-28 | 1392 | 65.88d |  |  |  |  |
| 1394 | 1.19.3.5 | **Script 5** | 5d? | 2005-01-24 | 2005-01-28 |  | 65.88d |  |  |  |  |
| 1395 | 1.19.3.5.1 | Scenario(text) | 1d? | 2005-01-24 | 2005-01-24 |  | 65.88d | 0d |  |  |  |
| 1396 | 1.19.3.5.2 | Постановка задач | 1d? | 2005-01-25 | 2005-01-25 | 1395 | 65.88d | 0d |  |  |  |
| 1397 | 1.19.3.5.3 | Implimentation | 1d? | 2005-01-26 | 2005-01-26 | 1396 | 65.88d | 0d |  |  |  |
| 1398 | 1.19.3.5.4 | Dilogs/VO/Icons/Objects/Animations | 1d? | 2005-01-27 | 2005-01-27 | 1397 | 65.88d | 0d |  |  |  |
| 1399 | 1.19.3.5.5 | Настройка | 1d? | 2005-01-28 | 2005-01-28 | 1398 | 65.88d |  |  |  |  |
| 1401 | 1.20 | **21_Generators** | 71d? | 2005-01-24 | 2005-04-15 |  | 36d |  |  |  | 1728h |
| 1402 | 1.20.1 | **LevelDesign** | 71d? | 2005-01-24 | 2005-04-15 |  | 36d |  |  | Bogdan | 1728h |
| 1403 | 1.20.1.1 | **Stage 1** | 71d? | 2005-01-24 | 2005-04-15 |  | 36d |  |  | Bogdan | 1160h |
| 1404 | 1.20.1.1.1 | List of Changes | 1d | 2005-01-24 | 2005-01-24 |  | 40d | 0d |  | Bogdan | 8h |
| 1405 | 1.20.1.1.2 | Changed Geometry | 65d | 2005-01-25 | 2005-04-09 | 1404 | 40d | 0d |  | Bogdan | 520h |
| 1406 | 1.20.1.1.3 | Check List 1 | 1d? | 2005-04-11 | 2005-04-11 | 1405 | 40d |  |  | Bogdan | 8h |
| 1407 | 1.20.1.1.4 | Check List 2 | 1d? | 2005-04-11 | 2005-04-11 |  | 40d |  | start no earlier than 2005-04-11 | Bogdan | 8h |
| 1408 | 1.20.1.1.5 | Check List 3 | 1d? | 2005-04-11 | 2005-04-11 |  | 40d |  | start no earlier than 2005-04-11 | Bogdan | 8h |
| 1409 | 1.20.1.1.6 | Check List 4 | 1d? | 2005-04-11 | 2005-04-11 |  | 36d | 0d | start no earlier than 2005-04-11 | Bogdan | 8h |
| 1410 | 1.20.1.1.7 | Render Geometry | 3d | 2005-04-12 | 2005-04-14 | 1409 | 36d | 0d |  | Bogdan | 24h |
| 1411 | 1.20.1.1.8 | Grass | 1d? | 2005-04-15 | 2005-04-15 | 1410 | 36d |  |  | Bogdan | 8h |

| ID | WBS | Task | Duration | Start | Finish | Predecessors | Total slack | Free slack |
| --- | --- | --- | --- | --- | --- | --- | --- | --- |
| 1412 | 1.20.2 | **GameDesign** | 3d? | 2005-01-24 | 2005-01-26 |  | 104d |  |
| 1413 | 1.20.2.1 | **Secrets** | 3d? | 2005-01-24 | 2005-01-26 |  | 104d |  |
| 1414 | 1.20.2.1.1 | **Stage 1** | 3d? | 2005-01-24 | 2005-01-26 |  | 104d |  |
| 1415 | 1.20.2.1.1.1 | Design | 1d? | 2005-01-24 | 2005-01-24 |  | 104d | 0d |
| 1416 | 1.20.2.1.1.2 | Implementation | 1d? | 2005-01-25 | 2005-01-25 | 1415 | 104d | 0d |
| 1417 | 1.20.2.1.1.3 | Tuning | 1d? | 2005-01-26 | 2005-01-26 | 1416 | 104d |  |
| 1418 | 1.20.2.2 | **Smartterrains** | 3d? | 2005-01-24 | 2005-01-26 |  | 104d |  |
| 1419 | 1.20.2.2.1 | **Stage 1** | 3d? | 2005-01-24 | 2005-01-26 |  | 104d |  |
| 1420 | 1.20.2.2.1.1 | Design | 1d? | 2005-01-24 | 2005-01-24 |  | 104d | 0d |
| 1421 | 1.20.2.2.1.2 | Implementation | 1d? | 2005-01-25 | 2005-01-25 | 1420 | 104d | 0d |
| 1422 | 1.20.2.2.1.3 | Tuning | 1d? | 2005-01-26 | 2005-01-26 | 1421 | 104d |  |
| 1423 | 1.20.2.3 | **Monsters/Spawns** | 3d? | 2005-01-24 | 2005-01-26 |  | 104d |  |
| 1424 | 1.20.2.3.1 | **Stage 1** | 3d? | 2005-01-24 | 2005-01-26 |  | 104d |  |
| 1425 | 1.20.2.3.1.1 | Design | 1d? | 2005-01-24 | 2005-01-24 |  | 104d | 0d |
| 1426 | 1.20.2.3.1.2 | Implementation | 1d? | 2005-01-25 | 2005-01-25 | 1425 | 104d | 0d |
| 1427 | 1.20.2.3.1.3 | Tuning | 1d? | 2005-01-26 | 2005-01-26 | 1426 | 104d |  |
| 1428 | 1.20.2.4 | **Stalkers/Spawns** | 3d? | 2005-01-24 | 2005-01-26 |  | 104d |  |
| 1429 | 1.20.2.4.1 | **Stage 1** | 3d? | 2005-01-24 | 2005-01-26 |  | 104d |  |
| 1430 | 1.20.2.4.1.1 | Design | 1d? | 2005-01-24 | 2005-01-24 |  | 104d | 0d |
| 1431 | 1.20.2.4.1.2 | Implementation | 1d? | 2005-01-25 | 2005-01-25 | 1430 | 104d | 0d |
| 1432 | 1.20.2.4.1.3 | Tuning | 1d? | 2005-01-26 | 2005-01-26 | 1431 | 104d |  |
| 1433 | 1.20.2.5 | **Anomalies/Spawns** | 3d? | 2005-01-24 | 2005-01-26 |  | 104d |  |
| 1434 | 1.20.2.5.1 | **Stage 1** | 3d? | 2005-01-24 | 2005-01-26 |  | 104d |  |
| 1435 | 1.20.2.5.1.1 | Design | 1d? | 2005-01-24 | 2005-01-24 |  | 104d | 0d |
| 1436 | 1.20.2.5.1.2 | Implementation | 1d? | 2005-01-25 | 2005-01-25 | 1435 | 104d | 0d |
| 1437 | 1.20.2.5.1.3 | Tuning | 1d? | 2005-01-26 | 2005-01-26 | 1436 | 104d |  |

| ID | WBS | Task | Duration | Start | Finish | Predecessors | Total slack | Free slack |
| --- | --- | --- | --- | --- | --- | --- | --- | --- |
| 1438 | 1.20.2.6 | **Physicks** | 3d? | 2005-01-24 | 2005-01-26 |  | 104d |  |
| 1439 | 1.20.2.6.1 | **Stage 1** | 3d? | 2005-01-24 | 2005-01-26 |  | 104d |  |
| 1440 | 1.20.2.6.1.1 | Design | 1d? | 2005-01-24 | 2005-01-24 |  | 104d | 0d |
| 1441 | 1.20.2.6.1.2 | Implementation | 1d? | 2005-01-25 | 2005-01-25 | 1440 | 104d | 0d |
| 1442 | 1.20.2.6.1.3 | Tuning | 1d? | 2005-01-26 | 2005-01-26 | 1441 | 104d |  |
| 1443 | 1.20.3 | **Scripts** | 5d? | 2005-01-24 | 2005-01-28 |  | 102d |  |
| 1444 | 1.20.3.1 | **Script 1** | 5d? | 2005-01-24 | 2005-01-28 |  | 102d |  |
| 1445 | 1.20.3.1.1 | Scenario(text) | 1d? | 2005-01-24 | 2005-01-24 |  | 102d | 0d |
| 1446 | 1.20.3.1.2 | Постановка задач | 1d? | 2005-01-25 | 2005-01-25 | 1445 | 102d | 0d |
| 1447 | 1.20.3.1.3 | Implimentation | 1d? | 2005-01-26 | 2005-01-26 | 1446 | 102d | 0d |
| 1448 | 1.20.3.1.4 | Dilogs/VO/Icons/Objects/Animations | 1d? | 2005-01-27 | 2005-01-27 | 1447 | 102d | 0d |
| 1449 | 1.20.3.1.5 | Настройка | 1d? | 2005-01-28 | 2005-01-28 | 1448 | 102d |  |
| 1450 | 1.20.3.2 | **Script 2** | 5d? | 2005-01-24 | 2005-01-28 |  | 102d |  |
| 1451 | 1.20.3.2.1 | Scenario(text) | 1d? | 2005-01-24 | 2005-01-24 |  | 102d | 0d |
| 1452 | 1.20.3.2.2 | Постановка задач | 1d? | 2005-01-25 | 2005-01-25 | 1451 | 102d | 0d |
| 1453 | 1.20.3.2.3 | Implimentation | 1d? | 2005-01-26 | 2005-01-26 | 1452 | 102d | 0d |
| 1454 | 1.20.3.2.4 | Dilogs/VO/Icons/Objects/Animations | 1d? | 2005-01-27 | 2005-01-27 | 1453 | 102d | 0d |
| 1455 | 1.20.3.2.5 | Настройка | 1d? | 2005-01-28 | 2005-01-28 | 1454 | 102d |  |
| 1456 | 1.20.3.3 | **Script 3** | 5d? | 2005-01-24 | 2005-01-28 |  | 102d |  |
| 1457 | 1.20.3.3.1 | Scenario(text) | 1d? | 2005-01-24 | 2005-01-24 |  | 102d | 0d |
| 1458 | 1.20.3.3.2 | Постановка задач | 1d? | 2005-01-25 | 2005-01-25 | 1457 | 102d | 0d |
| 1459 | 1.20.3.3.3 | Implimentation | 1d? | 2005-01-26 | 2005-01-26 | 1458 | 102d | 0d |
| 1460 | 1.20.3.3.4 | Dilogs/VO/Icons/Objects/Animations | 1d? | 2005-01-27 | 2005-01-27 | 1459 | 102d | 0d |
| 1461 | 1.20.3.3.5 | Настройка | 1d? | 2005-01-28 | 2005-01-28 | 1460 | 102d |  |

| ID | WBS | Task | Duration | Start | Finish | Predecessors | Total slack | Free slack |
| --- | --- | --- | --- | --- | --- | --- | --- | --- |
| 1462 | 1.20.3.4 | **Script 4** | 5d? | 2005-01-24 | 2005-01-28 |  | 102d |  |
| 1463 | 1.20.3.4.1 | Scenario(text) | 1d? | 2005-01-24 | 2005-01-24 |  | 102d | 0d |
| 1464 | 1.20.3.4.2 | Постановка задач | 1d? | 2005-01-25 | 2005-01-25 | 1463 | 102d | 0d |
| 1465 | 1.20.3.4.3 | Implimentation | 1d? | 2005-01-26 | 2005-01-26 | 1464 | 102d | 0d |
| 1466 | 1.20.3.4.4 | Dilogs/VO/Icons/Objects/Animations | 1d? | 2005-01-27 | 2005-01-27 | 1465 | 102d | 0d |
| 1467 | 1.20.3.4.5 | Настройка | 1d? | 2005-01-28 | 2005-01-28 | 1466 | 102d |  |
| 1468 | 1.20.3.5 | **Script 5** | 5d? | 2005-01-24 | 2005-01-28 |  | 102d |  |
| 1469 | 1.20.3.5.1 | Scenario(text) | 1d? | 2005-01-24 | 2005-01-24 |  | 102d | 0d |
| 1470 | 1.20.3.5.2 | Постановка задач | 1d? | 2005-01-25 | 2005-01-25 | 1469 | 102d | 0d |
| 1471 | 1.20.3.5.3 | Implimentation | 1d? | 2005-01-26 | 2005-01-26 | 1470 | 102d | 0d |
| 1472 | 1.20.3.5.4 | Dilogs/VO/Icons/Objects/Animations | 1d? | 2005-01-27 | 2005-01-27 | 1471 | 102d | 0d |
| 1473 | 1.20.3.5.5 | Настройка | 1d? | 2005-01-28 | 2005-01-28 | 1472 | 102d |  |
| 1475 | 1.21 | **Adjusment List** | 1d? | 2005-01-24 | 2005-01-24 |  | 106d |  |
| 1476 | 1.21.1 | **Симуляция - Функции** | 1d? | 2005-01-24 | 2005-01-24 |  | 106d |  |
| 1477 | 1.21.1.1 | **Функции** | 1d? | 2005-01-24 | 2005-01-24 |  | 106d |  |
| 1478 | 1.21.1.1.1 | Скорость симуляции оффлайновых процессов | 1d? | 2005-01-24 | 2005-01-24 |  | 106d |  |
| 1479 | 1.21.1.1.2 | Смена дня | 1d? | 2005-01-24 | 2005-01-24 |  | 106d |  |
| 1480 | 1.21.1.1.3 | Выбросы | 1d? | 2005-01-24 | 2005-01-24 |  | 106d |  |
| 1481 | 1.21.1.2 | **Общение** | 1d? | 2005-01-24 | 2005-01-24 |  | 106d |  |
| 1482 | 1.21.1.2.1 | Универсальные диалоги | 1d? | 2005-01-24 | 2005-01-24 |  | 106d |  |
| 1483 | 1.21.1.2.2 | Влияние уни.диалогов на отношения и репутацию | 1d? | 2005-01-24 | 2005-01-24 |  | 106d |  |
| 1484 | 1.21.1.3 | **Функции оценки для боя** | 1d? | 2005-01-24 | 2005-01-24 |  | 106d |  |
| 1485 | 1.21.1.3.1 | Сравнение эффективности типов существ противников | 1d? | 2005-01-24 | 2005-01-24 |  | 106d |  |
| 1486 | 1.21.1.3.2 | Сравнение эффективности типов оружия противников | 1d? | 2005-01-24 | 2005-01-24 |  | 106d |  |
| 1487 | 1.21.1.3.3 | Окончательная вероятность победы при учете здоровья, эффективности противников и их оружия | 1d? | 2005-01-24 | 2005-01-24 |  | 106d |  |

| ID | WBS | Task | Duration | Start | Finish | Total slack |
| --- | --- | --- | --- | --- | --- | --- |
| 1488 | 1.21.1.4 | **Функции для оффлайновых событий** | 1d? | 2005-01-24 | 2005-01-24 | 106d |
| 1489 | 1.21.1.4.1 | Скорость размножения монстров, вероятность рождения и количество родившихся | 1d? | 2005-01-24 | 2005-01-24 | 106d |
| 1490 | 1.21.1.4.2 | Заметность на местности | 1d? | 2005-01-24 | 2005-01-24 | 106d |
| 1491 | 1.21.1.4.3 | Заметность аномалии на местности | 1d? | 2005-01-24 | 2005-01-24 | 106d |
| 1492 | 1.21.1.4.4 | Вероятность прохождения аномалии | 1d? | 2005-01-24 | 2005-01-24 | 106d |
| 1493 | 1.21.1.4.5 | Вероятность попадания в аномалию | 1d? | 2005-01-24 | 2005-01-24 | 106d |
| 1494 | 1.21.1.4.6 | Вероятность замечания аномалии | 1d? | 2005-01-24 | 2005-01-24 | 106d |
| 1495 | 1.21.1.4.7 | Вероятность замечания персонажа\монстра | 1d? | 2005-01-24 | 2005-01-24 | 106d |
| 1496 | 1.21.1.4.8 | Вероятность попадания и количество атак у оружия | 1d? | 2005-01-24 | 2005-01-24 | 106d |
| 1497 | 1.21.1.4.9 | Тип территории | 1d? | 2005-01-24 | 2005-01-24 | 106d |
| 1498 | 1.21.1.4.10 | Вероятность избегания боя | 1d? | 2005-01-24 | 2005-01-24 | 106d |
| 1499 | 1.21.1.5 | **Экономика** | 1d? | 2005-01-24 | 2005-01-24 | 106d |
| 1500 | 1.21.1.5.1 | Цены | 1d? | 2005-01-24 | 2005-01-24 | 106d |
| 1501 | 1.21.1.5.2 | Закупки | 1d? | 2005-01-24 | 2005-01-24 | 106d |
| 1502 | 1.21.1.5.3 | Рассредоточение вещей по уровням | 1d? | 2005-01-24 | 2005-01-24 | 106d |
| 1503 | 1.21.1.5.4 | Открытие новых объектов на продажу | 1d? | 2005-01-24 | 2005-01-24 | 106d |
| 1504 | 1.21.1.5.5 | Коэффициенты торговли для разных групп объектов и для разных персонажей | 1d? | 2005-01-24 | 2005-01-24 | 106d |
| 1505 | 1.21.1.6 | **Респауны монстров** | 1d? | 2005-01-24 | 2005-01-24 | 106d |
| 1506 | 1.21.1.6.1 | Места для респаунов | 1d? | 2005-01-24 | 2005-01-24 | 106d |
| 1507 | 1.21.1.6.2 | Рассредоточение монстров по уровням | 1d? | 2005-01-24 | 2005-01-24 | 106d |
| 1508 | 1.21.1.7 | **Респауны аномалий** | 1d? | 2005-01-24 | 2005-01-24 | 106d |
| 1509 | 1.21.1.7.1 | Места для респаунов | 1d? | 2005-01-24 | 2005-01-24 | 106d |
| 1510 | 1.21.1.7.2 | Рассредоточение аномалий по уровням | 1d? | 2005-01-24 | 2005-01-24 | 106d |
| 1511 | 1.21.1.8 | **Отношение** | 1d? | 2005-01-24 | 2005-01-24 | 106d |
| 1512 | 1.21.1.8.1 | Настройка влияния действий игрока на изменение отношения к нему персонажжей и групп персонажей | 1d? | 2005-01-24 | 2005-01-24 | 106d |

Notes:
- 1512: Нужен реестр действий игрока и насколько это меняет отношения к игроку NPC и групп NPC / в том числе и квестовых

| ID | WBS | Task | Duration | Start | Finish | Total slack |
| --- | --- | --- | --- | --- | --- | --- |
| 1513 | 1.21.1.9 | **Репутация игрока** | 1d? | 2005-01-24 | 2005-01-24 | 106d |
| 1514 | 1.21.1.9.1 | Настройка влияния действий игрока на изменение репутации игрока | 1d? | 2005-01-24 | 2005-01-24 | 106d |
| 1515 | 1.21.1.10 | **Характеристики персонажей** | 1d? | 2005-01-24 | 2005-01-24 | 106d |
| 1516 | 1.21.1.10.1 | Иммунитеты | 1d? | 2005-01-24 | 2005-01-24 | 106d |
| 1517 | 1.21.1.10.2 | Меткость | 1d? | 2005-01-24 | 2005-01-24 | 106d |
| 1518 | 1.21.1.10.3 | Скорость восстановления здоровья и т.д. | 1d? | 2005-01-24 | 2005-01-24 | 106d |
| 1519 | 1.21.1.10.4 | Слышимость | 1d? | 2005-01-24 | 2005-01-24 | 106d |
| 1520 | 1.21.1.10.5 | Скорость замечания объекта | 1d? | 2005-01-24 | 2005-01-24 | 106d |
| 1521 | 1.21.1.11 | **Характеристики монстров** | 1d? | 2005-01-24 | 2005-01-24 | 106d |
| 1522 | 1.21.1.11.1 | Иммунитеты | 1d? | 2005-01-24 | 2005-01-24 | 106d |
| 1523 | 1.21.1.11.2 | Сила и тип повреждений | 1d? | 2005-01-24 | 2005-01-24 | 106d |
| 1524 | 1.21.1.11.3 | Скорость восстановления здоровья и т.д. | 1d? | 2005-01-24 | 2005-01-24 | 106d |
| 1525 | 1.21.1.11.4 | Расстояние на котором атаковать | 1d? | 2005-01-24 | 2005-01-24 | 106d |
| 1526 | 1.21.1.11.5 | Слышимость | 1d? | 2005-01-24 | 2005-01-24 | 106d |
| 1527 | 1.21.1.11.6 | Скорость замечания объекта | 1d? | 2005-01-24 | 2005-01-24 | 106d |
| 1528 | 1.21.1.12 | **Характеристики экипировки** | 1d? | 2005-01-24 | 2005-01-24 | 106d |
| 1529 | 1.21.1.12.1 | Износ | 1d? | 2005-01-24 | 2005-01-24 | 106d |
| 1530 | 1.21.1.12.2 | Цена | 1d? | 2005-01-24 | 2005-01-24 | 106d |
| 1531 | 1.21.1.12.3 | Влияние на характеристики игрока и персонажей | 1d? | 2005-01-24 | 2005-01-24 | 106d |
| 1532 | 1.21.1.12.4 | Иммунитеты | 1d? | 2005-01-24 | 2005-01-24 | 106d |
| 1533 | 1.21.1.13 | **Характеристики оружия** | 1d? | 2005-01-24 | 2005-01-24 | 106d |
| 1534 | 1.21.1.13.1 | Износ | 1d? | 2005-01-24 | 2005-01-24 | 106d |
| 1535 | 1.21.1.13.2 | Цена | 1d? | 2005-01-24 | 2005-01-24 | 106d |
| 1536 | 1.21.1.13.3 | Дисперсия | 1d? | 2005-01-24 | 2005-01-24 | 106d |
| 1537 | 1.21.1.13.4 | Скорострельность и дальность стрельбы | 1d? | 2005-01-24 | 2005-01-24 | 106d |
| 1538 | 1.21.1.13.5 | Сила и тип повреждений | 1d? | 2005-01-24 | 2005-01-24 | 106d |
| 1539 | 1.21.1.13.6 | Тип используемых патронов | 1d? | 2005-01-24 | 2005-01-24 | 106d |

Notes:
- 1514: список действий и на сколько они влиют на репутацию

| ID | WBS | Task | Duration | Start | Finish | Predecessors | Complete | Remaining | Total slack | Resources | Work | Actual work |
| --- | --- | --- | --- | --- | --- | --- | --- | --- | --- | --- | --- | --- |
| 1540 | 1.21.1.14 | **Профили NPC** | 1d? | 2005-01-24 | 2005-01-24 |  |  |  | 106d |  |  |  |
| 1541 | 1.21.1.14.1 | Характеры персонажей - добрый нетральный, злой. | 1d? | 2005-01-24 | 2005-01-24 |  |  |  | 106d |  |  |  |
| 1542 | 1.21.1.14.2 | Био | 1d? | 2005-01-24 | 2005-01-24 |  |  |  | 106d |  |  |  |
| 1543 | 1.21.1.14.3 | Истории персонажей | 1d? | 2005-01-24 | 2005-01-24 |  |  |  | 106d |  |  |  |
| 1544 | 1.21.1.14.4 | Экипировка персонажей | 1d? | 2005-01-24 | 2005-01-24 |  |  |  | 106d |  |  |  |
| 1545 | 1.21.1.14.5 | Уникальная экипировка | 1d? | 2005-01-24 | 2005-01-24 |  |  |  | 106d |  |  |  |
| 1546 | 1.21.1.15 | **Характеры NPC** | 1d? | 2005-01-24 | 2005-01-24 |  |  |  | 106d |  |  |  |
| 1547 | 1.21.1.15.1 | Влияние характера на выгодность агрессивного поведения | 1d? | 2005-01-24 | 2005-01-24 |  |  |  | 106d |  |  |  |
| 1550 | 2 | **Programming** | 292d? | 2004-06-22 A | 2005-05-27 |  | 58% | 123.77d? | 0d |  | 7735h | 2743h |
| 1552 | 2.1 | **AI, Life Simulation** | 107d? | 2005-01-24 A | 2005-05-27 |  | 22% | 83d? | 0d | Дима | 2408h | 464h |
| 1553 | 2.1.1 | **Stalker** | 78d | 2005-01-24 A | 2005-04-23 |  | 31% | 54d | 0d | Дима | 1088h | 272h |
| 1554 | 2.1.1.1 | Stalker : stealth mode | 10d | 2005-01-24 A | 2005-02-03 A |  | 100% |  |  | Дима | 80h | 80h |
| 1555 | 2.1.1.2 | Stalker : stealth mode : process all the cases | 20d | 2005-02-04 A | 2005-02-26 | 1554 | 70% | 6d | 0d |  |  |  |
| 1556 | 2.1.1.3 | Stalker : Look out from the corner | 2d | 2005-02-28 | 2005-03-01 | 1555 |  |  | 0d | Дима | 16h |  |
| 1557 | 2.1.1.4 | Stalker : Group items picking up | 2d | 2005-03-02 | 2005-03-03 | 1556 |  |  | 0d | Дима | 16h |  |
| 1558 | 2.1.1.5 | Stalker : Corpse searching | 3d | 2005-03-04 | 2005-03-07 | 1557 |  |  | 0d | Дима | 24h |  |
| 1559 | 2.1.1.6 | Stalker : Agent manager : перебежки от укрытия к укрытию | 3d | 2005-03-08 | 2005-03-10 | 1558 |  |  | 0d | Дима | 24h |  |
| 1560 | 2.1.1.7 | Stalker : Features : Friend/Neutral salutation | 3d | 2005-03-11 | 2005-03-14 | 1559 |  |  | 0d | Дима | 24h |  |
| 1561 | 2.1.1.8 | Stalker : Corpse reaction | 2d | 2005-03-15 | 2005-03-16 | 1560 |  |  | 0d | Дима | 16h |  |
| 1562 | 2.1.1.9 | Stalker : Object handler : Knife usage | 2d | 2005-03-17 | 2005-03-18 | 1561 |  |  | 0d | Дима | 16h |  |
| 1563 | 2.1.1.10 | Stalker : Object handler : Fist usage | 2d | 2005-03-19 | 2005-03-21 | 1562 |  |  | 0d | Дима | 16h |  |
| 1564 | 2.1.1.11 | Stalker : Straight run in case of grenade | 1d | 2005-03-22 | 2005-03-22 | 1563 |  |  | 0d | Дима | 8h |  |
| 1565 | 2.1.1.12 | Stalker : If grenade is too close - hit it to get it further | 2d | 2005-03-23 | 2005-03-24 | 1564 |  |  | 0d | Дима | 16h |  |
| 1566 | 2.1.1.13 | Stalker : Do not locate in combat near explosive objects | 2d | 2005-03-25 | 2005-03-26 | 1565 |  |  | 0d | Дима | 16h |  |
| 1567 | 2.1.1.14 | Stalker : If can't shot enemy - try to shot explosive near enemy | 2d | 2005-03-28 | 2005-03-29 | 1566 |  |  | 0d | Дима | 16h |  |
| 1568 | 2.1.1.15 | Stalker : Run from cover to cover straight | 1d | 2005-03-30 | 2005-03-30 | 1567 |  |  | 0d | Дима | 8h |  |
| 1569 | 2.1.1.16 | Stalker : Do not take cover if it is on the line of fire | 2d | 2005-03-31 | 2005-04-01 | 1568 |  |  | 0d | Дима | 16h |  |
| 1570 | 2.1.1.17 | Stalker : If can fire from the similar weapon instead of reloading the current one - do this! | 1d | 2005-04-02 | 2005-04-02 | 1569 |  |  | 0d | Дима | 8h |  |
| 1571 | 2.1.1.18 | Stalker : Hide needed items on trade | 1d | 2005-04-04 | 2005-04-04 | 1570 |  |  | 0d | Дима | 8h |  |
| 1572 | 2.1.1.19 | Stalker : medikit usage visualization | 2d | 2005-04-05 | 2005-04-06 | 1571 |  |  | 0d | Дима | 16h |  |
| 1573 | 2.1.1.20 | Stalker : Features : Hit reaction | 1d | 2005-04-07 | 2005-04-07 | 1572 |  |  | 0d | Дима | 8h |  |
| 1574 | 2.1.1.21 | Stalker : Features : Enemy search advance | 2d | 2005-04-08 | 2005-04-09 | 1573 |  |  | 0d | Дима | 16h |  |
| 1575 | 2.1.1.22 | Stalker : Squad tactics : combat commands | 2d | 2005-04-11 | 2005-04-12 | 1574 |  |  | 0d | Дима | 16h |  |
| 1576 | 2.1.1.23 | Stalker : Squad tactics : coordinated movement | 3d | 2005-04-13 | 2005-04-15 | 1575 |  |  | 0d | Дима | 24h |  |
| 1577 | 2.1.1.24 | Stalker : Features : Grenade handling | 5d | 2005-04-16 | 2005-04-21 | 1576 |  |  | 0d | Дима | 40h |  |
| 1578 | 2.1.1.25 | Stalker : Features : Mounted weapon handling | 2d | 2005-04-22 | 2005-04-23 | 1577 |  |  | 0d | Дима | 16h |  |

Notes:
- 1541: Устанавливается в профайле и не меняется. Влияет только на то, кто кого атакует

| ID | WBS | Task | Duration | Start | Finish | Predecessors | Total slack | Free slack | Constraint | Resources | Work |
| --- | --- | --- | --- | --- | --- | --- | --- | --- | --- | --- | --- |
| 1579 | 2.1.2 | **Rat** | 2d | 2005-04-25 | 2005-04-26 | 1553 | 0d |  |  | Дима | 32h |
| 1580 | 2.1.2.1 | Rat : use movement restrictions | 2d | 2005-04-25 | 2005-04-26 |  | 0d |  |  | Дима | 16h |
| 1581 | 2.1.3 | **LSS** | 11d | 2005-04-27 | 2005-05-09 | 1580 | 0d |  |  | Дима | 176h |
| 1582 | 2.1.3.1 | LSS : Core : Spawn system upgrade : Dynamic destroy | 1d | 2005-04-27 | 2005-04-27 |  | 0d |  |  | Дима | 8h |
| 1583 | 2.1.3.2 | LSS : Core : Spawn system upgrade : Dynamic spawn | 1d | 2005-04-28 | 2005-04-28 | 1582 | 0d |  |  | Дима | 8h |
| 1584 | 2.1.3.3 | LSS : Features : Surge | 5d | 2005-04-29 | 2005-05-04 | 1583 | 0d |  |  | Дима | 40h |
| 1585 | 2.1.3.4 | LSS : Features : Being asleep | 3d | 2005-05-05 | 2005-05-07 | 1584 | 0d |  |  | Дима | 24h |
| 1586 | 2.1.3.5 | LSS : Features : Anomaly map : check and add position | 1d | 2005-05-09 | 2005-05-09 | 1585 | 0d |  |  | Дима | 8h |
| 1587 | 2.1.4 | **Core** | 16d? | 2005-05-10 | 2005-05-27 | 1581 | 0d |  |  | Дима | 256h |
| 1588 | 2.1.4.1 | Core : Evaluation function inertion | 3d | 2005-05-10 | 2005-05-12 |  | 0d |  |  | Дима | 24h |
| 1589 | 2.1.4.2 | Core : Dynamic obstacles avoiding | 5d | 2005-05-13 | 2005-05-18 | 1588 | 0d |  |  | Дима | 40h |
| 1590 | 2.1.4.3 | Stalker : Enemy inventory info fake | 1d | 2005-05-19 | 2005-05-19 | 1589 | 0d |  |  | Дима | 8h |
| 1591 | 2.1.4.4 | Stalker : Exact sound source fake | 1d | 2005-05-20 | 2005-05-20 | 1590 | 0d |  |  | Дима | 8h |
| 1592 | 2.1.4.5 | Stalker : exact object info by sound or/and hit fake | 2d | 2005-05-21 | 2005-05-23 | 1591 | 0d |  |  | Дима | 16h |
| 1593 | 2.1.4.6 | Stalker : Control sleep and eating | 1d | 2005-05-24 | 2005-05-24 | 1592 | 0d |  |  | Дима | 8h |
| 1594 | 2.1.4.7 | Stalker : Control relationship system | 1d | 2005-05-25 | 2005-05-25 | 1593 | 0d |  |  | Дима | 8h |
| 1595 | 2.1.4.8 | Stalker : Control sound occlusion | 1d | 2005-05-26 | 2005-05-26 | 1594 | 0d |  |  | Дима | 8h |
| 1596 | 2.1.4.9 | Stalker : control evaluation functions | 1d? | 2005-05-27 | 2005-05-27 | 1595 | 0d |  |  | Дима | 8h |
| 1598 | 2.2 | **AI Monsters** | 22d | 2005-03-01 | 2005-03-25 |  | 54d |  |  | Джим | 576h |
| 1599 | 2.2.1 | **Monsters Attacks** | 6d | 2005-03-01 | 2005-03-07 |  | 54d | 0d |  | Джим | 144h |
| 1600 | 2.2.1.1 | **Chimera Attacks** | 1d | 2005-03-01 | 2005-03-01 |  | 54d | 0d |  | Джим | 16h |
| 1601 | 2.2.1.1.1 | Take cover and wait for enemy (with distant weapon) | 1d | 2005-03-01 | 2005-03-01 |  | 54d |  | start no earlier than 2005-03-01 | Джим | 8h |
| 1602 | 2.2.1.2 | **Controller Attacks** | 2d | 2005-03-02 | 2005-03-03 | 1600 | 54d | 0d |  | Джим | 32h |
| 1603 | 2.2.1.2.1 | Take covers and slow look out | 2d | 2005-03-02 | 2005-03-03 |  | 54d |  |  | Джим | 16h |

| ID | WBS | Task | Duration | Start | Finish | Predecessors | Complete | Remaining | Total slack | Free slack | Constraint | Resources | Work | Actual work |
| --- | --- | --- | --- | --- | --- | --- | --- | --- | --- | --- | --- | --- | --- | --- |
| 1604 | 2.2.1.3 | **Burer Attacks** | 2d | 2005-03-04 | 2005-03-05 | 1602 |  |  | 54d | 0d |  | Джим | 32h |  |
| 1605 | 2.2.1.3.1 | Take covers and slow look out | 2d | 2005-03-04 | 2005-03-05 |  |  |  | 54d |  |  | Джим | 16h |  |
| 1606 | 2.2.1.4 | **Cat Attacks** | 1d | 2005-03-07 | 2005-03-07 | 1604 |  |  | 54d |  |  | Джим | 16h |  |
| 1607 | 2.2.1.4.1 | Fast Jump to Enemy | 1d | 2005-03-07 | 2005-03-07 |  |  |  | 54d |  |  | Джим | 8h |  |
| 1608 | 2.2.2 | **Dogs** | 2d | 2005-03-08 | 2005-03-09 | 1599 |  |  | 54d | 0d |  | Джим | 32h |  |
| 1609 | 2.2.2.1 | Squad Howling | 2d | 2005-03-08 | 2005-03-09 |  |  |  | 54d |  |  | Джим | 16h |  |
| 1610 | 2.2.3 | **Zombie** | 1d | 2005-03-10 | 2005-03-10 | 1608 |  |  | 54d | 0d |  | Джим | 16h |  |
| 1611 | 2.2.3.1 | Idle - lie, fake death | 1d | 2005-03-10 | 2005-03-10 |  |  |  | 54d |  |  | Джим | 8h |  |
| 1612 | 2.2.4 | **Chimera** | 2d | 2005-03-11 | 2005-03-12 | 1610 |  |  | 54d | 0d |  | Джим | 32h |  |
| 1613 | 2.2.4.1 | Fast Speed | 2d | 2005-03-11 | 2005-03-12 |  |  |  | 54d |  |  | Джим | 16h |  |
| 1614 | 2.2.5 | **Bloodsucker** | 3d | 2005-03-14 | 2005-03-16 | 1612 |  |  | 54d | 0d |  | Джим | 48h |  |
| 1615 | 2.2.5.1 | Dont turn off particles on invisibility | 1d | 2005-03-14 | 2005-03-14 |  |  |  | 54d | 0d |  | Джим | 8h |  |
| 1616 | 2.2.5.2 | Postprocess on invisibility turn | 1d | 2005-03-15 | 2005-03-15 | 1615 |  |  | 54d | 0d |  | Джим | 8h |  |
| 1617 | 2.2.5.3 | Step Sounds on invisible run | 1d | 2005-03-16 | 2005-03-16 | 1616 |  |  | 54d |  |  | Джим | 8h |  |
| 1618 | 2.2.6 | **Tushkano** | 8d | 2005-03-17 | 2005-03-25 | 1614 |  |  | 54d |  |  | Джим | 128h |  |
| 1619 | 2.2.6.1 | Apply base states | 2d | 2005-03-17 | 2005-03-18 |  |  |  | 54d | 0d | start no earlier than 2005-02-04 | Джим | 16h |  |
| 1620 | 2.2.6.2 | Fast speed and jumps | 2d | 2005-03-19 | 2005-03-21 | 1619 |  |  | 54d | 0d | start no earlier than 2005-02-04 | Джим | 16h |  |
| 1621 | 2.2.6.3 | Testing | 4d | 2005-03-22 | 2005-03-25 | 1620 |  |  | 54d |  | start no earlier than 2005-02-04 | Джим | 32h |  |
| 1623 | 2.3 | **Physics** | 288.88d? | 2004-06-22 A | 2005-05-24 |  | 82% | 51.89d? | 3.12d |  |  | Kostia | 4751h | 2279h |
| 1624 | 2.3.1 | **Done** | 98d? | 2004-06-22 A | 2004-10-13 A |  | 100% |  |  |  |  | Kostia | 1352h | 1352h |
| 1625 | 2.3.1.1 | Разрушение игровых объектов (кроме физ объектов), трупы (только для аномалий), машина, вертолет, лампочки. Сохранение положения костей игровых объектов (кроме физ объектов). | 14d | 2004-06-22 A | 2004-07-09 A |  | 100% |  |  |  | finish no earlier than 2004-07-12 | Kostia | 112h | 112h |
| 1626 | 2.3.1.2 | Разрывание, сжигание трупов | 5d | 2004-07-12 A | 2004-07-16 A | 1625 | 100% |  |  |  | finish no earlier than 2004-07-12 | Kostia | 40h | 40h |
| 1627 | 2.3.1.3 | Перейти на QuickStep - feedbacks соответствие, улучшить разрушение (?). Изменить принцип работы | 2d | 2004-07-19 A | 2004-07-20 A | 1626 | 100% |  |  |  | start no earlier than 2004-06-28 | Kostia | 16h | 16h |
| 1628 | 2.3.1.4 | Трассировать траекторию для некоторых мелких объектов | 10d | 2004-07-21 A | 2004-07-31 A | 1627 | 100% |  |  |  |  | Kostia | 80h | 80h |
| 1629 | 2.3.1.5 | Поддержка настроек физики через скрипты | 10d | 2004-08-04 A | 2004-08-14 A | 1628 | 100% |  |  |  |  | Kostia | 80h | 80h |
| 1630 | 2.3.1.6 | Управление машиной, повреждение машины:отваливание определенных кусков (заранее заданы имена костей) | 13d | 2004-08-18 A | 2004-09-01 A | 1629 | 100% |  |  |  |  | Kostia | 104h | 104h |
| 1631 | 2.3.1.7 | Зона Минсер | 3d | 2004-09-22 A | 2004-09-24 A | 1630 | 100% |  |  |  | start no earlier than 2004-09-22 | Kostia | 24h | 24h |
| 1632 | 2.3.1.8 | Cтабильность полета ракеты | 1d? | 2004-09-27 A | 2004-09-27 A | 1631 | 100% |  |  |  |  | Kostia | 8h | 8h |
| 1633 | 2.3.1.9 | Положение камер акткра | 1d? | 2004-09-28 A | 2004-09-28 A | 1632 | 100% |  |  |  |  | Kostia | 8h | 8h |
| 1634 | 2.3.1.10 | Лестницы | 5d? | 2004-09-29 A | 2004-10-04 A | 1633 | 100% |  |  |  |  | Kostia | 40h | 40h |
| 1635 | 2.3.1.11 | Переход машины на другой уровень | 2d | 2004-10-06 A | 2004-10-07 A | 1634 | 100% |  |  |  |  | Kostia | 16h | 16h |
| 1636 | 2.3.1.12 | Интерфейс машины | 5d | 2004-10-08 A | 2004-10-13 A | 1635 | 100% |  |  |  |  | Kostia | 40h | 40h |
| 1637 | 2.3.2 | Состояние бега актера | 2d | 2004-11-19 A | 2004-11-20 A |  | 100% |  |  |  | start no earlier than 2004-11-19 | Kostia | 16h | 16h |
| 1638 | 2.3.3 | Актер не подходит вплотную к некоторым NPC | 2d | 2004-11-23 A | 2004-11-24 A | 1637 | 100% |  |  |  |  | Kostia | 16h | 16h |

| ID | WBS | Task | Duration | Start | Finish | Predecessors | Complete | Total slack | Free slack | Constraint | Resources | Work | Actual work |
| --- | --- | --- | --- | --- | --- | --- | --- | --- | --- | --- | --- | --- | --- |
| 1639 | 2.3.4 | **Доделать аномалии** | 4d | 2004-11-25 A | 2004-11-29 A | 1638 | 100% |  |  |  | Kostia | 72h | 72h |
| 1640 | 2.3.4.1 | Гравизона | 1d | 2004-11-25 A | 2004-11-25 A |  | 100% |  |  |  | Kostia | 8h | 8h |
| 1641 | 2.3.4.2 | Аномалии с Вижуалом: ржавые волосы,2 амебы, жгучий пух | 3d | 2004-11-25 A | 2004-11-27 A |  | 100% |  |  |  | Kostia | 24h | 24h |
| 1642 | 2.3.4.3 | Иконка отображающая положение актера | 1d | 2004-11-29 A | 2004-11-29 A |  | 100% |  |  |  | Kostia | 8h | 8h |
| 1643 | 2.3.5 | Настройка Аномалий совместно с Профом | 1d | 2004-12-01 A | 2004-12-01 A |  | 100% |  |  | start no earlier than 2004-12-01 | Kostia | 8h | 8h |
| 1644 | 2.3.6 | Глюки настройка отброса скелетов совместно с Юрой (Угрюмый) | 2d | 2004-12-02 A | 2004-12-03 A | 1643 | 100% |  |  |  | Kostia | 16h | 16h |
| 1645 | 2.3.7 | Возможность не колизить кчасти после обычного разваливания объектов3 | 3d | 2004-12-06 A | 2004-12-08 A | 1644 | 100% |  |  |  | Kostia | 24h | 24h |
| 1646 | 2.3.8 | Разрушение с подменой моделей | 7d | 2004-12-09 A | 2004-12-16 A | 1645 | 100% |  |  |  | Kostia | 56h | 56h |
| 1647 | 2.3.9 | Не сразу разбивать стекла при попадании из огнестрельного оружия | 1d? | 2004-12-20 A | 2004-12-20 A | 1646 | 100% |  |  |  | Kostia | 8h | 8h |
| 1648 | 2.3.10 | **Добавить некоторые свойства к разрушению с заменой вижула** | 3d | 2004-12-21 A | 2004-12-23 A | 1647 | 100% |  |  |  | Kostia | 56h | 56h |
| 1649 | 2.3.10.1 | Настройка повреждений на отдельные кости, звук разлома, имунитеты, партиклы разлома | 2d | 2004-12-21 A | 2004-12-22 A |  | 100% |  |  |  | Kostia | 16h | 16h |
| 1650 | 2.3.10.2 | Передавать импульс при разрушении | 1d | 2004-12-22 A | 2004-12-22 A |  | 100% |  |  | start no earlier than 2004-12-22 | Kostia | 8h | 8h |
| 1651 | 2.3.10.3 | Возможность убирать колижен частей. | 1d | 2004-12-23 A | 2004-12-23 A | 1650 | 100% |  |  |  | Kostia | 8h | 8h |
| 1652 | 2.3.11 | Взрыв машины | 3d | 2004-12-21 A | 2004-12-23 A |  | 100% |  |  |  | Kostia | 24h | 24h |
| 1653 | 2.3.12 | Отключение | 5d | 2005-01-10 A | 2005-01-14 A |  | 100% |  |  | start no earlier than 2005-01-10 | Kostia | 40h | 40h |
| 1654 | 2.3.13 | оптимизация/исправление ошибок | 21d | 2005-01-15 A | 2005-02-08 A |  | 100% |  |  | start no earlier than 2005-01-14 | Kostia | 168h | 168h |
| 1655 | 2.3.14 | Возможность проверить, находится ли актер в машине | 1d | 2005-02-09 A | 2005-02-09 A | 1654 | 100% |  |  | start no earlier than 2005-02-09 | Kostia | 8h | 8h |
| 1656 | 2.3.15 | физические объекты и отношения | 2d | 2005-02-10 A | 2005-02-11 A | 1655 | 100% |  |  |  | Kostia | 16h | 16h |
| 1657 | 2.3.16 | Скриптовые колбеки (например, для быстрого проигрования звуков при закрывании дверей) (доработка) | 5d | 2005-02-12 A | 2005-02-17 A | 1656 | 100% |  |  |  | Kostia | 40h | 40h |
| 1658 | 2.3.17 | Рестриктор для мелких монстров | 3d | 2005-02-18 A | 2005-02-21 A | 1657 | 100% |  |  |  | Kostia | 24h | 24h |
| 1659 | 2.3.18 | Изменилось перемещение живых монстров - цель облегчить возможность пройти при включенной физике | 5d | 2005-02-22 A | 2005-02-26 A | 1658 | 100% |  |  |  | Kostia | 40h | 40h |
| 1660 | 2.3.19 | При отсечении воздействия взрывной волной учитывается пробиваемость материалов | 2d | 2005-02-24 A | 2005-02-25 A | 1659 | 100% |  |  |  | Kostia | 16h | 16h |
| 1661 | 2.3.20 | Динамика не должна закрывать от взрывной волны – проблемы с взрывами | 2d | 2005-03-30 A | 2005-03-31 A | 1660 | 100% |  |  |  | Kostia | 16h | 16h |
| 1662 | 2.3.21 | Колижен в части пролетания через треугольники - исправлены некоторые ошибки, нормально обрабатываются двойные треугольники | 10d | 2005-04-02 A | 2005-04-13 A | 1661 | 100% |  |  |  | Kostia | 80h | 80h |
| 1663 | 2.3.22 | Принятие решений при выпадении объектов за уровень | 2d | 2005-04-04 A | 2005-04-05 A | 1662 | 100% |  |  |  | Kostia | 16h | 16h |
| 1664 | 2.3.23 | Вывод отладочной информации и отрисовка активных объектов | 5d | 2005-04-06 A | 2005-04-11 A | 1663 | 100% |  |  |  |  |  |  |
| 1665 | 2.3.24 | зона с отключением гравитации | 3d | 2005-04-12 | 2005-04-14 | 1664 |  | 4d | 0d |  | Kostia | 24h |  |
| 1666 | 2.3.25 | Зона с замедлением времени | 1d | 2005-04-15 | 2005-04-15 | 1665 |  | 4d | 0d |  | Kostia | 8h |  |
| 1667 | 2.3.26 | Phisics/Car разные коэффициенты на ув и ум оборотов. | 2d | 2005-04-16 | 2005-04-18 | 1666 |  | 4d | 0d |  | Kostia | 16h |  |
| 1668 | 2.3.27 | Обновление позиций в Explosive | 10d | 2005-04-19 | 2005-04-29 | 1667 |  | 4d | 0d |  | Kostia | 80h |  |
| 1669 | 2.3.28 | get_physics_shell() returns nil on reinit() | 2d | 2005-04-30 | 2005-05-02 | 1668 |  | 4d | 0d |  | Kostia | 16h |  |
| 1670 | 2.3.29 | Замена модели для взорванной машины | 5d | 2005-05-03 | 2005-05-07 | 1669 |  | 4d | 0d |  | Kostia | 40h |  |
| 1671 | 2.3.30 | Проверки на застрявание костей | 5d | 2005-05-09 | 2005-05-13 | 1670 |  | 4d | 0d |  | Kostia | 40h |  |
| 1672 | 2.3.31 | Пинание (ногой/руками, анимация) | 5d | 2005-05-14 | 2005-05-19 | 1671 |  | 4d | 0d |  | Kostia | 40h |  |
| 1673 | 2.3.32 | Улучшить колижен меша с боксом | 3d | 2005-05-20 | 2005-05-23 | 1672 |  | 4d |  |  | Kostia | 24h |  |

| ID | WBS | Task | Duration | Start | Finish | Complete | Total slack | Constraint | Resources | Work | Actual work |
| --- | --- | --- | --- | --- | --- | --- | --- | --- | --- | --- | --- |
| 1674 | 2.3.33 | **убрать лишние точки цилиндров** | 5d | 2005-01-24 A | 2005-01-28 A | 100% |  |  | Kostia | 40h | 40h |
| 1675 | 2.3.33.1 | дополнительные точки для цилиндров | 5d | 2005-01-24 A | 2005-01-28 A | 100% |  |  |  |  |  |
| 1676 | 2.3.34 | net_Save на клиентских объектах, load на серверных | 1d? | 2005-05-23 | 2005-05-24 |  | 3.12d | finish no earlier than 2005-05-24 |  |  |  |
